# La Calera II - Cronograma 2 Salas Elect REAL ABB

Schedule from MS Project, 2026-05-08 to 2027-05-14, A marks actual dates.

## Calendars

- Standard: Mon-Fri 08:00-12:00, 13:00-17:00; Sat-Sun off. Exceptions (off unless hours are given): 2026-05-25, 2026-07-09, 2026-12-08, 2026-12-24 to 2026-12-25, 2026-12-31 to 2027-01-01, 2027-02-08 to 2027-02-09, 2027-03-24, 2027-03-26.

## Resources

| Resource |
| --- |
| ABB / AESA |

## Schedule

| ID | WBS | Task | Type | Duration | Start | Finish | Predecessors | Complete | Remaining | Baseline start | Baseline finish | Baseline duration | Total slack | Free slack | Constraint | Text1 |
| --- | --- | --- | --- | --- | --- | --- | --- | --- | --- | --- | --- | --- | --- | --- | --- | --- |
| 1 | 1 | **OPP-24-6977812 - PlusPetrol La Calera II Project** |  | 254.88d | 2026-05-08 A | 2027-05-14 |  | 1% | 251.32d | 2026-05-08 | 2027-05-14 | 254.88d | 0d |  |  |  |
| 2 | 1.1 | Emisión de OC - Recepcion en ABB - Sala N4 | milestone | 0d | 2026-05-08 A | 2026-05-08 A |  | 100% |  | 2026-05-08 | 2026-05-08 | 0d |  |  | start no earlier than 2026-05-08 | ABB / AESA |
| 3 | 1.2 | Emisión de OC - Recepcion en ABB - Sala N3 | milestone | 0d | 2026-05-08 A | 2026-05-08 A |  | 100% |  | 2026-05-08 | 2026-05-08 | 0d |  |  | start no earlier than 2026-05-08 | ABB / AESA |
| 4 | 1.3 | KOM técnico - Sala N4 |  | 1d | 2026-05-15 A | 2026-05-18 A | 2FS+5d | 100% |  | 2026-05-15 | 2026-05-18 | 1d |  |  |  | ABB / AESA |
| 5 | 1.4 | KOM técnico - Sala N3 |  | 1d | 2026-05-15 A | 2026-05-18 A | 3FS+5d | 100% |  | 2026-05-15 | 2026-05-18 | 1d |  |  |  | ABB / AESA |
| 6 | 1.5 | Emision Pedidos internos/OC proveedores - Sala N4 |  | 10ed | 2026-05-12 A | 2026-05-22 A | 2FS+2d | 100% |  | 2026-05-12 | 2026-05-22 | 10ed |  |  |  | ABB |
| 7 | 1.6 | Emision Pedidos internos/OC proveedores - Sala N3 |  | 10ed | 2026-05-12 A | 2026-05-22 A | 3FS+2d | 100% |  | 2026-05-12 | 2026-05-22 | 10ed |  |  |  | ABB |
| 8 | 1.7 | Contrato PMS - Entrega equipos en sheltrista |  | 285.42ed | 2026-05-08 A | 2027-02-17 | 2 | 1% | 282.56ed | 2026-05-08 | 2027-02-17 | 285.42ed | 100.62d | 1.62d | start no earlier than 2026-05-08 | ABB |
| 9 | 1.8 | **Sala Eléctrica #3 BT** |  | 248.88d | 2026-05-18 A | 2027-05-14 |  | 1% | 247.42d | 2026-05-18 | 2027-05-14 | 248.88d | 0d |  |  |  |
| 10 | 1.8.1 | **Equipos** |  | 232.88d | 2026-05-18 A | 2027-04-22 |  | 1% | 231.5d | 2026-05-18 | 2027-03-31 | 216.88d | 16d |  |  |  |
| 11 | 1.8.1.1 | **Tableros CCMs** |  | 189d | 2026-05-18 | 2027-02-18 |  |  |  | 2026-05-18 | 2027-02-18 | 189d | 20.88d |  |  |  |
| 12 | 1.8.1.1.1 | Definición de unifilares y típicos definitivos |  | 13d | 2026-05-18 | 2026-06-05 | 5 |  |  | 2026-05-18 | 2026-06-05 | 13d | 235.88d |  |  |  |
| 13 | 1.8.1.1.2 | **Ingeniería** |  | 52d | 2026-06-05 | 2026-08-19 |  |  |  | 2026-06-05 | 2026-08-19 | 52d | 7.88d |  |  |  |
| 14 | 1.8.1.1.2.1 | Esquemas unifilares definitivos | milestone | 0d | 2026-06-05 | 2026-06-05 |  |  |  | 2026-06-05 | 2026-06-05 | 0d | 7.88d | 0d | start no earlier than 2026-06-05 | AESA |
| 15 | 1.8.1.1.2.2 | Esquemas funcionales definitivos | milestone | 0d | 2026-06-18 | 2026-06-18 |  |  |  | 2026-06-18 | 2026-06-18 | 0d | 20.88d | 12d | start no earlier than 2026-06-18 | AESA |
| 16 | 1.8.1.1.2.3 | **Tablero 102-CCM-005** |  | 47d | 2026-06-05 | 2026-08-12 |  |  |  | 2026-06-05 | 2026-08-12 | 47d | 67.88d |  |  |  |
| 17 | 1.8.1.1.2.3.1 | Emisión Ingeniería básica tablero 102-CCM-005 |  | 10d | 2026-06-05 | 2026-06-19 | 14 |  |  | 2026-06-05 | 2026-06-19 | 10d | 67.88d | 0d |  | ABB |
| 18 | 1.8.1.1.2.3.2 | Aprobación de Ingeniería básica tablero 102-CCM-005 |  | 10d | 2026-06-22 | 2026-07-06 | 17FS+1d |  |  | 2026-06-22 | 2026-07-06 | 10d | 67.88d | 0d |  | AESA |
| 19 | 1.8.1.1.2.3.3 | Freezing Point | milestone | 0d | 2026-07-06 | 2026-07-06 | 18 |  |  | 2026-07-06 | 2026-07-06 | 0d | 67.88d | 0d |  | ABB |
| 20 | 1.8.1.1.2.3.4 | Emisión Ingeniería de detalle tablero 102-CCM-005 |  | 15d | 2026-07-06 | 2026-07-28 | 19, 15 |  |  | 2026-07-06 | 2026-07-28 | 15d | 67.88d | 0d |  | ABB |
| 21 | 1.8.1.1.2.3.5 | Aprobación de Ingeniería de Detalle tablero 102-CCM-005 |  | 10d | 2026-07-29 | 2026-08-12 | 20FS+1d |  |  | 2026-07-29 | 2026-08-12 | 10d | 67.88d | 0d |  | AESA |
| 22 | 1.8.1.1.2.3.6 | Freezing Point | milestone | 0d | 2026-08-12 | 2026-08-12 | 21 |  |  | 2026-08-12 | 2026-08-12 | 0d | 67.88d | 0d |  | ABB |
| 23 | 1.8.1.1.2.4 | **Tablero 102-CCM-006** |  | 50d | 2026-06-05 | 2026-08-17 |  |  |  | 2026-06-05 | 2026-08-17 | 50d | 64.88d |  |  |  |
| 24 | 1.8.1.1.2.4.1 | Emisión Ingeniería básica tablero 102-CCM-006 |  | 10d | 2026-06-05 | 2026-06-19 | 14 |  |  | 2026-06-05 | 2026-06-19 | 10d | 64.88d | 0d |  | ABB |
| 25 | 1.8.1.1.2.4.2 | Aprobación de Ingeniería básica tablero 102-CCM-006 |  | 10d | 2026-06-22 | 2026-07-06 | 24FS+1d |  |  | 2026-06-22 | 2026-07-06 | 10d | 64.88d | 0d |  | AESA |
| 26 | 1.8.1.1.2.4.3 | Freezing Point | milestone | 0d | 2026-07-06 | 2026-07-06 | 25 |  |  | 2026-07-06 | 2026-07-06 | 0d | 64.88d | 0d |  | ABB |
| 27 | 1.8.1.1.2.4.4 | Emisión Ingeniería de detalle tablero 102-CCM-006 |  | 18d | 2026-07-06 | 2026-07-31 | 26, 15 |  |  | 2026-07-06 | 2026-07-31 | 18d | 64.88d | 0d |  | ABB |
| 28 | 1.8.1.1.2.4.5 | Aprobación de Ingeniería de Detalle tablero 102-CCM-006 |  | 10d | 2026-08-03 | 2026-08-17 | 27FS+1d |  |  | 2026-08-03 | 2026-08-17 | 10d | 64.88d | 0d |  | AESA |
| 29 | 1.8.1.1.2.4.6 | Freezing Point | milestone | 0d | 2026-08-17 | 2026-08-17 | 28 |  |  | 2026-08-17 | 2026-08-17 | 0d | 64.88d | 0d |  | ABB |

| ID | WBS | Task | Type | Duration | Start | Finish | Predecessors | Baseline start | Baseline finish | Baseline duration | Total slack | Free slack | Text1 |
| --- | --- | --- | --- | --- | --- | --- | --- | --- | --- | --- | --- | --- | --- |
| 30 | 1.8.1.1.2.5 | **Tablero 102- CCM-007** |  | 52d | 2026-06-05 | 2026-08-19 |  | 2026-06-05 | 2026-08-19 | 52d | 7.88d |  |  |
| 31 | 1.8.1.1.2.5.1 | Emisión Ingeniería básica tablero 102-CCM-007 |  | 10d | 2026-06-05 | 2026-06-19 | 14 | 2026-06-05 | 2026-06-19 | 10d | 7.88d | 0d | ABB |
| 32 | 1.8.1.1.2.5.2 | Aprobación de Ingeniería básica tablero 102-CCM-007 |  | 10d | 2026-06-22 | 2026-07-06 | 31FS+1d | 2026-06-22 | 2026-07-06 | 10d | 7.88d | 0d | AESA |
| 33 | 1.8.1.1.2.5.3 | Freezing Point | milestone | 0d | 2026-07-06 | 2026-07-06 | 32 | 2026-07-06 | 2026-07-06 | 0d | 13.88d | 0d | ABB |
| 34 | 1.8.1.1.2.5.4 | Emisión Ingeniería de detalle tablero 102-CCM-007 |  | 20d | 2026-07-07 | 2026-08-05 | 32FS+1d, 15 | 2026-07-07 | 2026-08-05 | 20d | 7.88d | 0d | ABB |
| 35 | 1.8.1.1.2.5.5 | Aprobación de Ingeniería de Detalle tablero 102-CCM-007 |  | 10d | 2026-08-05 | 2026-08-19 | 34 | 2026-08-05 | 2026-08-19 | 10d | 7.88d | 0d | AESA |
| 36 | 1.8.1.1.2.5.6 | Freezing Point | milestone | 0d | 2026-08-19 | 2026-08-19 | 35 | 2026-08-19 | 2026-08-19 | 0d | 7.88d | 0d | ABB |
| 37 | 1.8.1.1.3 | **Materiales** |  | 84d | 2026-07-06 | 2026-11-02 |  | 2026-07-06 | 2026-11-02 | 84d | 13.88d |  |  |
| 38 | 1.8.1.1.3.1 | Compra y acopio de materiales críticos 102-CCM-005 |  | 110ed | 2026-07-06 | 2026-10-24 | 19 | 2026-07-06 | 2026-10-24 | 110ed | 287.88d | 6d | ABB |
| 39 | 1.8.1.1.3.2 | Compra y acopio de materiales críticos 102-CCM-006 |  | 110ed | 2026-07-06 | 2026-10-24 | 26 | 2026-07-06 | 2026-10-24 | 110ed | 287.88d | 26.88d | ABB |
| 40 | 1.8.1.1.3.3 | Compra y acopio de materiales críticos 102-CCM-007 |  | 110ed | 2026-07-06 | 2026-10-24 | 33 | 2026-07-06 | 2026-10-24 | 110ed | 59.88d | 27d | ABB |
| 41 | 1.8.1.1.3.4 | Compra y acopio de materiales secundarios 102-CCM-005 |  | 75ed | 2026-08-12 | 2026-10-26 | 22 | 2026-08-12 | 2026-10-26 | 75ed | 281.88d | 0d | ABB |
| 42 | 1.8.1.1.3.5 | Compra y acopio de materiales secundarios 102-CCM-006 |  | 75ed | 2026-08-17 | 2026-10-31 | 29 | 2026-08-17 | 2026-10-31 | 75ed | 266.88d | 5.88d | ABB |
| 43 | 1.8.1.1.3.6 | Compra y acopio de materiales secundarios 102-CCM-007 |  | 75ed | 2026-08-19 | 2026-11-02 | 36 | 2026-08-19 | 2026-11-02 | 75ed | 32.88d | 0d | ABB |
| 44 | 1.8.1.1.4 | **Fabricación y ensayos** |  | 50d | 2026-10-26 | 2027-01-11 |  | 2026-10-26 | 2027-01-11 | 50d | 13.88d |  |  |
| 45 | 1.8.1.1.4.1 | Fabricación tablero 102-CCM-005 |  | 30d | 2026-10-26 | 2026-12-07 | 38, 41 | 2026-10-26 | 2026-12-07 | 30d | 62.88d | 0d | ABB |
| 46 | 1.8.1.1.4.2 | Ensayos internos tablero 102-CCM-005 |  | 10d | 2026-12-07 | 2026-12-22 | 45 | 2026-12-07 | 2026-12-22 | 10d | 62.88d | 0d | ABB |
| 47 | 1.8.1.1.4.3 | Fabricación tablero 102-CCM-006 |  | 30d | 2026-11-02 | 2026-12-14 | 39, 42 | 2026-11-02 | 2026-12-14 | 30d | 58d | 0d | ABB |
| 48 | 1.8.1.1.4.4 | Ensayos internos tablero 102-CCM-006 |  | 10d | 2026-12-15 | 2026-12-30 | 47 | 2026-12-15 | 2026-12-30 | 10d | 58d | 0d | ABB |
| 49 | 1.8.1.1.4.5 | Fabricación tablero 102-CCM-007 |  | 30d | 2026-11-02 | 2026-12-15 | 40, 43 | 2026-11-02 | 2026-12-15 | 30d | 8.88d | 0d | ABB |
| 50 | 1.8.1.1.4.6 | Ensayos internos tablero 102-CCM-007 |  | 10d | 2026-12-15 | 2027-01-04 | 49 | 2026-12-15 | 2027-01-04 | 10d | 8.88d | 0d | ABB |
| 51 | 1.8.1.1.4.7 | **Ensayos FAT** |  | 10d | 2026-12-22 | 2027-01-11 |  | 2026-12-22 | 2027-01-11 | 10d | 13.88d |  |  |
| 52 | 1.8.1.1.4.7.1 | Tablero 102-CCM-005 |  | 5d | 2026-12-22 | 2027-01-04 | 46 | 2026-12-22 | 2027-01-04 | 5d | 62.88d | 0d | ABB / AESA |
| 53 | 1.8.1.1.4.7.2 | Tablero 102-CCM-006 |  | 5d | 2027-01-04 | 2027-01-08 | 48 | 2027-01-04 | 2027-01-08 | 5d | 58d | 0d | ABB / AESA |
| 54 | 1.8.1.1.4.7.3 | Tablero 102-CCM-007 |  | 5d | 2027-01-04 | 2027-01-11 | 50 | 2027-01-04 | 2027-01-11 | 5d | 8.88d | 0d | ABB / AESA |

| ID | WBS | Task | Type | Duration | Start | Finish | Predecessors | Complete | Remaining | Baseline start | Baseline finish | Baseline duration | Total slack | Free slack | Constraint | Text1 |
| --- | --- | --- | --- | --- | --- | --- | --- | --- | --- | --- | --- | --- | --- | --- | --- | --- |
| 55 | 1.8.1.1.5 | **Adecuación y despachos de fábrica** |  | 15d | 2027-01-04 | 2027-01-25 |  |  |  | 2027-01-04 | 2027-01-25 | 15d | 13.88d |  |  |  |
| 56 | 1.8.1.1.5.1 | Tablero 102-CCM-005 |  | 10d | 2027-01-04 | 2027-01-18 | 52 |  |  | 2027-01-04 | 2027-01-18 | 10d | 62.88d | 0d |  | ABB |
| 57 | 1.8.1.1.5.2 | Tablero 102-CCM-006 |  | 10d | 2027-01-11 | 2027-01-22 | 53 |  |  | 2027-01-11 | 2027-01-22 | 10d | 58d | 0d |  | ABB |
| 58 | 1.8.1.1.5.3 | Tablero 102-CCM-007 |  | 10d | 2027-01-11 | 2027-01-25 | 54 |  |  | 2027-01-11 | 2027-01-25 | 10d | 8.88d | 0d |  | ABB |
| 59 | 1.8.1.1.6 | **Traslado internacion + Aduana** |  | 18d | 2027-01-18 | 2027-02-15 |  |  |  | 2027-01-18 | 2027-02-15 | 18d | 13.88d |  |  | ABB |
| 60 | 1.8.1.1.6.1 | Tablero 102-CCM-005 |  | 21ed | 2027-01-18 | 2027-02-08 | 56 |  |  | 2027-01-18 | 2027-02-08 | 21ed | 277d | 0d |  | ABB |
| 61 | 1.8.1.1.6.2 | Tablero 102-CCM-006 |  | 21ed | 2027-01-22 | 2027-02-12 | 57 |  |  | 2027-01-22 | 2027-02-12 | 21ed | 264d | 0d |  | ABB |
| 62 | 1.8.1.1.6.3 | Tablero 102-CCM-007 |  | 21ed | 2027-01-25 | 2027-02-15 | 58 |  |  | 2027-01-25 | 2027-02-15 | 21ed | 32.88d | 0d |  | ABB |
| 63 | 1.8.1.1.7 | **Entrega en Shelterista** |  | 6.12d | 2027-02-08 | 2027-02-18 |  |  |  | 2027-02-08 | 2027-02-18 | 6.12d | 12d |  |  |  |
| 64 | 1.8.1.1.7.1 | Tablero 102-CCM-005 |  | 3ed | 2027-02-08 | 2027-02-11 | 60 |  |  | 2027-02-08 | 2027-02-11 | 3ed | 277d |  |  | ABB |
| 65 | 1.8.1.1.7.2 | Tablero 102-CCM-006 |  | 3ed | 2027-02-12 | 2027-02-15 | 61 |  |  | 2027-02-12 | 2027-02-15 | 3ed | 264d |  |  | ABB |
| 66 | 1.8.1.1.7.3 | Tablero 102-CCM-007 |  | 3ed | 2027-02-15 | 2027-02-18 | 62 |  |  | 2027-02-15 | 2027-02-18 | 3ed | 32.88d |  |  | ABB |
| 67 | 1.8.1.2 | **Drives BT** |  | 169.88d | 2026-05-22 A | 2027-01-25 |  | 1% | 167.86d | 2026-05-22 | 2027-01-25 | 169.88d | 37d |  |  |  |
| 68 | 1.8.1.2.1 | Emisión ingeniería |  | 15d | 2026-05-22 A | 2026-06-15 | 6 | 50% | 7.5d | 2026-05-22 | 2026-06-15 | 15d | 35.88d | 0d |  | ABB |
| 69 | 1.8.1.2.2 | Aprobación de ingeniería |  | 10d | 2026-06-15 | 2026-06-29 | 68 |  |  | 2026-06-15 | 2026-06-29 | 10d | 35.88d | 0d |  | AESA |
| 70 | 1.8.1.2.3 | Freezing Point | milestone | 0d | 2026-06-29 | 2026-06-29 | 69 |  |  | 2026-06-29 | 2026-06-29 | 0d | 35.88d | 0d |  | ABB |
| 71 | 1.8.1.2.4 | Acopio y fabricación |  | 125ed | 2026-06-29 | 2026-11-01 | 70 |  |  | 2026-06-29 | 2026-11-01 | 125ed | 152.88d | 2.88d |  | ABB |
| 72 | 1.8.1.2.5 | Despacho fábrica de origen |  | 5d | 2026-11-02 | 2026-11-06 | 71 |  |  | 2026-11-02 | 2026-11-06 | 5d | 35d | 0d |  | ABB |
| 73 | 1.8.1.2.6 | Traslado internacional + aduana |  | 75ed | 2026-11-06 | 2027-01-20 | 72 |  |  | 2026-11-06 | 2027-01-20 | 75ed | 166.88d | 1.88d | finish no earlier than 2027-01-17 | ABB |
| 74 | 1.8.1.2.7 | Entrega en Shelterista |  | 3d | 2027-01-21 | 2027-01-25 | 73 |  |  | 2027-01-21 | 2027-01-25 | 3d | 37d | 32d | finish no earlier than 2027-01-20 | ABB |
| 75 | 1.8.1.3 | **Rectificadores/UPS/Baterias** |  | 140d | 2026-05-18 A | 2026-12-02 |  | 3% | 136.32d | 2026-05-18 | 2026-12-02 | 140d | 65.88d |  |  |  |
| 76 | 1.8.1.3.1 | Datos técnicos confirmados en etapa de licitación | milestone | 0d | 2026-05-18 A | 2026-05-18 A | 4 | 100% |  | 2026-05-18 | 2026-05-18 | 0d |  |  |  | AESA |
| 77 | 1.8.1.3.2 | Emisión de ingeniería básica |  | 25d | 2026-05-18 A | 2026-06-23 | 76, 4 | 50% | 12.5d | 2026-05-18 | 2026-06-23 | 25d | 74.88d | 0d |  | ABB |
| 78 | 1.8.1.3.3 | Aprobación de ingeniería básica |  | 10d | 2026-06-23 | 2026-07-07 | 77 |  |  | 2026-06-23 | 2026-07-07 | 10d | 74.88d | 0d |  | AESA |
| 79 | 1.8.1.3.4 | Freezing Point | milestone | 0d | 2026-07-07 | 2026-07-07 | 78 |  |  | 2026-07-07 | 2026-07-07 | 0d | 134.88d | 69d |  | ABB |
| 80 | 1.8.1.3.5 | Compra y Acopio de Materiales |  | 135ed | 2026-06-09 | 2026-10-22 | 76FS+15d, 78FS-25d |  |  | 2026-06-09 | 2026-10-22 | 135ed | 295d | 0d |  | ABB |
| 81 | 1.8.1.3.6 | Fabricación |  | 15d | 2026-10-13 | 2026-11-03 | 79, 80FS-7d |  |  | 2026-10-13 | 2026-11-03 | 15d | 65.88d | 0d |  | ABB |
| 82 | 1.8.1.3.7 | Ensayos internos |  | 7d | 2026-11-03 | 2026-11-12 | 81 |  |  | 2026-11-03 | 2026-11-12 | 7d | 65.88d | 0d |  | ABB |
| 83 | 1.8.1.3.8 | Ensayos - FAT |  | 2d | 2026-11-12 | 2026-11-16 | 82 |  |  | 2026-11-12 | 2026-11-16 | 2d | 65.88d | 0d |  | ABB / AESA |
| 84 | 1.8.1.3.9 | Acondicionamiento y embalaje |  | 4d | 2026-11-16 | 2026-11-20 | 83 |  |  | 2026-11-16 | 2026-11-20 | 4d | 65.88d | 0d |  | ABB |
| 85 | 1.8.1.3.10 | Condicion EXW |  | 5d | 2026-11-20 | 2026-11-27 | 84 |  |  | 2026-11-20 | 2026-11-27 | 5d | 65.88d | 0d |  | ABB |
| 86 | 1.8.1.3.11 | Entrega en Shelterista |  | 3d | 2026-11-27 | 2026-12-02 | 85 |  |  | 2026-11-27 | 2026-12-02 | 3d | 65.88d | 36.88d |  | ABB |

| ID | WBS | Task | Type | Duration | Start | Finish | Predecessors | Complete | Remaining | Baseline start | Baseline finish | Baseline duration | Total slack | Free slack | Constraint | Text1 |
| --- | --- | --- | --- | --- | --- | --- | --- | --- | --- | --- | --- | --- | --- | --- | --- | --- |
| 87 | 1.8.1.4 | **Tableros Auxiliares** |  | 156.88d | 2026-05-22 A | 2027-01-06 |  | 1% | 155.05d | 2026-05-22 | 2027-01-06 | 156.88d | 48d |  |  |  |
| 88 | 1.8.1.4.1 | Emisión ingeniería básica |  | 12d | 2026-05-22 A | 2026-06-10 | 7 | 50% | 6d | 2026-05-22 | 2026-06-10 | 12d | 51.88d | 0d |  | ABB |
| 89 | 1.8.1.4.2 | Aprobación de Ingeniería Básica |  | 10d | 2026-06-10 | 2026-06-24 | 88 |  |  | 2026-06-10 | 2026-06-24 | 10d | 51.88d | 0d |  | AESA |
| 90 | 1.8.1.4.3 | Freezing Point | milestone | 0d | 2026-06-24 | 2026-06-24 | 89 |  |  | 2026-06-24 | 2026-06-24 | 0d | 51.88d | 0d |  | ABB |
| 91 | 1.8.1.4.4 | Emisión Ingeniería de detalle |  | 7d | 2026-06-24 | 2026-07-03 | 90 |  |  | 2026-06-24 | 2026-07-03 | 7d | 137.88d | 0d |  | ABB |
| 92 | 1.8.1.4.5 | Aprobación de Ingeniería de Detalle |  | 10d | 2026-07-03 | 2026-07-20 | 91 |  |  | 2026-07-03 | 2026-07-20 | 10d | 137.88d | 0d |  | AESA |
| 93 | 1.8.1.4.6 | Freezing Point | milestone | 0d | 2026-07-20 | 2026-07-20 | 92 |  |  | 2026-07-20 | 2026-07-20 | 0d | 137.88d | 89.88d |  | ABB |
| 94 | 1.8.1.4.7 | Acopio de Materiales |  | 150ed | 2026-06-24 | 2026-11-21 | 90 |  |  | 2026-06-24 | 2026-11-21 | 150ed | 224.88d | 5.88d |  | ABB |
| 95 | 1.8.1.4.8 | Fabricación |  | 20d | 2026-11-23 | 2026-12-21 | 94, 90, 93 |  |  | 2026-11-23 | 2026-12-21 | 20d | 48d | 0d |  | ABB |
| 96 | 1.8.1.4.9 | Ensayos - FAT |  | 2d | 2026-12-22 | 2026-12-23 | 95 |  |  | 2026-12-22 | 2026-12-23 | 2d | 48d | 0d |  | ABB / AESA |
| 97 | 1.8.1.4.10 | Disponible para entrega |  | 3d | 2026-12-28 | 2026-12-30 | 96 |  |  | 2026-12-28 | 2026-12-30 | 3d | 48d | 0d |  | ABB |
| 98 | 1.8.1.4.11 | Entrega en Shelterista |  | 3d | 2027-01-04 | 2027-01-06 | 97 |  |  | 2027-01-04 | 2027-01-06 | 3d | 48d |  |  | ABB |
| 99 | 1.8.1.5 | **Ductos de barras** |  | 189.88d | 2026-07-20 | 2027-04-22 |  |  |  | 2026-06-20 | 2027-03-31 | 193d | 15.88d |  |  |  |
| 100 | 1.8.1.5.1 | Emisión Layout instalación + Detalle de Conexionado Trafo | milestone | 0ed | 2026-07-20 | 2026-07-20 | 7FS+15d |  |  | 2026-06-20 | 2026-06-20 | 0ed | 65.88d | 0d | start no earlier than 2026-07-20 | AESA |
| 101 | 1.8.1.5.2 | Diseño de ductos |  | 60d | 2026-07-20 | 2026-10-12 | 100 |  |  | 2026-06-22 | 2026-09-14 | 60d | 15.88d | 0d |  | ABB |
| 102 | 1.8.1.5.3 | Aprobación de diseño |  | 10d | 2026-10-12 | 2026-10-26 | 101 |  |  | 2026-09-15 | 2026-09-28 | 10d | 15.88d | 0d |  | AESA |
| 103 | 1.8.1.5.4 | Freezing Point | milestone | 0d | 2026-10-26 | 2026-10-26 | 102 |  |  | 2026-09-28 | 2026-09-28 | 0d | 15.88d | 0d |  | ABB |
| 104 | 1.8.1.5.5 | Fabricación |  | 90ed | 2026-10-26 | 2027-01-24 | 103 |  |  | 2026-09-28 | 2026-12-27 | 90ed | 65.88d | 2.88d |  | ABB |
| 105 | 1.8.1.5.6 | FCA fabrica de origen |  | 5d | 2027-01-25 | 2027-01-29 | 104 |  |  | 2026-12-28 | 2027-01-05 | 5d | 13d | 0d |  | ABB |
| 106 | 1.8.1.5.7 | Traslado internacional + aduana |  | 80ed | 2027-01-29 | 2027-04-19 | 105 |  |  | 2027-01-05 | 2027-03-26 | 80ed | 67.88d | 1.88d |  | ABB |
| 107 | 1.8.1.5.8 | Entrega en sitio |  | 3d | 2027-04-20 | 2027-04-22 | 106 |  |  | 2027-03-29 | 2027-03-31 | 3d | 16d |  |  | ABB |
| 108 | 1.8.2 | **Sala eléctrica 3** |  | 248.88d | 2026-05-18 A | 2027-05-14 |  | 1% | 247.44d | 2026-05-18 | 2027-05-14 | 248.88d | 0d |  |  |  |
| 109 | 1.8.2.1 | Confirmación Layout Sala y equipamento |  | 2d | 2026-05-18 A | 2026-05-20 A | 4 | 100% |  | 2026-05-18 | 2026-05-20 | 2d |  |  |  | ABB / AESA |
| 110 | 1.8.2.2 | Definición de equipos para control de acceso | milestone | 0d | 2026-06-30 | 2026-06-30 | 109 |  |  | 2026-06-30 | 2026-06-30 | 0d | 17.88d | 0d | start no earlier than 2026-06-30 | AESA |
| 111 | 1.8.2.3 | Emisión ingeniería básica |  | 32d | 2026-05-20 A | 2026-07-06 | 109 | 20% | 25.6d | 2026-05-20 | 2026-07-06 | 32d | 72.88d | 0d |  | ABB |
| 112 | 1.8.2.4 | Aprobación de Ingeniería Básica |  | 10d | 2026-07-06 | 2026-07-21 | 111 |  |  | 2026-07-06 | 2026-07-21 | 10d | 72.88d | 0d |  | AESA |
| 113 | 1.8.2.5 | Freezing Point | milestone | 0d | 2026-07-21 | 2026-07-21 | 112 |  |  | 2026-07-21 | 2026-07-21 | 0d | 72.88d | 68.88d |  | ABB |
| 114 | 1.8.2.6 | Emisión Ingeniería de detalle |  | 85d | 2026-05-22 | 2026-09-22 | 110FS-26d, 4 |  |  | 2026-05-22 | 2026-09-22 | 85d | 17.88d | 0d |  | ABB |
| 115 | 1.8.2.7 | Aprobación de Ingeniería de Detalle |  | 10d | 2026-09-22 | 2026-10-06 | 114 |  |  | 2026-09-22 | 2026-10-06 | 10d | 17.88d | 0d |  | AESA |
| 116 | 1.8.2.8 | Freezing Point | milestone | 0d | 2026-10-06 | 2026-10-06 | 115 |  |  | 2026-10-06 | 2026-10-06 | 0d | 17.88d | 13.88d |  | ABB |
| 117 | 1.8.2.9 | Compra y acopio de materiales |  | 180ed | 2026-05-19 | 2026-11-15 | 4FS+1d |  |  | 2026-05-19 | 2026-11-15 | 180ed | 13d | 0d |  | ABB |
| 118 | 1.8.2.10 | Suministro de equipos para control de acceso | milestone | 0d | 2027-02-03 | 2027-02-03 | 110, 123 |  |  | 2027-02-03 | 2027-02-03 | 0d | 1d | 0d | start no earlier than 2026-11-16 | AESA |

| ID | WBS | Task | Type | Duration | Start | Finish | Predecessors | Complete | Remaining | Baseline start | Baseline finish | Baseline duration | Total slack | Free slack | Text1 |
| --- | --- | --- | --- | --- | --- | --- | --- | --- | --- | --- | --- | --- | --- | --- | --- |
| 119 | 1.8.2.11 | **Fabricación** |  | 83d | 2026-10-26 | 2027-02-28 |  |  |  | 2026-10-26 | 2027-02-28 | 83d | 4d |  |  |
| 120 | 1.8.2.11.1 | Construcción base |  | 60ed | 2026-10-26 | 2026-12-25 | 113, 116, 117FS-15d |  |  | 2026-10-26 | 2026-12-25 | 60ed | 10.12d | 0d | ABB |
| 121 | 1.8.2.11.2 | Construcción estructura |  | 45ed | 2026-11-25 | 2027-01-09 | 120FS-20d |  |  | 2026-11-25 | 2027-01-09 | 45ed | 376.12d |  | ABB |
| 122 | 1.8.2.11.3 | Revestimiento exterior e interior |  | 40ed | 2026-12-21 | 2027-01-30 | 120FS-3d |  |  | 2026-12-21 | 2027-01-30 | 40ed | 15d | 12d | ABB |
| 123 | 1.8.2.11.4 | Pintura exterior e interior |  | 70ed | 2026-11-25 | 2027-02-03 | 120FS-20d |  |  | 2026-11-25 | 2027-02-03 | 70ed | 3d | 0d | ABB |
| 124 | 1.8.2.11.5 | Instalación eléctrica |  | 25ed | 2027-02-03 | 2027-02-28 | 118, 122, 123 |  |  | 2027-02-03 | 2027-02-28 | 25ed | 3d |  | ABB |
| 125 | 1.8.2.12 | **Montaje e integración de equipos** |  | 18d | 2027-03-01 | 2027-03-25 |  |  |  | 2027-03-01 | 2027-03-25 | 18d | 0d |  |  |
| 126 | 1.8.2.12.1 | Montaje tableros CCMs |  | 10d | 2027-03-01 | 2027-03-12 | 124, 66 |  |  | 2027-03-01 | 2027-03-12 | 10d | 0d |  | ABB |
| 127 | 1.8.2.12.2 | Montaje Drives |  | 3d | 2027-03-15 | 2027-03-17 | 74, 124, 126 |  |  | 2027-03-15 | 2027-03-17 | 3d | 5d |  | ABB |
| 128 | 1.8.2.12.3 | Montaje Rectificadores/UPS/Baterias |  | 3d | 2027-03-15 | 2027-03-17 | 124, 126, 86 |  |  | 2027-03-15 | 2027-03-17 | 3d | 0d |  | ABB |
| 129 | 1.8.2.12.4 | Montaje Tableros Auxiliares |  | 3d | 2027-03-18 | 2027-03-22 | 98, 124, 128 |  |  | 2027-03-18 | 2027-03-22 | 3d | 0d |  | ABB |
| 130 | 1.8.2.12.5 | Montaje PMS |  | 2d | 2027-03-23 | 2027-03-25 | 8, 124, 129 |  |  | 2027-03-23 | 2027-03-25 | 2d | 0d |  | ABB |
| 131 | 1.8.2.13 | Interconexión de equipos |  | 12d | 2027-03-29 | 2027-04-13 | 126, 127, 128, 129, 130 |  |  | 2027-03-29 | 2027-04-13 | 12d | 0d |  | ABB |
| 132 | 1.8.2.14 | Ensayos FAT (sala eléctrica) |  | 5d | 2027-04-14 | 2027-04-20 | 131 |  |  | 2027-04-14 | 2027-04-20 | 5d | 0d |  | ABB / AESA |
| 133 | 1.8.2.15 | Ensayos PMS (Contrato PMS) |  | 5d | 2027-04-21 | 2027-04-27 | 132 |  |  | 2027-04-21 | 2027-04-27 | 5d | 0d |  | ABB / AESA |
| 134 | 1.8.2.16 | Desconexion de interconexionado para viaje |  | 5d | 2027-04-28 | 2027-05-04 | 133 |  |  | 2027-04-28 | 2027-05-04 | 5d | 0d |  | ABB |
| 135 | 1.8.2.17 | Embalaje |  | 5d | 2027-05-05 | 2027-05-11 | 134 |  |  | 2027-05-05 | 2027-05-11 | 5d | 0d |  | ABB |
| 136 | 1.8.2.18 | Despacho |  | 3d | 2027-05-12 | 2027-05-14 | 135 |  |  | 2027-05-12 | 2027-05-14 | 3d | 0d |  | ABB |
| 137 | 1.8.2.19 | Entrega en condición EXW | milestone | 0d | 2027-05-14 | 2027-05-14 | 136 |  |  | 2027-05-14 | 2027-05-14 | 0d | 0d |  | ABB |
| 138 | 1.9 | **Sala Eléctrica #4 MT** |  | 222.88d | 2026-05-18 A | 2027-04-08 |  | 1% | 220.48d | 2026-05-18 | 2027-04-08 | 222.88d | 26d |  |  |
| 139 | 1.9.1 | **Equipos** |  | 169.88d | 2026-05-22 A | 2027-01-25 |  | 1% | 167.66d | 2026-05-22 | 2027-01-25 | 169.88d | 75d |  |  |
| 140 | 1.9.1.1 | **Celdas MT Unigear** |  | 149d | 2026-05-22 A | 2026-12-22 |  | 1% | 147.59d | 2026-05-22 | 2026-12-15 | 144d | 54.88d |  |  |
| 141 | 1.9.1.1.1 | **Ingeniería** |  | 49d | 2026-05-22 A | 2026-08-03 |  | 11% | 43.5d | 2026-05-22 | 2026-08-03 | 49d | 54.88d |  |  |
| 142 | 1.9.1.1.1.1 | Emisión ingeniería básica |  | 11d | 2026-05-22 A | 2026-06-09 | 6 | 50% | 5.5d | 2026-05-22 | 2026-06-09 | 11d | 53.88d | 0d | ABB |
| 143 | 1.9.1.1.1.2 | Aprobación de Ingeniería Básica |  | 10d | 2026-06-09 | 2026-06-23 | 142 |  |  | 2026-06-09 | 2026-06-23 | 10d | 53.88d | 0d | AESA |
| 144 | 1.9.1.1.1.3 | Freezing Point | milestone | 0d | 2026-06-23 | 2026-06-23 | 143 |  |  | 2026-06-23 | 2026-06-23 | 0d | 53.88d | 0d | ABB |
| 145 | 1.9.1.1.1.4 | Emisión Ingeniería de detalle |  | 18d | 2026-06-23 | 2026-07-20 | 144 |  |  | 2026-06-23 | 2026-07-20 | 18d | 54.88d | 0d | ABB |
| 146 | 1.9.1.1.1.5 | Aprobación de Ingeniería de Detalle |  | 10d | 2026-07-20 | 2026-08-03 | 145 |  |  | 2026-07-20 | 2026-08-03 | 10d | 54.88d | 0d | AESA |
| 147 | 1.9.1.1.1.6 | Freezing Point | milestone | 0ed | 2026-08-03 | 2026-08-03 | 146 |  |  | 2026-08-03 | 2026-08-03 | 0ed | 227.88d | 0d | ABB |

| ID | WBS | Task | Type | Duration | Start | Finish | Predecessors | Complete | Remaining | Baseline start | Baseline finish | Baseline duration | Total slack | Free slack | Text1 |
| --- | --- | --- | --- | --- | --- | --- | --- | --- | --- | --- | --- | --- | --- | --- | --- |
| 148 | 1.9.1.1.2 | **Acopio de materiales y fabricación** |  | 110d | 2026-06-23 | 2026-11-25 |  |  |  | 2026-06-23 | 2026-11-25 | 110d | 53.88d |  |  |
| 149 | 1.9.1.1.2.1 | Compra de materiales principales |  | 90ed | 2026-06-23 | 2026-09-21 | 144 |  |  | 2026-06-23 | 2026-09-21 | 90ed | 230.88d | 3d | ABB |
| 150 | 1.9.1.1.2.2 | Compra de materiales secundarios |  | 50ed | 2026-08-03 | 2026-09-22 | 147 |  |  | 2026-08-03 | 2026-09-22 | 50ed | 227.88d | 0d | ABB |
| 151 | 1.9.1.1.2.3 | Fabricación |  | 30d | 2026-09-22 | 2026-11-03 | 144, 147, 149, 150 |  |  | 2026-09-22 | 2026-11-03 | 30d | 53.88d | 0d | ABB |
| 152 | 1.9.1.1.2.4 | Ensayos internos |  | 8d | 2026-11-03 | 2026-11-13 | 151 |  |  | 2026-11-03 | 2026-11-13 | 8d | 53.88d | 0d | ABB |
| 153 | 1.9.1.1.2.5 | Ensayos - FAT |  | 5d | 2026-11-13 | 2026-11-20 | 152 |  |  | 2026-11-13 | 2026-11-20 | 5d | 53.88d | 0d | ABB / AESA |
| 154 | 1.9.1.1.2.6 | Acondicionamiento y embalaje |  | 3d | 2026-11-20 | 2026-11-25 | 153 |  |  | 2026-11-20 | 2026-11-25 | 3d | 53.88d | 0d | ABB |
| 155 | 1.9.1.1.3 | FCA fabrica de origen |  | 2d | 2026-11-25 | 2026-11-27 | 154 |  |  | 2026-11-25 | 2026-11-27 | 2d | 53.88d | 0d | ABB |
| 156 | 1.9.1.1.4 | Traslado internacional + aduana |  | 21ed | 2026-11-27 | 2026-12-18 | 155 |  |  | 2026-11-27 | 2026-12-11 | 14ed | 260.88d | 0d | ABB |
| 157 | 1.9.1.1.5 | Entrega en Shelterista |  | 2d | 2026-12-18 | 2026-12-22 | 156 |  |  | 2026-12-11 | 2026-12-15 | 2d | 54.88d | 23.88d | ABB |
| 158 | 1.9.1.2 | **Drives MT** |  | 169.88d | 2026-05-22 A | 2027-01-25 |  | 1% | 167.86d | 2026-05-22 | 2027-01-25 | 169.88d | 39d |  |  |
| 159 | 1.9.1.2.1 | Emisión ingeniería |  | 15d | 2026-05-22 A | 2026-06-15 | 6 | 50% | 7.5d | 2026-05-22 | 2026-06-15 | 15d | 35.88d | 0d | ABB |
| 160 | 1.9.1.2.2 | Aprobación de ingeniería |  | 10d | 2026-06-15 | 2026-06-29 | 159 |  |  | 2026-06-15 | 2026-06-29 | 10d | 35.88d | 0d | AESA |
| 161 | 1.9.1.2.3 | Freezing Point | milestone | 0d | 2026-06-29 | 2026-06-29 | 160 |  |  | 2026-06-29 | 2026-06-29 | 0d | 35.88d | 0d | ABB |
| 162 | 1.9.1.2.4 | Acopio y fabricación |  | 125ed | 2026-06-29 | 2026-11-01 | 161 |  |  | 2026-06-29 | 2026-11-01 | 125ed | 152.88d | 2.88d | ABB |
| 163 | 1.9.1.2.5 | Despacho fábrica de origen |  | 5d | 2026-11-02 | 2026-11-06 | 162 |  |  | 2026-11-02 | 2026-11-06 | 5d | 35d | 0d | ABB |
| 164 | 1.9.1.2.6 | Traslado internacional + aduana |  | 75ed | 2026-11-06 | 2027-01-20 | 163 |  |  | 2026-11-06 | 2027-01-20 | 75ed | 172.88d | 1.88d | ABB |
| 165 | 1.9.1.2.7 | Entrega en Shelterista |  | 3d | 2027-01-21 | 2027-01-25 | 164 |  |  | 2027-01-21 | 2027-01-25 | 3d | 39d | 13d | ABB |
| 166 | 1.9.1.3 | **Tableros Auxiliares** |  | 156.88d | 2026-05-22 A | 2027-01-06 |  | 2% | 153.96d | 2026-05-22 | 2027-01-06 | 156.88d | 88d |  |  |
| 167 | 1.9.1.3.1 | Emisión ingeniería básica |  | 12d | 2026-05-22 A | 2026-06-10 | 7 | 80% | 2.4d | 2026-05-22 | 2026-06-10 | 12d | 46.88d | 0d | ABB |
| 168 | 1.9.1.3.2 | Aprobación de Ingeniería Básica |  | 10d | 2026-06-10 | 2026-06-24 | 167 |  |  | 2026-06-10 | 2026-06-24 | 10d | 46.88d | 0d | AESA |
| 169 | 1.9.1.3.3 | Freezing Point | milestone | 0d | 2026-06-24 | 2026-06-24 | 168 |  |  | 2026-06-24 | 2026-06-24 | 0d | 131.88d | 0d | ABB |
| 170 | 1.9.1.3.4 | Emisión Ingeniería de detalle |  | 7d | 2026-06-24 | 2026-07-03 | 169 |  |  | 2026-06-24 | 2026-07-03 | 7d | 131.88d | 0d | ABB |
| 171 | 1.9.1.3.5 | Aprobación de Ingeniería de Detalle |  | 10d | 2026-07-03 | 2026-07-20 | 170 |  |  | 2026-07-03 | 2026-07-20 | 10d | 131.88d | 0d | AESA |
| 172 | 1.9.1.3.6 | Freezing Point | milestone | 0d | 2026-07-20 | 2026-07-20 | 171 |  |  | 2026-07-20 | 2026-07-20 | 0d | 205.88d |  | ABB |
| 173 | 1.9.1.3.7 | Acopio de Materiales |  | 150ed | 2026-06-24 | 2026-11-21 | 168 |  |  | 2026-06-24 | 2026-11-21 | 150ed | 200.88d | 5.88d | ABB |
| 174 | 1.9.1.3.8 | Fabricación |  | 20d | 2026-11-23 | 2026-12-21 | 168, 171, 173 |  |  | 2026-11-23 | 2026-12-21 | 20d | 42d | 0d | ABB |
| 175 | 1.9.1.3.9 | Ensayos - FAT |  | 2d | 2026-12-22 | 2026-12-23 | 174 |  |  | 2026-12-22 | 2026-12-23 | 2d | 42d | 0d | ABB / AESA |
| 176 | 1.9.1.3.10 | Disponible para entrega |  | 3d | 2026-12-28 | 2026-12-30 | 175 |  |  | 2026-12-28 | 2026-12-30 | 3d | 42d | 0d | ABB |
| 177 | 1.9.1.3.11 | Entrega en Shelterista |  | 3d | 2027-01-04 | 2027-01-06 | 176 |  |  | 2027-01-04 | 2027-01-06 | 3d | 42d | 16d | ABB |

| ID | WBS | Task | Type | Duration | Start | Finish | Predecessors | Complete | Remaining | Baseline start | Baseline finish | Baseline duration | Total slack | Free slack | Constraint | Text1 |
| --- | --- | --- | --- | --- | --- | --- | --- | --- | --- | --- | --- | --- | --- | --- | --- | --- |
| 178 | 1.9.2 | **Sala eléctrica 4** |  | 222.88d | 2026-05-18 A | 2027-04-08 |  | 1% | 221.09d | 2026-05-18 | 2027-04-08 | 222.88d | 26d |  |  |  |
| 179 | 1.9.2.1 | Confirmación Layout Sala y equipamento |  | 2d | 2026-05-18 A | 2026-05-20 A | 4 | 100% |  | 2026-05-18 | 2026-05-20 | 2d |  |  |  | ABB / AESA |
| 180 | 1.9.2.2 | Definición de equipos para control de acceso | milestone | 0d | 2026-06-30 | 2026-06-30 | 179 |  |  | 2026-06-30 | 2026-06-30 | 0d | 28.88d | 0d | start no earlier than 2026-06-30 | AESA |
| 181 | 1.9.2.3 | Emisión ingeniería básica |  | 32d | 2026-05-20 A | 2026-07-06 | 179 | 30% | 22.4d | 2026-05-20 | 2026-07-06 | 32d | 83.88d | 0d |  | ABB |
| 182 | 1.9.2.4 | Aprobación de Ingeniería Básica |  | 10d | 2026-07-06 | 2026-07-21 | 181 |  |  | 2026-07-06 | 2026-07-21 | 10d | 83.88d | 0d |  | AESA |
| 183 | 1.9.2.5 | Freezing Point | milestone | 0d | 2026-07-21 | 2026-07-21 | 182 |  |  | 2026-07-21 | 2026-07-21 | 0d | 83.88d | 55d |  | ABB |
| 184 | 1.9.2.6 | Emisión Ingeniería de detalle |  | 85d | 2026-05-22 | 2026-09-22 | 4, 180FS-26d |  |  | 2026-05-22 | 2026-09-22 | 85d | 28.88d | 0d |  | ABB |
| 185 | 1.9.2.7 | Aprobación de Ingeniería de Detalle |  | 10d | 2026-09-22 | 2026-10-06 | 184 |  |  | 2026-09-22 | 2026-10-06 | 10d | 28.88d | 0d |  | AESA |
| 186 | 1.9.2.8 | Freezing Point | milestone | 0d | 2026-10-06 | 2026-10-06 | 185 |  |  | 2026-10-06 | 2026-10-06 | 0d | 28.88d | 0d |  | ABB |
| 187 | 1.9.2.9 | Compra y acopio de materiales |  | 180ed | 2026-05-19 | 2026-11-15 | 4FS+1d |  |  | 2026-05-19 | 2026-11-15 | 180ed | 184d | 0d |  | ABB |
| 188 | 1.9.2.10 | Suministro de equipos para control de acceso | milestone | 0d | 2027-01-04 | 2027-01-04 | 180, 193 |  |  | 2027-01-04 | 2027-01-04 | 0d | 28d | 0d | start no earlier than 2026-11-16 | AESA |
| 189 | 1.9.2.11 | **Fabricación** |  | 77.88d | 2026-10-06 | 2027-01-29 |  |  |  | 2026-10-06 | 2027-01-29 | 77.88d | 28.88d |  |  |  |
| 190 | 1.9.2.11.1 | Construcción base |  | 60ed | 2026-10-06 | 2026-12-05 | 183, 186, 187FS-40d |  |  | 2026-10-06 | 2026-12-05 | 60ed | 118d | 0d |  | ABB |
| 191 | 1.9.2.11.2 | Construcción estructura |  | 45ed | 2026-11-02 | 2026-12-17 | 190FS-25d |  |  | 2026-11-02 | 2026-12-17 | 45ed | 445.12d |  |  | ABB |
| 192 | 1.9.2.11.3 | Revestimiento exterior e interior |  | 40ed | 2026-11-25 | 2027-01-04 | 190FS-8d |  |  | 2026-11-25 | 2027-01-04 | 40ed | 120d | 0d |  | ABB |
| 193 | 1.9.2.11.4 | Pintura exterior e interior |  | 70ed | 2026-10-26 | 2027-01-04 | 190FS-30d |  |  | 2026-10-26 | 2027-01-04 | 70ed | 120d | 0d |  | ABB |
| 194 | 1.9.2.11.5 | Instalación eléctrica |  | 25ed | 2027-01-04 | 2027-01-29 | 193, 188, 192 |  |  | 2027-01-04 | 2027-01-29 | 25ed | 120d | 0d |  | ABB |
| 195 | 1.9.2.12 | **Montaje e integración de equipos** |  | 15d | 2027-01-29 | 2027-02-22 |  |  |  | 2027-01-29 | 2027-02-22 | 15d | 26d |  |  |  |
| 196 | 1.9.2.12.1 | Montaje Tableros Auxiliares UPS |  | 3d | 2027-01-29 | 2027-02-02 | 157, 86, 194 |  |  | 2027-01-29 | 2027-02-02 | 3d | 38d | 12d |  | ABB |
| 197 | 1.9.2.12.2 | Montaje Tableros Auxiliares |  | 5d | 2027-01-29 | 2027-02-04 | 177, 194 |  |  | 2027-01-29 | 2027-02-04 | 5d | 26d | 0d |  | ABB |
| 198 | 1.9.2.12.3 | Montaje Tablero MT |  | 5d | 2027-02-05 | 2027-02-15 | 157, 194, 197 |  |  | 2027-02-05 | 2027-02-15 | 5d | 26d | 0d |  | ABB |
| 199 | 1.9.2.12.4 | Montaje Drives |  | 5d | 2027-02-16 | 2027-02-22 | 165, 194, 198 |  |  | 2027-02-16 | 2027-02-22 | 5d | 26d | 0d |  | ABB |
| 200 | 1.9.2.12.5 | Montaje PMS |  | 3d | 2027-02-18 | 2027-02-22 | 8, 194 |  |  | 2027-02-18 | 2027-02-22 | 3d | 36d | 10d |  | ABB |
| 201 | 1.9.2.13 | Interconexión de equipos |  | 10d | 2027-02-23 | 2027-03-08 | 196, 197, 198, 199, 200FS-10d |  |  | 2027-02-23 | 2027-03-08 | 10d | 26d | 0d |  | ABB |
| 202 | 1.9.2.14 | Ensayos FAT (sala eléctrica) |  | 5d | 2027-03-09 | 2027-03-15 | 201 |  |  | 2027-03-09 | 2027-03-15 | 5d | 26d | 0d |  | ABB / AESA |
| 203 | 1.9.2.15 | Ensayos PMS (Contrato PMS) |  | 5d | 2027-03-16 | 2027-03-22 | 202 |  |  | 2027-03-16 | 2027-03-22 | 5d | 26d | 0d |  | ABB / AESA |
| 204 | 1.9.2.16 | Desconexion de interconexionado para viaje |  | 5d | 2027-03-23 | 2027-03-31 | 203 |  |  | 2027-03-23 | 2027-03-31 | 5d | 26d | 0d |  | ABB |
| 205 | 1.9.2.17 | Embalaje |  | 3d | 2027-04-01 | 2027-04-05 | 204 |  |  | 2027-04-01 | 2027-04-05 | 3d | 26d | 0d |  | ABB |
| 206 | 1.9.2.18 | Despacho |  | 3d | 2027-04-06 | 2027-04-08 | 205 |  |  | 2027-04-06 | 2027-04-08 | 3d | 26d | 0d |  | ABB |
| 207 | 1.9.2.19 | Entrega en condición EXW | milestone | 0d | 2027-04-08 | 2027-04-08 | 206 |  |  | 2027-04-08 | 2027-04-08 | 0d | 26d |  |  | ABB |
