# CPF2 - LB Revision 1 al 240226 ALC REDEFINIDO RFSU 31-01-28 Rev.1

Schedule from Primavera P6, 2025-06-30 to 2028-04-29, data date 2025-12-05, A marks actual dates.

## Calendars

- Lun_Sab - Obra_sin_Feriado: Mon-Sat 07:00-17:00; Sun off. Exceptions (off unless hours are given): 2025-12-22 to 2025-12-27, 2025-12-29 to 2026-01-03, 2026-12-21 to 2026-12-26, 2026-12-28 to 2027-01-02.
- Lun_Vie_Con_Feriado: Mon-Fri 07:00-17:00; Sat-Sun off. Exceptions (off unless hours are given): 2025-07-09, 2025-11-20, 2025-12-24 to 2025-12-25, 2025-12-31 to 2026-01-01, 2026-02-16 to 2026-02-17, 2026-03-24, 2026-04-02 to 2026-04-03, 2026-05-01, 2026-05-25, 2026-07-09, 2026-08-17, 2026-10-12, 2026-11-24, 2026-12-08, 2026-12-24 to 2026-12-25, 2026-12-31 to 2027-01-01, 2027-02-15 to 2027-02-16, 2027-03-24.
- Lun_Dom_Sin_Feriado: Mon-Sun 07:00-17:00.
- FAB.AESA - Lun a Sab Con Feriados: Mon-Sat 07:30-16:30; Sun off.
- PARO: Mon-Sun 07:00-17:00.

## Resources

| Resource | Group | Notes |
| --- | --- | --- |
| Distibucion Venta | equipment | ?? |
| HH Civil APRO | labor |  |
| HH Electricidad | labor | ?? |
| HH Aislación General | labor | ?ï»¿ |
| HH Pintura General | labor |  |
| HH Precomisionado | labor | ?? |
| HH Comisionado | labor | ?? |
| HH Equipos Mecánicos | labor | ?? |
| HH Estructura Metalica APRO | labor |  |
| HH Cañerias AN | labor |  |
| HH Instrumentos | labor | ??? |
| HH Andamios | labor | ?? |

## Schedule

| ID | Activity | Type | Duration | Start | Finish | Predecessors | Complete | Planned start | Planned finish | Total float | Free float | Constraint | Calendar | CAMPO DE TRABAJO 2 | 24607 - WBS Cliente | 24607 - WBS Cliente RA | CAMPO DE TRABAJO | CAMPO DE TRABAJO 3 | LAYOUT |
| --- | --- | --- | --- | --- | --- | --- | --- | --- | --- | --- | --- | --- | --- | --- | --- | --- | --- | --- | --- |
| CDU513 | Relleno y compactación A ELIMINAR |  | 81d | 2025-12-05 | 2026-03-23 |  |  |  |  | 647d |  |  |  | UG | 07 | 11 |  |  |  |
| CDU515 | Construccion de cañeros (inc excavacion/hormigon/relleno) |  | 90d | 2025-12-05 | 2026-04-02 |  |  |  |  | 638d |  |  |  | PAT | 07 | 11 |  |  |  |
| CDU516 | Relleno y compactacion de zanzas A ELIMINAR |  | 54d | 2025-12-05 | 2026-02-19 |  |  |  |  | 674d |  |  |  |  | 07 | 11 |  |  |  |
| CDU517 | Excavacion de zanjas para cañeros A ELIMINAR |  | 64.8d | 2025-12-05 | 2026-03-04 |  |  |  |  | 663.2d |  |  |  | UG | 07 | 11 |  |  |  |
| CDU519 | Relleno y compactacion de zanjas A ELIMINAR |  | 54d | 2025-12-05 | 2026-02-19 |  |  |  |  | 674d |  |  |  | UG | 07 | 11 |  |  |  |
| CI020020 | Montaje de instrumentos - Senda Norte |  | 90d | 2025-12-05 | 2026-04-02 |  |  |  |  | 638d |  |  |  |  | 07 | 11 |  |  |  |
| CM015023 | Generador electrico a gas - KBE-600 L |  | 13.5d | 2025-12-05 | 2025-12-20 |  |  |  |  | 714.5d |  |  |  | FUERA NUEVO ALCANCE | 1 | 10 |  |  |  |
| CONCIV01 | Analisis de Ingenieria de referencia (CONSIST - IBE) p/compras tempranas |  | 20d | 2025-12-05 | 2026-01-07 | SUS001, MG1010 |  |  |  | 20d | 0d |  | Lun_Vie_Con_Feriado | ING | 06 | 01 |  |  |  |
| CONELE01 | Analisis de Ingenieria de referencia (CONSIST - IBE) p/compras tempranas |  | 20d | 2025-12-05 | 2026-01-07 | SUS001, MG1010 |  |  |  | 16d | 0d |  | Lun_Vie_Con_Feriado | ING | 08 | 05 |  |  |  |
| CONINS01 | Analisis de Ingenieria de referencia (CONSIST - IBE) p/compras tempranas |  | 20d | 2025-12-05 | 2026-01-07 | SUS001, MG1010 |  |  |  | 14d | 0d |  | Lun_Vie_Con_Feriado | ING | 09 | 06 |  |  |  |
| CONMEC01 | Analisis de Ingenieria de referencia (CONSIST - IBE) p/compras tempranas |  | 21d | 2025-12-05 | 2026-01-08 | SUS001, MG1010 |  |  |  | 23d | 0d |  | Lun_Vie_Con_Feriado | ING | 04 | 07 |  |  |  |
| CONPIP01 | Analisis de Ingenieria de referencia (CONSIST - IBE) p/compras tempranas |  | 21d | 2025-12-05 | 2026-01-08 | SUS001, MG1010 |  |  |  | 0d |  |  | Lun_Vie_Con_Feriado | ING | 05 | 04 |  |  |  |
| CONPROC01 | Analisis de Ingenieria de referencia (CONSIST - IBE) p/compras tempranas |  | 20d | 2025-12-05 | 2026-01-07 | SUS001, MG1010 |  |  |  | 0d |  |  | Lun_Vie_Con_Feriado |  | 02 | 02 |  |  |  |
| CONSDD01 | Analisis de Ingenieria de referencia (CONSIST - IBE) p/compras tempranas |  | 20d | 2025-12-05 | 2026-01-07 | SUS001, MG1010 SS |  |  |  | 35d | 0d |  | Lun_Vie_Con_Feriado | ING | 03 | 03 |  |  |  |
| FDE1113 | Fabricación y despacho - Shelter Sala Eléctrica # 4 |  | 336d | 2025-12-05 | 2026-11-05 |  |  |  |  | 541d |  |  | Lun_Dom_Sin_Feriado | FUERA NUEVO ALCANCE | 1 | 10 | NU3 |  |  |
| GCE1112 | Gestión de compras - Shelter Sala Eléctrica # 4 |  | 92d | 2025-12-05 | 2026-04-24 |  |  |  |  | 511d |  |  | Lun_Vie_Con_Feriado | FUERA NUEVO ALCANCE | 1 | 10 |  |  |  |
| MG1050 | Inicio de actividades en áreas clasificadas (en planta existente) | milestone | 0d | 2025-12-05 | 2025-12-05 |  |  |  |  | 728d |  |  |  |  |  | 11 |  |  |  |
| PARO001 | Inicio de Paro | milestone | 0d | 2025-12-05 | 2025-12-05 |  |  |  |  | 877d |  |  | PARO |  | 07 | 11 |  |  |  |
| PARO002 | PARO | level of effort | 735d | 2025-12-05 A | 2025-12-05 A |  | 100% | 2025-12-05 | 2027-12-09 |  |  |  | PARO |  | 07 | 11 |  |  |  |
| PARO003 | Fin de Paro | milestone | 0d | 2025-12-05 | 2025-12-05 |  |  |  |  | 877d |  |  | PARO |  | 07 | 11 |  |  |  |
| PQPRLY20 | PFDs |  | 35d | 2025-12-05 | 2026-01-28 | CONPROC01 SS, CONPROC01 FF |  |  |  | 0d |  |  | Lun_Vie_Con_Feriado | ING | 02 | 02 |  |  |  |
| PQPRLY40 | Memoria de cálculo de proceso |  | 120d | 2025-12-05 | 2026-06-05 | PQPRLY20 SS, PQPRLY20 FF |  |  |  | 0d |  |  | Lun_Vie_Con_Feriado |  | 02 | 02 |  |  |  |
| RIE1060 | RI - Shelters Salas Eléctricas # 4 (Incl. Tableros BT) | milestone | 0d | 2025-12-05 | 2025-12-05 |  |  |  |  | 603d |  |  | Lun_Vie_Con_Feriado | FUERA NUEVO ALCANCE | 1 | 10 |  |  |  |
| SUS001 | REANUDACIÓN PROYECTO | milestone | 0d | 2025-12-05 A | 2025-12-05 A | MG1010 SS | 100% |  |  |  |  | start on or after 2025-12-05 | Lun_Vie_Con_Feriado |  | 01 | 00 |  | MOV |  |
| PQPILY95 | Emision temprana de docs Isometria y planos |  | 157d | 2025-12-22 | 2026-08-13 | CONPIP01 SS+11d, CONPIP01 FF |  |  |  | 50d |  |  | Lun_Vie_Con_Feriado |  | 05 | 04 |  |  | TEMPRANA |
| PQELLY00 | Iluminacion - General |  | 225d | 2026-01-08 | 2026-12-03 | CONELE01 |  |  |  | 194d | 154d |  | Lun_Vie_Con_Feriado |  | 08 | 05 | ELEC |  | GENERAL |
| PQELLY04 | Diagramas Unifilares - General |  | 87d | 2026-01-08 | 2026-05-18 | CONELE01 |  |  |  | 236d | 107d |  | Lun_Vie_Con_Feriado |  | 08 | 05 | ELEC |  | GENERAL |
| PQELLY12 | Listado de Cables + Memoria de Calculo |  | 104d | 2026-01-08 | 2026-06-11 | CONELE01 |  |  |  | 129d | 0d |  | Lun_Vie_Con_Feriado |  | 08 | 05 |  |  |  |
| PQINLY110 | Lista de Cables y Señales |  | 120d | 2026-01-08 | 2026-07-03 | CONINS01 |  |  |  | 28d | 14d |  | Lun_Vie_Con_Feriado |  | 09 | 06 |  |  |  |
| PQPRLY60 | Manuales de operación y otros |  | 100d | 2026-01-08 | 2026-06-05 | CONPROC01 |  |  |  | 48d | 31d |  | Lun_Vie_Con_Feriado |  | 02 | 02 |  |  |  |
| PQELLY11 | Puesta a tierra - Ingreso a Planta - Slug Cutcher |  | 45d | 2026-01-09 | 2026-03-16 | CONELE01 FS+1d |  |  |  | 103d | 0d |  | Lun_Vie_Con_Feriado |  | 08 | 05 | ELEC |  | ING. PLANTA - SLUG CUTCHER |
| PQELLY21 | Puesta a tierra - Compresion |  | 16d | 2026-01-09 | 2026-01-30 | CONELE01 FS+1d |  |  |  | 126d | 0d |  | Lun_Vie_Con_Feriado |  | 08 | 05 | ELEC |  | COMPRESION |
| PQELLY31 | Puesta a tierra - Unidades de proceso de Gas |  | 16d | 2026-01-09 | 2026-01-30 | CONELE01 FS+1d |  |  |  | 132d | 0d |  | Lun_Vie_Con_Feriado |  | 08 | 05 | ELEC |  | UNID PROCESO GAS |
| PQELLY41 | Puesta a tierra - Unidades de Condensado |  | 16d | 2026-01-09 | 2026-01-30 | CONELE01 FS+1d |  |  |  | 126d | 0d |  | Lun_Vie_Con_Feriado |  | 08 | 05 | ELEC |  | UNID. CONDENSADO |
| PQELLY51 | Puesta a tierra - Fluido termico Hot Oil |  | 16d | 2026-01-09 | 2026-01-30 | CONELE01 FS+1d |  |  |  | 121d | 0d |  | Lun_Vie_Con_Feriado |  | 08 | 05 | ELEC |  | HOT OIL |
| PQELLY61 | Puesta a tierra - Ampliacion de Generacion |  | 16d | 2026-01-09 | 2026-01-30 | CONELE01 FS+1d |  |  |  | 132d | 0d |  | Lun_Vie_Con_Feriado |  | 08 | 05 | ELEC |  | GENERACION |
| PQELLY71 | Puesta a tierra - Almacenamiento de Condensado |  | 45d | 2026-01-09 | 2026-03-16 | CONELE01 FS+1d |  |  |  | 103d | 0d |  | Lun_Vie_Con_Feriado |  | 08 | 05 | ELEC |  | ALMAC. CONDENSADO |
| PQELLY81 | Puesta a tierra - PTA |  | 16d | 2026-01-09 | 2026-01-30 | CONELE01 FS+1d |  |  |  | 132d | 0d |  | Lun_Vie_Con_Feriado |  | 08 | 05 | ELEC |  | TRAT. AGUA |
| PQELLY86 | Puesta a tierra - Flare + KOD |  | 16d | 2026-01-09 | 2026-01-30 | CONELE01 FS+1d |  |  |  | 132d | 0d |  | Lun_Vie_Con_Feriado |  | 08 | 05 | ELEC |  | FLARE - KOD |
| PQELLY91 | Puesta a tierra - Servicios |  | 45d | 2026-01-09 | 2026-03-16 | CONELE01 FS+1d |  |  |  | 103d | 0d |  | Lun_Vie_Con_Feriado |  | 08 | 05 | ELEC |  | SALIDA PLANTA |
| PQELLY95 | Emision temprana de docs Electricidad |  | 29d | 2026-01-09 | 2026-02-20 | CONELE01 FS+1d |  |  |  | 226d | 94d |  | Lun_Vie_Con_Feriado |  | 08 | 05 | ELEC |  | TEMPRANA |
| PQPILY120 | Analisis de Flexibilidad |  | 297d | 2026-01-09 | 2027-03-26 | CONPIP01 |  |  |  | 31d | 0d |  | Lun_Vie_Con_Feriado |  | 01 | 04 |  |  |  |
| PQPILY130 | Planos de cañerías enterradas |  | 66d | 2026-01-09 | 2026-04-17 | CONPIP01 |  |  |  | 47d | 42d |  | Lun_Vie_Con_Feriado |  | 05 | 04 |  |  |  |
| PQPILY91 | Isometria - Senda Norte |  | 157d | 2026-01-09 | 2026-08-28 | CONPIP01 |  |  |  | 85d |  |  | Lun_Vie_Con_Feriado |  | 05 | 04 |  |  |  |
| PQPILY92 | Isometria - Senda E-O |  | 76d | 2026-01-09 | 2026-05-04 | CONPIP01 |  |  |  | 85d |  |  | Lun_Vie_Con_Feriado |  | 05 | 04 |  |  |  |
| PQSDLY70 | HD, Requisiciones y AT´s |  | 108d | 2026-01-09 | 2026-06-18 | CONSDD01 FS+1d |  |  |  | 39d | 0d |  | Lun_Vie_Con_Feriado |  | 03 | 03 |  |  |  |
| RIM1090 | RI's/HD para tanques mayores (taller) |  | 71d | 2026-01-09 | 2026-04-24 | CONMEC01 |  |  |  | 36d | 0d |  | Lun_Vie_Con_Feriado |  | 04 | 07 |  |  |  |
| RIE1030 | RI - Protección catódica | milestone | 0d | 2026-01-09 | 2026-01-09 | CONELE01 FF+2d |  |  |  | 35d | 0d |  | Lun_Vie_Con_Feriado |  |  | 05 |  |  |  |
| GCE1130 | Gestión de compras - Protección catódica |  | 138d | 2026-01-12 | 2026-08-03 | RIE1030 |  |  |  | 35d | 0d |  | Lun_Vie_Con_Feriado |  |  | 05 |  |  |  |
| RIE1041 | RI - Power Manager System (PMS) | milestone | 0d | 2026-01-12 | 2026-01-12 | CONELE01 FF+3d |  |  |  | 30d | 0d |  | Lun_Vie_Con_Feriado |  | 08 | 05 | NU3 |  |  |
| GCE1070 | Gestión de compras - Power Manager System (PMS) |  | 107d | 2026-01-13 | 2026-06-19 | RIE1041 |  |  |  | 30d | 0d |  | Lun_Vie_Con_Feriado |  | 02 | 05 | NU3 |  |  |
| PQPRLY30 | Listados líneas, Tie In’s y equipos |  | 72d | 2026-01-13 | 2026-04-30 | CONPROC01, PQPRLY40 FF-25d |  |  |  | 0d |  |  | Lun_Vie_Con_Feriado |  | 02 | 02 |  |  |  |
| RIM1070 | RI / HD - Tanques Mayores Taller (TKBA-24410 A/B) | milestone | 0d | 2026-01-20 | 2026-01-20 | CONMEC01 FF+8d |  |  |  | 95d | 0d |  | Lun_Vie_Con_Feriado |  | 04 | 07 | M-RIRE |  |  |
| GCM1110 | Gestión de compras - Tanque Mayores Taller (TKBA-24410 A/B) |  | 70d | 2026-01-21 | 2026-05-06 | RIM1070 |  |  |  | 95d | 0d |  | Lun_Vie_Con_Feriado |  | 05 | 03 | M-RIRE |  |  |
| PQCILY00 | Estudios y planos de Suelos, Calles y Veredas |  | 168d | 2026-01-22 | 2026-09-25 | CONCIV01 FS+10d |  |  |  | 300d | 287d |  | Lun_Vie_Con_Feriado |  | 06 | 01 | CIVIL |  | GENERAL |
| PQCILY21 | Estructura Metalica - Unidades de proceso de Gas |  | 100d | 2026-01-22 | 2026-06-19 | CONCIV01 FS+10d |  |  |  | 116d | 99d |  | Lun_Vie_Con_Feriado |  | 06 | 01 | CIVIL | 1 | UNID PROCESO GAS |
| PQCILY82 | Underground |  | 194d | 2026-01-22 | 2026-11-03 | CONCIV01 FS+10d |  |  |  | 64d | 0d |  | Lun_Vie_Con_Feriado | PAT | 06 | 01 |  |  |  |
| PQSDLY30 | P&IDs en Rev A (SCI) |  | 45d | 2026-01-29 | 2026-04-08 | CONPROC01, PQPRLY20 |  |  |  | 17d | 0d |  | Lun_Vie_Con_Feriado |  | 03 | 03 |  |  |  |
| PQELLY01 | Tracing - General | milestone | 0d | 2026-01-29 | 2026-01-29 | CONELE01 FS+16d |  |  |  | 357d | 297d |  | Lun_Vie_Con_Feriado |  | 08 | 05 | ELEC |  | GENERAL |
| RII1050 | RI - Sistemas de Seguridad (PSS/ESD) | milestone | 0d | 2026-02-03 | 2026-02-03 | CONINS01 FF+19d |  |  |  | 61d | 0d |  | Lun_Vie_Con_Feriado |  | 09 | 06 | NU2 |  |  |
| RII1060 | RI - Plant Control System (PCS) | milestone | 0d | 2026-02-03 | 2026-02-03 | CONINS01 FF+19d |  |  |  | 15d | 0d |  | Lun_Vie_Con_Feriado |  | 09 | 06 | NU2 |  |  |
| GCI1060 | Gestión de compras - Sistemas de Seguridad (PSS/ESD) |  | 94d | 2026-02-04 | 2026-06-24 | RII1050 |  |  |  | 61d | 0d |  | Lun_Vie_Con_Feriado |  | 03 | 06 | NU2 |  |  |
| GCI1070 | Gestión de compras - Plant Control System (PCS) |  | 93d | 2026-02-04 | 2026-06-23 | RII1060 |  |  |  | 15d | 0d |  | Lun_Vie_Con_Feriado |  | 03 | 06 | NU2 |  |  |
| PQCILY71 | Estructura Metalica - Flare + KOD |  | 31d | 2026-02-05 | 2026-03-23 | CONCIV01 FS+20d |  |  |  | 231d | 182d |  | Lun_Vie_Con_Feriado |  | 06 | 01 | CIVIL |  | FLARE - KOD |
| PQCILY90 | Emision temprana de docs Civil |  | 58d | 2026-02-05 | 2026-05-05 | CONCIV01 FS+20d |  |  |  | 59d | 49d |  | Lun_Vie_Con_Feriado |  | 06 | 01 | CIVIL |  | TEMPRANA |
| PQCILY15 | Fundaciones Compresores - Compresion |  | 156d | 2026-02-06 | 2026-09-24 | CONCIV01 FS+21d |  |  |  | 20d | 0d |  | Lun_Vie_Con_Feriado |  | 06 | 01 | CIVIL |  | COMPRESION |
| PQSDLY10 | Docs Seguridad en el diseño (ELIMINAR PORQUE QUEDÓ VACÍO) |  | 69d | 2026-02-06 | 2026-05-21 | CONSDD01 FS+21d |  |  |  | 35d | 27d |  | Lun_Vie_Con_Feriado |  | 03 | 03 |  |  | TEMPRANA |
| PQSDLY60 | Layout/planos ubicación de sistema SCI y F&G |  | 75d | 2026-02-06 | 2026-06-01 | CONSDD01 FS+21d |  |  |  | 52d | 35d |  | Lun_Vie_Con_Feriado |  | 03 | 03 |  |  |  |
| PQPILY100 | Docs Piping - Key Plan y layout de implantación |  | 37d | 2026-02-10 | 2026-04-09 | PQPRLY30 SS+16d, PQPRLY30 FF-15d |  |  |  | 0d |  |  | Lun_Vie_Con_Feriado |  | 05 | 04 |  |  |  |
| PQPILY105 | Modelo 3D al 30% |  | 25d | 2026-02-10 | 2026-03-18 | PQPILY100 FF-15d, CONPIP01, PQPILY100 SS, PQPRLY00 SS |  |  |  | 0d |  |  | Lun_Vie_Con_Feriado | FECHAS CONTROL | 05 | 04 |  |  |  |

| ID | Activity | Type | Duration | Start | Finish | Predecessors | Total float | Free float | Calendar | Resources | 24607 - WBS Cliente | 24607 - WBS Cliente RA | CAMPO DE TRABAJO | LAYOUT | CAMPO DE TRABAJO 2 | CAMPO DE TRABAJO 3 |
| --- | --- | --- | --- | --- | --- | --- | --- | --- | --- | --- | --- | --- | --- | --- | --- | --- |
| TA1140 | Taller de revisión de P&IDs |  | 4d | 2026-02-10 | 2026-02-13 | PQPRLY00 SS+43d | 10d | 1d | Lun_Vie_Con_Feriado |  | 00 | 00 |  |  |  |  |
| PQCILY22 | Fundaciones Unidad Gas 1 - Unidades de proceso de Gas |  | 104d | 2026-02-12 | 2026-07-17 | CONCIV01 FS+25d | 40d | 0d | Lun_Vie_Con_Feriado |  | 06 | 01 | CIVIL | UNID PROCESO GAS |  |  |
| PQCILY70 | Fundaciones - Flare + KOD |  | 158d | 2026-02-12 | 2026-10-02 | CONCIV01 FS+25d | 104d | 1d | Lun_Vie_Con_Feriado |  | 06 | 01 | CIVIL | FLARE - KOD |  |  |
| PQPRLY10 | P&IDs en Rev 0 |  | 97d | 2026-02-19 | 2026-07-13 | PQPRLY00, TA1110 FF, TA1120 FF, TA1130 FF, TA1140 | 9d | 0d | Lun_Vie_Con_Feriado |  | 02 | 02 |  |  | FECHAS CONTROL |  |
| PQPRLY50 | Matriz Causa y Efecto |  | 116d | 2026-02-19 | 2026-08-07 | CONPROC01 FS+28d | 71d | 0d | Lun_Vie_Con_Feriado |  | 02 | 02 |  |  | ING |  |
| PQCILY87 | Fundaciones - Salas E&I |  | 103d | 2026-02-20 | 2026-07-22 | CONCIV01 FS+29d | 158d | 0d | Lun_Vie_Con_Feriado |  | 06 | 01 |  |  |  |  |
| PQCILY30 | Fundaciones Sendas - Unidades de Condensado |  | 36d | 2026-02-23 | 2026-04-16 | CONCIV01 FS+30d | 65d | 0d | Lun_Vie_Con_Feriado |  | 06 | 01 | CIVIL | UNID. CONDENSADO |  |  |
| PQCILY31 | Estructura Metalica - Unidades de Condensado |  | 37d | 2026-02-23 | 2026-04-17 | CONCIV01 FS+30d | 81d |  | Lun_Vie_Con_Feriado |  | 06 | 01 | CIVIL | UNID. CONDENSADO |  |  |
| PQSDLY50 | Plano clasif. Areas + MC de sistema contra incendio |  | 79d | 2026-02-23 | 2026-06-18 | CONSDD01 FS+21d, PQSDLY70 FF | 39d | 22d | Lun_Vie_Con_Feriado |  | 03 | 03 |  |  |  |  |
| TA1110 | Taller HAZOP |  | 14d | 2026-03-02 | 2026-03-19 | PQPRLY00 FS+7d | 85d | 76d | Lun_Vie_Con_Feriado |  | 00 | 00 |  |  | FECHAS CONTROL |  |
| TA1120 | Taller LOPA |  | 14d | 2026-03-02 | 2026-03-19 | PQPRLY00 FS+7d | 85d | 76d | Lun_Vie_Con_Feriado |  | 00 | 00 |  |  |  |  |
| PQINLY100 | Lista de Instrumentos |  | 166d | 2026-03-05 | 2026-11-03 | CONINS01 FS+38d | 14d | 0d | Lun_Vie_Con_Feriado |  | 09 | 06 |  |  |  |  |
| PQCILY20 | Fundaciones Sendas - Unidades de proceso de Gas |  | 60d | 2026-03-09 | 2026-06-05 | CONCIV01 FS+40d | 50d | 33d | Lun_Vie_Con_Feriado |  | 06 | 01 | CIVIL | UNID PROCESO GAS |  |  |
| TA1060 | Taller de revision de TIE-INS |  | 4d | 2026-03-11 | 2026-03-17 | PQPRLY30 SS, PQPRLY30 FF-29d | 40d | 15d | Lun_Vie_Con_Feriado |  | 00 | 00 |  |  |  |  |
| GCP1021 | Gestión de compra Talleres Prefabricado |  | 36d | 2026-03-19 | 2026-05-13 | RIP1000, RIP1005 | 2d |  | Lun_Vie_Con_Feriado |  | 06 | 04 |  |  |  |  |
| PQPILY00 | Isometria - Slug Cutcher |  | 185d | 2026-03-19 | 2026-12-16 | RIP1005, PQSDLY10 SS, PQSDLY10 FF, CONPIP01 | 8d |  | Lun_Vie_Con_Feriado |  | 05 | 04 | PIPING 1 | ING. PLANTA - SLUG CUTCHER |  |  |
| PQPILY10 | Isometria - Compresion |  | 166d | 2026-03-19 | 2026-11-17 | RIP1005, PQSDLY10 SS, PQSDLY10 FF, CONPIP01 | 8d |  | Lun_Vie_Con_Feriado |  | 05 | 04 | PIPING 1 | COMPRESION |  |  |
| PQPILY20 | Isometria - Fluido termico Hot Oil |  | 167d | 2026-03-19 | 2026-11-18 | RIP1005 | 8d |  | Lun_Vie_Con_Feriado |  | 05 | 04 | PIPING 1 | HOT OIL |  |  |
| PQPILY30 | Isometria - Generacion |  | 187d | 2026-03-19 | 2026-12-18 | RIP1005 | 8d |  | Lun_Vie_Con_Feriado |  | 05 | 04 | PIPING 1 | GENERACION |  |  |
| PQPILY40 | Isometria - Almacenamiento de Condensado |  | 94d | 2026-03-19 | 2026-08-05 | RIP1005, PQSDLY10 SS, PQSDLY10 FF | 8d |  | Lun_Vie_Con_Feriado |  | 05 | 04 | PIPING 1 | ALMAC. CONDENSADO |  |  |
| PQPILY50 | Isometria - Unidades de Condensado |  | 192d | 2026-03-19 | 2026-12-29 | RIP1005 | 8d |  | Lun_Vie_Con_Feriado |  | 05 | 04 | PIPING 1 | UNID. CONDENSADO |  |  |
| PQPILY60 | Isometria - Flare + KOD |  | 136d | 2026-03-19 | 2026-10-05 | RIP1005 | 8d |  | Lun_Vie_Con_Feriado |  | 05 | 04 | PIPING 1 | FLARE - KOD |  |  |
| PQPILY70 | Isometria - PTA |  | 94d | 2026-03-19 | 2026-08-05 | RIP1005, PQSDLY10 SS, PQSDLY10 FF | 8d |  | Lun_Vie_Con_Feriado |  | 05 | 04 | PIPING 1 | TRAT. AGUA |  |  |
| PQPILY80 | Isometria - Servicios |  | 167d | 2026-03-19 | 2026-11-18 | CONPIP01, RIP1005 | 8d |  | Lun_Vie_Con_Feriado |  | 05 | 04 |  | SALIDA PLANTA |  |  |
| PQPILY90 | Isometria - Unidades de proceso de Gas |  | 120d | 2026-03-19 | 2026-09-11 | PQSDLY10 SS, PQSDLY10 FF, RIP1005, CONPIP01 | 8d |  | Lun_Vie_Con_Feriado |  | 05 | 04 |  | UNID PROCESO GAS |  |  |
| PQCILY40 | Fundaciones - Fluido termico Hot Oil |  | 201d | 2026-03-23 | 2027-01-15 | CONCIV01 FS+50d | 55d | 0d | Lun_Vie_Con_Feriado |  | 06 | 01 | CIVIL | HOT OIL |  |  |
| PQELLY03 | Shelter y Salas - General |  | 41d | 2026-03-23 | 2026-05-22 | CONELE01 FS+50d | 283d | 129d | Lun_Vie_Con_Feriado |  | 08 | 05 | ELEC | GENERAL |  |  |
| PQCILY83 | Fundaciones Senda E-O |  | 26d | 2026-03-25 | 2026-05-04 | CONCIV01 FS+51d | 83d | 0d | Lun_Vie_Con_Feriado |  | 06 | 01 |  |  |  |  |
| PQCILY84 | Estructura Metalica - Senda E-O |  | 26d | 2026-03-25 | 2026-05-04 | PQCILY83 SS | 216d | 131d | Lun_Vie_Con_Feriado |  | 06 | 01 |  |  |  |  |
| RII1070 | RI - Sala instrumentos INS-007 | milestone | 0d | 2026-03-26 | 2026-03-26 | CONINS01 FF+53d | 100d | 0d | Lun_Vie_Con_Feriado |  | 09 | 06 |  |  |  |  |
| TA1090 | Taller de SIMOPS | milestone | 0d | 2026-03-26 | 2026-03-26 | PQPRLY00 FF+25d | 0d |  | Lun_Vie_Con_Feriado |  | 00 | 00 |  |  |  |  |
| GCI1080 | Gestión de compras - Sala instrumentos INS-007 |  | 79d | 2026-03-27 | 2026-07-22 | RII1070 | 100d | 0d | Lun_Vie_Con_Feriado |  | 03 | 06 |  |  |  |  |
| TA1100 | Entrega de informe preliminar de aspectos de constructibilidad |  | 8d | 2026-03-27 | 2026-04-09 | TA1090 | 0d |  | Lun_Vie_Con_Feriado |  | 00 | 00 |  |  |  |  |
| GCM1500 | Gestión de compras - Skids de combustible SKZZ-93110 SKZZ-67040 |  | 104d | 2026-04-08 | 2026-09-04 | RIM1020 SS+3d | 51d | 0d | Lun_Vie_Con_Feriado |  |  | 03 |  |  |  |  |
| TA1010 | Revision modelo 3D 30% | milestone | 0d | 2026-04-08 | 2026-04-08 | PQPILY105 FF+12d | 0d |  | Lun_Vie_Con_Feriado |  | 00 | 00 |  |  | FECHAS CONTROL |  |
| PQCILY61 | Estructura Metalica - PTA |  | 175d | 2026-04-09 | 2026-12-18 | CONCIV01 FS+60d | 130d | 26d | Lun_Vie_Con_Feriado |  | 06 | 01 | CIVIL | TRAT. AGUA |  |  |
| PQCILY63 | Fundaciones Senda - PTA |  | 23d | 2026-04-09 | 2026-05-12 | CONCIV01 FS+60d | 117d | 80d | Lun_Vie_Con_Feriado |  | 06 | 01 |  |  |  |  |
| PQPILY106 | Informe Modelo 3D al 30% |  | 17d | 2026-04-09 | 2026-05-04 | TA1010 | 0d |  | Lun_Vie_Con_Feriado |  | 05 | 04 |  |  | FECHAS CONTROL |  |
| PQSDLY40 | P&IDs en Rev 0 (SCI) |  | 31d | 2026-04-09 | 2026-05-22 | PQSDLY30, PQPRLY60 FF-40d, PQSDLY50 FF-40d, PQSDLY50 SS, PQPRLY60 SS, PQSDLY60 SS, PQSDLY60 FF-40d | 17d |  | Lun_Vie_Con_Feriado |  | 03 | 03 |  |  | ING |  |
| RIP1040 | RI - Aislacion | milestone | 0d | 2026-04-09 | 2026-04-09 | CONPIP01 FS+60d | 32d | 0d | Lun_Vie_Con_Feriado |  |  | 04 |  |  |  |  |
| GCP1040 | Gestión de compras - Aislacion |  | 67d | 2026-04-10 | 2026-07-16 | RIP1040 | 32d | 0d | Lun_Vie_Con_Feriado |  |  | 04 |  |  |  |  |
| HC001 | Inicio Movilización | milestone | 0d | 2026-04-10 | 2026-04-10 | CG00010 SF | 751d |  | Lun_Dom_Sin_Feriado |  |  | 02 |  |  |  |  |
| PQPILY125 | Cuadernillos de Tie Ins |  | 30d | 2026-04-10 | 2026-05-22 | CONPIP01 FS+60d, TA1060 | 25d |  | Lun_Vie_Con_Feriado |  | 05 | 04 |  |  |  |  |
| TA1130 | Taller de revision de Matriz Causo Efecto | milestone | 0d | 2026-04-13 | 2026-04-13 | PQPRLY50 SF+35d | 71d | 62d | Lun_Vie_Con_Feriado |  | 00 | 00 |  |  |  |  |
| FDP1012 | Fabricación y despacho - Material de Cañerías y Accesorios _ 1° MTO (entrega inicial cañ. enterrada) | milestone | 0d | 2026-04-20 | 2026-04-20 | GCP1000 FS+4d | 328d | 150d | Lun_Dom_Sin_Feriado |  |  | 02 |  |  |  |  |
| RIM1100 | RI's/HD para filtros |  | 49d | 2026-04-27 | 2026-07-06 | RIM1090 | 36d | 0d | Lun_Vie_Con_Feriado |  | 04 | 07 |  |  |  |  |
| PQCILY85 | Fundaciones - Senda Norte |  | 22d | 2026-04-28 | 2026-05-29 | CONCIV01 FS+73d | 101d | 0d | Lun_Vie_Con_Feriado |  | 06 | 01 |  |  |  |  |
| PQCILY86 | Estructura Metalica - Senda Norte |  | 22d | 2026-04-28 | 2026-05-29 | PQCILY85 SS | 174d | 119d | Lun_Vie_Con_Feriado |  | 06 | 01 |  |  |  |  |
| HC002 | Entrega del plan de recepción y preservación de equipos | milestone | 0d | 2026-05-05 | 2026-05-05 | SUS001 SS+97d | 506d |  | Lun_Vie_Con_Feriado |  |  | 02 |  |  |  |  |
| PQPILY110 | Modelo 3D al 60% |  | 57d | 2026-05-05 | 2026-07-24 | PQPILY106, PQSDLY40 SS, PQPRLY10 FF | 0d |  | Lun_Vie_Con_Feriado |  | 05 | 04 |  |  | FECHAS CONTROL |  |
| RII1100 | RI - Cajas de conexionado | milestone | 0d | 2026-05-05 | 2026-05-05 | CONINS01 FS+78d | 81.7d | 0d | Lun_Vie_Con_Feriado |  |  | 06 |  |  |  |  |
| GCI1120 | Gestión de compras - Cajas de conexionado |  | 83.2d | 2026-05-06 | 2026-09-03 | RII1100 | 81.7d | 0d | Lun_Vie_Con_Feriado |  |  | 06 |  |  |  |  |
| RIS1010 | RI - Elementos de Sistema contra incendio | milestone | 0d | 2026-05-07 | 2026-05-07 | PQSDLY30 FS+20d | 18d | 0d | Lun_Vie_Con_Feriado |  |  | 03 |  |  |  |  |
| GCS1010 | Gestión de compras - Elementos Sistema contra incendio |  | 79d | 2026-05-08 | 2026-08-31 | RIS1010 | 18d | 0d | Lun_Vie_Con_Feriado |  |  | 07 |  |  |  |  |
| PQCILY10 | Fundaciones - Slug Cutcher |  | 99d | 2026-05-08 | 2026-09-28 | CONCIV01 FS+80d | 89d | 0d | Lun_Vie_Con_Feriado |  | 06 | 01 | CIVIL | ING. PLANTA - SLUG CUTCHER |  |  |
| PQCILY50 | Fundaciones - Almacenamiento de Condensado |  | 117d | 2026-05-08 | 2026-10-23 | CONCIV01 FS+80d | 56d | 0d | Lun_Vie_Con_Feriado |  | 06 | 01 | CIVIL | ALMAC. CONDENSADO |  |  |
| PQCILY60 | Fundaciones Tanques - PTA |  | 93d | 2026-05-08 | 2026-09-18 | CONCIV01 FS+80d | 39d | 29d | Lun_Vie_Con_Feriado |  | 06 | 01 | CIVIL | TRAT. AGUA |  |  |
| PQCILY81 | Estructura Metalica - Servicios |  | 123d | 2026-05-14 | 2026-11-06 | CONCIV01 FS+84d | 56d | 0d | Lun_Vie_Con_Feriado |  | 06 | 01 | CIVIL | SALIDA PLANTA |  |  |
| FDP1002 | Fabricación y despacho - Material de Cañerías y Accesorios _ 1° MTO (entrega inicial) | milestone | 0d | 2026-05-14 | 2026-05-14 | GCP1000 FS+21d | 151d | 141d | Lun_Dom_Sin_Feriado |  |  | 02 |  |  |  |  |
| RIE1110 | RI - Equipamiento de maniobra MT intemperie | milestone | 0d | 2026-05-14 | 2026-05-14 | CONELE01 FS+85d | 54d | 0d | Lun_Vie_Con_Feriado |  |  | 05 |  |  |  |  |
| GCE1150 | Gestión de compras - Equipamiento de maniobra MT intemperie |  | 79d | 2026-05-15 | 2026-09-07 | RIE1110 | 54d | 0d | Lun_Vie_Con_Feriado |  |  | 05 |  |  |  |  |
| RII1020 | RI - Cables de Instrumentos Rev.1 |  | 93d | 2026-05-15 | 2026-08-31 | RII1010 | 120d | 0d | FAB.AESA - Lun a Sab Con Feriados |  |  | 06 |  |  |  |  |
| HC004 | Inicio de prefabricado de cañerías en talleres externos | milestone | 0d | 2026-05-16 | 2026-05-16 | FDP1040 SS | 715d |  | Lun_Dom_Sin_Feriado |  |  | 02 |  |  |  |  |
| RIM1040 | RI - Tanques de transferencia de glicol |  | 18d | 2026-05-22 | 2026-06-17 | CONMEC01 FS+89d | 116d | 0d | Lun_Vie_Con_Feriado |  |  | 07 |  |  |  |  |
| PQCILY32 | Fundaciones Equipos - Unidades de Condensado |  | 126d | 2026-05-26 | 2026-11-20 | PQCILY30 FS+25d | 126d | 0d | Lun_Vie_Con_Feriado |  | 06 | 01 | CIVIL | UNID. CONDENSADO |  |  |
| MG1020 | Posesion patrimonial del area | milestone | 0d | 2026-05-26 | 2026-05-26 | CG00010 FF | 491d |  | Lun_Vie_Con_Feriado |  | 01 | 02 |  |  |  | MOV |
| CDW1140 | Preservacion de equipos | level of effort | 310d | 2026-05-27 | 2027-06-05 | MG1020 | 0d |  |  | Distibucion Venta [1000000 h] | 08 | 01 |  |  |  |  |
| PQCILY88 | Estructura metalica - Salas E&I |  | 36d | 2026-05-27 | 2026-07-16 | PQCILY87 SS+63d | 210d | 156d | Lun_Vie_Con_Feriado |  | 06 | 01 |  |  |  |  |
| PQCILY62 | Fundaciones - PTA |  | 162d | 2026-06-01 | 2027-01-25 | CONCIV01 FS+95d | 115d | 0d | Lun_Vie_Con_Feriado |  | 06 | 01 | CIVIL | TRAT. AGUA |  |  |
| PQCILY80 | Fundaciones - Servicios |  | 140d | 2026-06-01 | 2026-12-18 | CONCIV01 FS+95d | 98d | 0d | Lun_Vie_Con_Feriado |  | 06 | 01 | CIVIL | SALIDA PLANTA |  |  |

| ID | Activity | Type | Duration | Start | Finish | Predecessors | Total float | Free float | Calendar | 24607 - WBS Cliente RA | CAMPO DE TRABAJO | LAYOUT | 24607 - WBS Cliente | CAMPO DE TRABAJO 2 | INI ESTA MC | FIN EST MC | CAMPO DE TRABAJO 3 |
| --- | --- | --- | --- | --- | --- | --- | --- | --- | --- | --- | --- | --- | --- | --- | --- | --- | --- |
| RIE1120 | RI - Ampliación antena existente | milestone | 0d | 2026-06-04 | 2026-06-04 | CONELE01 FS+99d | 62d | 0d | Lun_Vie_Con_Feriado | 05 |  |  |  |  |  |  |  |
| GCE1160 | Gestión de compras - Ampliación antena existente |  | 80d | 2026-06-05 | 2026-09-28 | RIE1120 | 62d | 0d | Lun_Vie_Con_Feriado | 05 |  |  |  |  |  |  |  |
| PQCILY11 | Estructura Metalica - Slug Cutcher |  | 68d | 2026-06-08 | 2026-09-11 | CONCIV01 FS+100d | 123d | 46d | Lun_Vie_Con_Feriado | 01 | CIVIL | ING. PLANTA - SLUG CUTCHER | 06 |  |  |  |  |
| RIM1080 | RI - Tanques de espuma SCI | milestone | 0d | 2026-06-08 | 2026-06-08 | CONMEC01 FS+100d | 148d | 0d | Lun_Vie_Con_Feriado | 07 |  |  |  |  |  |  |  |
| GCM1240 | Gestión de compras - Tanques de espuma SCI |  | 90d | 2026-06-09 | 2026-10-15 | RIM1080 | 148d | 0d | Lun_Vie_Con_Feriado | 03 |  |  |  |  |  |  |  |
| HITALER590 | Inicio entregas Hormigon Premoldeados en SENDA E-O | milestone | 0d | 2026-06-13 | 2026-06-13 | PQCILY83, CC017150 SS-5d | 687d |  | Lun_Dom_Sin_Feriado | 01 |  |  | 01 |  |  |  |  |
| RIE1070 | RI - Cables electricidad (MT/BT) Rev.1 |  | 94d | 2026-06-13 | 2026-09-30 | RIE1020 | 132d | 0d | FAB.AESA - Lun a Sab Con Feriados | 05 |  |  |  |  |  |  |  |
| PQCILY23 | Fundaciones Equipos - Unidades de proceso de Gas |  | 130d | 2026-06-15 | 2026-12-18 | PQCILY22 SS+80d | 40d | 0d | Lun_Vie_Con_Feriado | 01 | CIVIL | UNID PROCESO GAS | 06 | ING |  |  |  |
| GCM1260 | Gestión de compras - Tanques de transferencia de glicol |  | 76d | 2026-06-18 | 2026-10-05 | RIM1040 | 116d | 0d | Lun_Vie_Con_Feriado | 03 |  |  |  |  |  |  |  |
| CDU511 | Trabajos civiles para drenajes/RCI |  | 201d | 2026-06-19 | 2027-02-22 | PQPILY130, PQCILY82 SS+40d, PQCILY82 FF-108d, EDC10050, CG00020 | 6d | 0d |  | 02 |  |  | 01 | UG | 2025-11-15 | 2026-01-24 |  |
| CDU514 | Trabajos civiles para puesta a tierra |  | 180d | 2026-06-19 | 2027-01-28 | FDE1030 SS+20d, FDE1030 FF-20d, CG00020, PQELLY11, PQELLY21, PQELLY31, PQELLY41, PQELLY51, PQELLY61, PQELLY71, PQELLY81, PQELLY86, PQELLY91 | 50d | 0d |  | 02 |  |  | 02 | PAT |  |  |  |
| HC003 | Inicio de tareas civiles para underground | milestone | 0d | 2026-06-19 | 2026-06-19 | CDU511 SS, CDU514 SS | 572d |  |  | 02 |  |  |  |  |  |  |  |
| HC005 | Iinicio de actividades para fundaciones civiles | milestone | 0d | 2026-06-19 | 2026-06-19 | CC018020 SS | 572d |  |  | 02 |  |  |  |  |  |  |  |
| PQPILY140 | Planos de cañerias |  | 200d | 2026-06-19 | 2027-04-12 | CONPIP01 FS+108d | 274d | 3d | Lun_Vie_Con_Feriado | 04 |  |  |  |  |  |  |  |
| FDI1080 | Fabricación y despacho - Plant Control System (PCS) |  | 366d | 2026-06-24 | 2027-06-24 | GCI1070 | 22d | 0d | Lun_Dom_Sin_Feriado | 06 | NU2 |  | 03 |  |  |  |  |
| FDI1070 | Fabricación y despacho - Sistemas de Seguridad (PSS/ESD) |  | 298d | 2026-06-25 | 2027-04-18 | GCI1060 | 89d | 67d | Lun_Dom_Sin_Feriado | 06 | NU2 |  | 03 |  |  |  |  |
| FDE1114 | Fabricación y despacho - Power Manager System (PMS) |  | 338d | 2026-06-30 | 2027-06-02 | GCE1070 FS+6d, TA1040 FF | 43d | 25d | Lun_Dom_Sin_Feriado | 05 | NU3 |  | 02 |  |  |  |  |
| PQCILY45 | Fundaciones - Ampliacion de Generacion |  | 71d | 2026-07-06 | 2026-10-15 | CONCIV01 FS+120d | 124d | 21d | Lun_Vie_Con_Feriado | 01 | CIVIL | GENERACION | 06 |  |  |  |  |
| HC022 | Prefabricado de estructura metálica: Ejecución de 300Tn | milestone | 0d | 2026-07-13 | 2026-07-13 | FDS1000 SS+90d | 552d |  |  | 02 |  |  |  |  |  |  |  |
| HITALER610 | Para impactar diseño de soportes en calles C, D y 3, 2. | milestone | 0d | 2026-07-13 | 2026-07-13 | HITALER110 SS-60d | 564d |  | FAB.AESA - Lun a Sab Con Feriados | 01 |  | UNID. CONDENSADO | 01 |  |  |  |  |
| MG1030 | Definicion de Sistemas | milestone | 0d | 2026-07-13 | 2026-07-13 | PQPRLY10 FF | 198d | 0d | Lun_Vie_Con_Feriado | 02 |  |  | 01 |  |  |  |  |
| MG1040 | Apertura de Sistemas en cronograma | milestone | 0d | 2026-07-13 | 2026-07-13 | MG1030 FF | 198d |  | Lun_Vie_Con_Feriado | 00 |  |  | 01 |  |  |  |  |
| HITALER520 | Inicio entregas Hormigon Premoldeados en CONDENSADO | milestone | 0d | 2026-07-16 | 2026-07-16 | CC013200 SS-5d | 654d |  | Lun_Dom_Sin_Feriado | 01 |  | UNID. CONDENSADO | 01 | PREHO |  |  |  |
| FDP1050 | Fabricación y despacho - Aislacion |  | 313d | 2026-07-17 | 2027-05-25 | GCP1040 | 47d | 0d | Lun_Dom_Sin_Feriado | 04 |  |  |  |  |  |  |  |
| HITALER510 | Inicio entregas Hormigon Premoldeados en PROC. DE GAS | milestone | 0d | 2026-07-18 | 2026-07-18 | CC012070 SS-5d | 652d |  | Lun_Dom_Sin_Feriado | 01 |  | UNID PROCESO GAS | 01 | PREHO |  |  |  |
| HITALER600 | Para impactar diseño de soportes en calles C, E y 3, 4. | milestone | 0d | 2026-07-18 | 2026-07-18 | HITALER105 SS-60d | 559d |  | FAB.AESA - Lun a Sab Con Feriados | 01 |  | UNID PROCESO GAS | 01 |  |  |  |  |
| FDI1030 | Fabricación y despacho - Sala instrumentos INS-007 |  | 198d | 2026-07-23 | 2027-02-05 | GCI1080 | 146d | 69d | Lun_Dom_Sin_Feriado | 06 |  |  | 03 |  |  |  |  |
| RIP1015 | RI - Cañerías y accesorios al 60% definicion MAQ | milestone | 0d | 2026-07-30 | 2026-07-30 | PQPILY110 FF+4d | 0d |  | Lun_Vie_Con_Feriado | 04 | PIPING |  | 05 |  |  |  |  |
| GCP1010 | Gestión de compra Material de Cañerías y Accesorios al 60% definicion MAQ |  | 37d | 2026-07-31 | 2026-09-22 | RIP1015 | 0d |  | Lun_Vie_Con_Feriado | 04 | PIPING |  | 06 |  |  |  |  |
| GCP1031 | Gestión de compra - Válvulas manuales Rev.1 |  | 84d | 2026-07-31 | 2026-11-05 | RIP1050 | 286d | 0d | FAB.AESA - Lun a Sab Con Feriados | 04 |  |  |  |  |  |  |  |
| RIP1050 | RI - Vlavulas manuales Rev.1 | milestone | 0d | 2026-07-31 | 2026-07-31 | RIP1030 FS+105d | 286d | 0d | FAB.AESA - Lun a Sab Con Feriados | 04 |  |  |  |  |  |  |  |
| FDE1040 | Fabricación y despacho - Protección catódica |  | 206d | 2026-08-04 | 2027-02-25 | GCE1130 | 50d | 36d | Lun_Dom_Sin_Feriado | 05 |  |  |  |  |  |  |  |
| RIE1100 | RI - Tracing | milestone | 0d | 2026-08-11 | 2026-08-11 | CONELE01 FF+146d | 67d | 0d | Lun_Vie_Con_Feriado | 05 |  |  |  |  |  |  |  |
| TA1020 | Revision modelo 3D 60% | milestone | 0d | 2026-08-12 | 2026-08-12 | PQPILY110 FF+13d | 26d | 0d | Lun_Vie_Con_Feriado | 00 |  |  | 00 | FECHAS CONTROL |  |  |  |
| PQPILY111 | Informe Modelo 3D al 60% |  | 2d | 2026-08-13 | 2026-08-14 | TA1020 | 26d | 0d | Lun_Vie_Con_Feriado | 04 |  |  | 05 | FECHAS CONTROL |  |  |  |
| HITALER540 | Inicio entregas Hormigon Premoldeados en GENERACION | milestone | 0d | 2026-08-15 | 2026-08-15 | CC015100 SS-5d | 624d |  | Lun_Dom_Sin_Feriado | 01 |  | GENERACION | 01 | PREHO |  |  |  |
| PQPILY115 | Modelo 3D al 90% |  | 85d | 2026-08-18 | 2026-12-17 | PQPILY111 | 26d | 0d | Lun_Vie_Con_Feriado | 04 |  |  | 05 | FECHAS CONTROL |  |  |  |
| GCI1110 | Gestión de compras - Instrumentos / transmisores / medidores (segunda tanda) |  | 21.6d | 2026-08-26 | 2026-09-24 | RII1040 FF, GCI1050 | 47.2d | 0d | Lun_Vie_Con_Feriado | 06 |  |  |  |  |  |  |  |
| HITALER650 | Para impactar diseño de soportes en soportes línea a Flare (desde calle E hasta KOD) | milestone | 0d | 2026-08-27 | 2026-08-27 | HITALER155 SS-60d | 525d |  | FAB.AESA - Lun a Sab Con Feriados | 01 |  | FLARE - KOD | 01 |  |  |  |  |
| CC017160 | Fundaciones de Puentes (2 y 3) Senda E-O |  | 63d | 2026-08-28 | 2026-11-09 | PQCILY83 SS, PQCILY83 FF, CC017150 | 31d | 0d |  | 01 |  |  | 14 |  |  |  |  |
| FDS1010 | Fabricación y despacho - Elementos Sistema contra incendio |  | 267d | 2026-09-01 | 2027-05-25 | GCS1010 | 24d | 0d | Lun_Dom_Sin_Feriado | 08 |  |  |  |  |  |  |  |
| HITALER530 | Inicio entregas Hormigon Premoldeados en HOT OIL | milestone | 0d | 2026-09-01 | 2026-09-01 | CC014200 SS-5d | 607d |  | Lun_Dom_Sin_Feriado | 01 |  | HOT OIL | 01 | PREHO |  |  |  |
| HITALER560 | Inicio entregas Hormigon Premoldeados en TRAT. AGUA | milestone | 0d | 2026-09-01 | 2026-09-01 | CC014200 SS-5d | 52d | 0d | Lun_Dom_Sin_Feriado | 01 |  | TRAT. AGUA | 01 | PREHO |  |  |  |
| HITALER585 | Inicio entregas Hormigon Premoldeados en SENDA NORTE | milestone | 0d | 2026-09-01 | 2026-09-01 | PQCILY85, HITALER560 SS | 52d | 4d | Lun_Dom_Sin_Feriado | 01 |  |  | 01 |  |  |  |  |
| PQCILY51 | Estructura Metalica - Almacenamiento de Condensado |  | 36d | 2026-09-02 | 2026-10-22 | PQCILY50 SS+80d | 93d | 14d | Lun_Vie_Con_Feriado | 01 |  |  | 06 |  |  |  |  |
| CDU518 | Ejecución de canalizaciones enterradas |  | 74d | 2026-09-03 | 2026-11-27 | CG00020, PQCILY82 SS+151d, PQCILY82 FF-50d | 173d | 107d |  | 02 |  |  | 03 | CDU1000 |  |  |  |
| FDI1110 | Fabricación y despacho - Cajas de conexionado |  | 140.1d | 2026-09-03 | 2027-01-21 | GCI1120 | 124.7d | 71.7d | Lun_Dom_Sin_Feriado | 06 |  |  |  |  |  |  |  |
| CC020010 | Fundaciones de Sendas de cañerias Norte |  | 54d | 2026-09-05 | 2026-11-06 | PQCILY85, HITALER585 SS, FDC1020 SS, FDC1020 FF | 41d | 0d |  | 02 |  |  | 13 |  |  |  |  |
| FDM1520 | Fabricación y despacho - Skids de combustible SKZZ-93110 SKZZ-67040 |  | 224d | 2026-09-05 | 2027-04-16 | GCM1500 | 74d | 0d | Lun_Dom_Sin_Feriado | 03 |  |  |  |  |  |  |  |
| FDE1150 | Fabricación y despacho - Equipamiento de maniobra MT intemperie |  | 234d | 2026-09-08 | 2027-04-29 | GCE1150 | 77d | 59d | Lun_Dom_Sin_Feriado | 05 |  |  |  |  |  |  |  |
| HITALER110 | Inicio entregas en el sector entre calles C, D y 3, 2. | milestone | 0d | 2026-09-11 | 2026-09-11 | CS023200 SS-5d | 597d | 0.05d | Lun_Dom_Sin_Feriado | 01 |  | UNID. CONDENSADO | 07 | PREEEMM |  |  | 2 |
| HITALER105 | Inicio entregas en el sector entre calles E, D y 3, 4. | milestone | 0d | 2026-09-16 | 2026-09-16 | CS022070 SS-5d | 592d | 0.05d | Lun_Dom_Sin_Feriado | 01 |  | UNID PROCESO GAS | 07 | PREEEMM |  |  | 1 |
| HC008 | Inicio de tareas de montaje de estructuras metalicas en sendas | milestone | 0d | 2026-09-17 | 2026-09-17 | CS023200 SS | 495d |  |  | 02 |  |  |  |  |  |  |  |
| CDU512 | Tendido de cañeria para drenajes y RCI (inc prefa piping Drenaje) |  | 120d | 2026-09-18 | 2027-02-19 | PQPILY130, CDU511 SS+30d, CDU511 FF-3d, FDP1000, FDP1012 | 140d | 0d |  | 02 |  |  | 01 | UG | 2025-12-10 | 2026-01-30 |  |
| HC007 | Inicio de montaje de cañerias enterradas | milestone | 0d | 2026-09-18 | 2026-09-18 | CDU512 SS | 494d |  |  | 02 |  |  |  |  |  |  |  |
| PQELLY20 | Canalizaciones - Compresion |  | 32d | 2026-09-18 | 2026-11-03 | PQELLY21 FS+155d, CONELE01 | 126d | 79d | Lun_Vie_Con_Feriado | 05 | ELEC | COMPRESION | 08 |  |  |  |  |
| HC011 | Inicio de montaje de tanques in situ (Subcontrato) | milestone | 0d | 2026-09-21 | 2026-09-21 | CM018020 SS | 492d |  |  | 02 |  |  |  |  |  |  |  |
| HITALER660 | Para impactar diseño de soportes en cruce entre calles E y F. | milestone | 0d | 2026-09-21 | 2026-09-21 | HITALER145 SS-60d | 504d |  | FAB.AESA - Lun a Sab Con Feriados | 01 |  | TRAT. AGUA | 01 |  |  |  |  |
| RII1080 | RI - Materiales para montaje eléctricos (canalizaciones inst) | milestone | 0d | 2026-09-21 | 2026-09-21 | CONINS01 FS+174d | 32d | 0d | Lun_Vie_Con_Feriado | 06 |  |  |  |  |  |  |  |
| GCI1090 | Gestión de compras - Canalizaciones de instrumentos |  | 55d | 2026-09-22 | 2026-12-10 | RII1080 | 32d | 0d | Lun_Vie_Con_Feriado | 06 |  |  |  |  |  |  |  |
| FDP1010 | Fabricación y despacho - Material de Cañerías y Accesorios al 60% definicion MAQ |  | 105d | 2026-09-23 | 2027-01-05 | GCP1010 | 0d |  | Lun_Dom_Sin_Feriado | 04 | PIPING |  | 06 |  |  |  |  |
| GCE1120 | Gestión de compras - Tracing |  | 51d | 2026-09-23 | 2026-12-04 | RIE1100 FS+29d | 67d | 0d | Lun_Vie_Con_Feriado | 05 |  |  |  |  |  |  |  |
| PQELLY30 | Canalizaciones - Unidades de proceso de Gas |  | 29d | 2026-09-23 | 2026-11-03 | PQELLY31 FS+158d, CONELE01 | 165d | 79d | Lun_Vie_Con_Feriado | 05 | ELEC | UNID PROCESO GAS | 08 |  |  |  |  |
| FDI1100 | Fabricación y despacho - Instrumentos / transmisores / medidores (segunda tanda) |  | 193.2d | 2026-09-24 | 2027-04-05 | GCI1110 | 69.2d | 25.2d | Lun_Dom_Sin_Feriado | 06 |  |  |  |  |  |  |  |
| PQCILY16 | Fundaciones Equipos - Compresion |  | 61d | 2026-09-25 | 2026-12-23 | PQCILY15 | 20d | 3d | Lun_Vie_Con_Feriado | 01 | CIVIL | COMPRESION | 06 |  |  |  |  |
| HITALER205 | Inicio de entregas spools para parral / sleepers - Generación y Sala Eléctrica | milestone | 0d | 2026-09-28 | 2026-09-28 | CP015010 SS-5d | 486d |  |  | 01 | PIPING | GENERACION | 08 | PREPI |  |  |  |
| HITALER620 | Para impactar diseño de soportes enmanifold de entrada y calle C | milestone | 0d | 2026-09-28 | 2026-09-28 | HITALER100 SS-60d | 498d |  | FAB.AESA - Lun a Sab Con Feriados | 01 |  | ING. PLANTA - SLUG CUTCHER | 01 |  |  |  |  |
| FDE1060 | Fabricación y despacho - Ampliación antena existente |  | 298d | 2026-09-29 | 2027-07-23 | GCE1160 | 96d | 0d | Lun_Dom_Sin_Feriado | 05 |  |  |  |  |  |  |  |
| HITALER570 | Inicio entregas Hormigon Premoldeados en FLARE + KOD | milestone | 0d | 2026-10-02 | 2026-10-02 | CC019030 SS-5d | 576d |  | Lun_Dom_Sin_Feriado | 01 |  | FLARE - KOD | 01 | PREHO |  |  |  |
| HC009 | Inicio de tareas de montaje de cañerias above ground en campo | milestone | 0d | 2026-10-03 | 2026-10-03 | CP015010 SS | 481d |  |  | 02 |  |  |  |  |  |  |  |

| ID | Activity | Type | Duration | Start | Finish | Predecessors | Total float | Free float | Constraint | Calendar | 24607 - WBS Cliente RA | 24607 - WBS Cliente | CAMPO DE TRABAJO | LAYOUT | CAMPO DE TRABAJO 2 | CAMPO DE TRABAJO 3 |
| --- | --- | --- | --- | --- | --- | --- | --- | --- | --- | --- | --- | --- | --- | --- | --- | --- |
| FDM1340 | Fabricación y despacho - Tanques de transferencia de glicol |  | 147d | 2026-10-06 | 2027-03-01 | GCM1260 | 176d | 142d |  | Lun_Dom_Sin_Feriado | 03 |  |  |  |  |  |
| CC020030 | Fundaciones Soportes especiales Senda Norte |  | 56d | 2026-10-07 | 2026-12-10 | CC020010 SS+27d, CC020010 FF | 41d | 0d |  |  | 01 | 13 |  |  |  |  |
| PQELLY10 | Canalizaciones - Ingreso a Planta - Slug Cutcher |  | 18d | 2026-10-08 | 2026-11-03 | PQELLY11 FS+140d, CONELE01 | 153d | 74d |  | Lun_Vie_Con_Feriado | 05 | 08 | ELEC | ING. PLANTA - SLUG CUTCHER |  |  |
| PQELLY70 | Canalizaciones - Almacenamiento de Condensado |  | 17d | 2026-10-09 | 2026-11-03 | PQELLY71 FS+141d, CONELE01 | 161d | 114d |  | Lun_Vie_Con_Feriado | 05 | 08 | ELEC | ALMAC. CONDENSADO |  |  |
| PQELLY40 | Canalizaciones - Unidades de Condensado |  | 16d | 2026-10-13 | 2026-11-03 | PQELLY41 FS+171d, CONELE01 | 126d | 74d |  | Lun_Vie_Con_Feriado | 05 | 08 | ELEC | UNID. CONDENSADO |  |  |
| PQELLY50 | Canalizaciones - Fluido termico Hot Oil |  | 16d | 2026-10-13 | 2026-11-03 | PQELLY51 FS+171d, CONELE01 | 121d | 108d |  | Lun_Vie_Con_Feriado | 05 | 08 | ELEC | HOT OIL |  |  |
| PQELLY80 | Canalizaciones - PTA |  | 16d | 2026-10-13 | 2026-11-03 | PQELLY81 FS+171d, CONELE01 | 136d | 117d |  | Lun_Vie_Con_Feriado | 05 | 08 | ELEC | TRAT. AGUA |  |  |
| PQELLY85 | Canalizaciones - Flare + KOD |  | 16d | 2026-10-13 | 2026-11-03 | PQELLY86 FS+171d, CONELE01 | 194d | 74d |  | Lun_Vie_Con_Feriado | 05 | 08 | ELEC | FLARE - KOD |  |  |
| PQELLY90 | Canalizaciones - Servicios |  | 16d | 2026-10-13 | 2026-11-03 | PQELLY91 FS+142d, CONELE01 | 157d | 127d |  | Lun_Vie_Con_Feriado | 05 | 08 | ELEC | SALIDA PLANTA | ING |  |
| PQELLY60 | Canalizaciones - Ampliacion de Generacion |  | 17d | 2026-10-14 | 2026-11-05 | PQELLY61 FS+172d, CONELE01 | 151d | 78d |  | Lun_Vie_Con_Feriado | 05 | 08 | ELEC | GENERACION |  |  |
| FDM1330 | Fabricación y despacho - Tanques de espuma SCI |  | 85d | 2026-10-16 | 2027-01-08 | GCM1240 | 221d | 0d |  | Lun_Dom_Sin_Feriado | 03 |  |  |  |  |  |
| HITALER500 | Inicio entregas Hormigon Premoldeados en COMPRESION | milestone | 0d | 2026-10-16 | 2026-10-16 | CC011190 SS-5d | 562d |  |  | Lun_Dom_Sin_Feriado | 01 | 01 |  | COMPRESION | PREHO |  |
| RII1090 | RI - Materiales para montaje mecánica y Sist. CCTV | milestone | 0d | 2026-10-19 | 2026-10-19 | CONINS01 FS+193d | 67d | 0d |  | Lun_Vie_Con_Feriado | 06 |  |  |  |  |  |
| GCI1100 | Gestión de compras - Materiales para montaje mecánico y Sist. CCTV |  | 60d | 2026-10-20 | 2027-01-19 | RII1090 | 67d | 0d |  | Lun_Vie_Con_Feriado | 06 |  |  |  |  |  |
| PQELLY02 | Diagramas de Conexionado - General |  | 67d | 2026-10-21 | 2027-01-29 | CONELE01, PQELLY12 FS+90d, PQELLY04 | 129d | 78.5d |  | Lun_Vie_Con_Feriado | 05 | 08 | ELEC | GENERAL |  |  |
| RIP1025 | RI - Cañerías y accesorios al 90% definicion MAQ | milestone | 0d | 2026-10-21 | 2026-10-21 | PQPILY115 SF+46d | 35d | 9d |  | Lun_Vie_Con_Feriado | 04 | 05 | PIPING |  |  |  |
| HC010 | Inicio de montaje de unidades de proceso de condensado | milestone | 0d | 2026-10-23 | 2026-10-23 | CM013010 SS | 464d |  |  |  | 02 |  |  |  |  |  |
| CC016310 | Fundaciones Senda de Condensado |  | 63d | 2026-10-24 | 2027-01-19 | PQCILY50, CC018320 | 63d | 0d |  |  | 02 | 08 |  |  |  |  |
| CC016320 | Fundaciones Puentes (4 y 5) Senda de Condensado |  | 16d | 2026-10-24 | 2026-11-11 | PQCILY50, CC016310 SS | 92d | 0d |  |  | 01 | 08 |  |  |  |  |
| HITALER155 | Inicio entregas en soportes línea a Flare (desde calle E hasta KOD) | milestone | 0d | 2026-10-26 | 2026-10-26 | CS029040 SS-5d | 552d | 0.05d |  | Lun_Dom_Sin_Feriado | 01 | 07 |  | FLARE - KOD | PREEEMM |  |
| CC012110 | Batea Unidad de Gas 1 |  | 35d | 2026-10-27 | 2026-12-05 | CC012070 | 144d | 81d |  |  | 01 | 04 |  |  |  |  |
| HITALER185 | Inicio de entregas spools para sobre parral / sleepers - Un. de Condensado | milestone | 0d | 2026-10-29 | 2026-10-29 | CP013010 SS-5d | 459d |  |  |  | 01 | 08 | PIPING | UNID. CONDENSADO | PREPI |  |
| GCP1011 | Gestión de compra Material de Cañerías y Accesorios al 90% definicion MAQ |  | 30d | 2026-11-04 | 2026-12-17 | RIP1025, PQPILY115 SS, PQPILY115 FF | 26d | 0d |  | Lun_Vie_Con_Feriado | 04 | 06 | PIPING |  |  |  |
| PQINLY00 | Diagramas de Conexionado - General |  | 64d | 2026-11-04 | 2027-02-09 | CONINS01, PQINLY110 FS+70d, PQINLY100 | 14d | 0d |  | Lun_Vie_Con_Feriado | 06 | 09 | INS | GENERAL |  |  |
| FDP1021 | Fabricación y despacho - Válvulas manuales Rev.1 |  | 177d | 2026-11-06 | 2027-05-31 | GCP1031 | 286d | 0d |  | FAB.AESA - Lun a Sab Con Feriados | 04 |  |  |  |  |  |
| CC011070 | Estructuras de Hormigón Premoldeado - (Cámaras-Soportes-Sleepers-otras fundaciones) - Slug Cutcher |  | 36d | 2026-11-07 | 2026-12-18 | FDC1020, EDC10150 | 192d | 176d |  |  | 02 | 02 |  |  |  |  |
| CC020020 | Fundaciones Puente 3 Senda Norte |  | 9d | 2026-11-07 | 2026-11-17 | PQCILY85, CC020010 | 61d | 0d |  |  | 01 | 13 |  |  |  |  |
| CC017170 | Fundaciones Soportes especiales E-O |  | 86d | 2026-11-10 | 2027-03-03 | CC017160 | 31d | 0d |  |  | 01 | 14 |  |  |  |  |
| CS027160 | Montaje estructura cruces de calles Senda E-O |  | 18d | 2026-11-10 | 2026-11-30 | CC017160, FDS1000, PQCILY84 | 99d | 41d |  |  | 14 | 14 |  |  |  |  |
| CS026310 | Montaje estructura cruces de calles Alm. Condensado |  | 18d | 2026-11-12 | 2026-12-02 | CC016320, FDS1000, PQCILY51 | 92d | 66d |  |  | 08 | 08 |  |  |  |  |
| HC012 | Fundaciones y premoldeados: Ejecucion de 1000m3 de hormigon | milestone | 0d | 2026-11-14 | 2026-11-14 | CC011230 SS | 445d |  |  |  | 02 |  |  |  |  |  |
| CC014080 | Fundaciones Transformadores y Generador de emergencia |  | 23d | 2026-11-16 | 2026-12-11 | CC014070, PQCILY87 | 234d | 185d |  |  | 01 | 12 |  |  |  |  |
| CS027110 | Montaje estructura cruces de calles Senda Norte |  | 18d | 2026-11-18 | 2026-12-08 | CC020020, FDS1000, PQCILY86 | 334d | 102d |  |  | 13 | 13 |  |  |  |  |
| HITALER145 | Inicio entregas en cruce entre calles E y F. | milestone | 0d | 2026-11-20 | 2026-11-20 | CS028260 SS-5d | 527d | 0.05d |  | Lun_Dom_Sin_Feriado | 01 | 07 |  | TRAT. AGUA | PREEEMM |  |
| CC013110 | Fundaciones Soportes especiales Unid. de Condensado |  | 18d | 2026-11-21 | 2026-12-11 | PQCILY32, CC013200 | 150d | 76d |  |  | 01 | 05 |  |  |  |  |
| HITALER175 | Inicio de entregas spools para parral / sleepers - Un. Proceso de Gas (& Compresión) | milestone | 0d | 2026-11-24 | 2026-11-24 | CP012010 SS-5d | 437d |  |  |  | 01 | 08 | PIPING | UNID PROCESO GAS | PREPI | 1 |
| CS029050 | Montaje estructura cruces de calles Flare |  | 18d | 2026-11-26 | 2026-12-16 | CC019030, FDS1000 | 173d | 125d |  |  | 10 | 10 |  |  |  |  |
| HITALER100 | Inicio entregas en manifold de entrada y calle C | milestone | 0d | 2026-11-26 | 2026-11-26 | CS021050 SS-5d | 521d | 1.05d |  | Lun_Dom_Sin_Feriado | 01 | 07 |  | ING. PLANTA - SLUG CUTCHER | PREEEMM |  |
| CE018070 | Montaje de Canalizaciones Bandejas / Conduits / EM - Salas E&I |  | 72d | 2026-11-27 | 2027-03-04 | CE019040 SS+20d, PQELLY03 | 203d | 0d |  |  | 12 | 12 |  |  |  |  |
| HC014 | Inicio de tareas de canalizaciones E&I | milestone | 0d | 2026-11-27 | 2026-11-27 | CE018070 SS | 434d |  |  |  | 02 |  |  |  |  |  |
| A10310 | Calculo del Prog. 75% de Ingenieria (de acuerdo con archivo Plan de Ingeniería) |  | 4.44d | 2026-11-30 | 2026-12-04 |  | 439.56d |  | start on or after 2026-11-30 | FAB.AESA - Lun a Sab Con Feriados | 10 | 1 |  |  |  |  |
| PRPA100 | Contratacion de servicios a terceros |  | 148d | 2026-12-02 | 2027-04-28 | FDP1040 SS+200d | 247d | 219d |  | PARO | 00 | 1 |  |  |  |  |
| FDE1020 | Fabricación y despacho - Tracing |  | 115d | 2026-12-05 | 2027-03-29 | GCE1120 | 104d | 18d |  | Lun_Dom_Sin_Feriado | 05 |  |  |  |  |  |
| HITALER270 | Inicio entregas en sector Senda Norte | milestone | 0d | 2026-12-05 | 2026-12-05 | CS027100 SS-5d | 512d |  |  | Lun_Dom_Sin_Feriado | 01 | 07 |  |  |  |  |
| CS027100 | Montaje estructura de Sendas de cañerias Norte / soportes |  | 27d | 2026-12-11 | 2027-01-25 | CC020010, CC020020, FDS1000, CC020030, PQCILY86 | 41d | 0d |  |  | 13 | 13 |  |  |  |  |
| FDI1050 | Fabricación y despacho - Canalizaciones de instrumentos |  | 43d | 2026-12-11 | 2027-01-22 | GCI1090 | 51d | 0d |  | Lun_Dom_Sin_Feriado | 06 |  |  |  |  |  |
| RIE1130 | RI - Prensacables | milestone | 0d | 2026-12-11 | 2026-12-11 | CONELE01 FF+230d | 18d | 0d |  | Lun_Vie_Con_Feriado | 05 |  |  |  |  |  |
| GCE1170 | Gestión de compras - Prensacables |  | 45d | 2026-12-14 | 2027-02-22 | RIE1130 | 18d | 0d |  | Lun_Vie_Con_Feriado | 05 |  |  |  |  |  |
| CC013210 | Fundación y pavimento puesto de control SCI 4 FAJ-102004 |  | 19d | 2026-12-15 | 2027-01-19 | CC013080 | 129d |  |  |  | 01 | 05 |  |  |  |  |
| FDP1011 | Fabricación y despacho - Material de Cañerías y Accesorios al 90% definicion MAQ |  | 76d | 2026-12-18 | 2027-03-03 | GCP1011 | 42d | 0.05d |  | Lun_Dom_Sin_Feriado | 04 | 06 | PIPING |  |  |  |
| PQINLY60 | Canalizaciones - Ampliacion de Generacion |  | 16d | 2026-12-18 | 2027-01-15 | PQINLY00 SS, CONINS01, PQINLY00 FF-18d | 115d | 34d |  | Lun_Vie_Con_Feriado | 06 | 09 | INS | GENERACION |  |  |
| PQPILY116 | Informe Modelo 3D al 90% |  | 78d | 2026-12-18 | 2027-04-15 | PQPILY115, PQPILY140 FF | 271d |  |  | Lun_Vie_Con_Feriado | 04 | 05 |  |  | FECHAS CONTROL |  |
| HITALER245 | Inicio de entregas spools para parral / sleepers - Flare + KOD | milestone | 0d | 2026-12-19 | 2026-12-19 | CP019010 SS-5d | 415d |  |  |  | 01 | 08 | PIPING | FLARE - KOD | PREPI |  |
| PQINLY85 | Canalizaciones - Flare + KOD |  | 16d | 2026-12-28 | 2027-01-21 | PQINLY00 SS, CONINS01, PQINLY00 FF-14d | 48d | 13d |  | Lun_Vie_Con_Feriado | 06 | 09 | INS | FLARE - KOD |  |  |
| HITALER630 | Para impactar diseño de soportes en calle 2 cercanía calle C hasta ERM-Salida de Planta | milestone | 0d | 2026-12-28 | 2026-12-28 | HITALER135 SS-60d | 420d |  |  | FAB.AESA - Lun a Sab Con Feriados | 01 | 01 |  | SALIDA PLANTA |  |  |
| HITALER680 | Para impactar diseño de soportes en sala electrica # 3 | milestone | 0d | 2026-12-31 | 2026-12-31 | HITALER115 SS-60d | 417d |  |  | FAB.AESA - Lun a Sab Con Feriados | 01 | 01 |  | HOT OIL |  |  |
| CC013220 | Batea TDB Area 260 |  | 33d | 2027-01-04 | 2027-02-10 | CC013050 | 110d | 36d |  |  | 01 | 05 |  |  |  |  |
| PQINLY50 | Canalizaciones - Fluido termico Hot Oil |  | 16d | 2027-01-07 | 2027-01-29 | PQINLY00 SS, CONINS01 SS, PQINLY00 FF-8d | 61d | 48d |  | Lun_Vie_Con_Feriado | 06 | 09 | INS | HOT OIL |  |  |
| CC014110 | Fundaciones Soportes especiales Hot Oil |  | 18d | 2027-01-09 | 2027-01-30 | CC014100 SS, CC014100 FF | 137d | 46d |  |  | 01 | 06 |  |  |  |  |
| PQINLY70 | Canalizaciones - PTA |  | 16d | 2027-01-12 | 2027-02-03 | PQINLY00 SS, CONINS01, PQINLY00 FF-5d | 77d | 58d |  | Lun_Vie_Con_Feriado | 06 | 09 | INS | TRAT. AGUA |  |  |
| PQINLY40 | Canalizaciones - Unidades de Condensado |  | 16d | 2027-01-13 | 2027-02-04 | PQINLY00 SS, CONINS01, PQINLY00 FF-4d | 64d | 48d |  | Lun_Vie_Con_Feriado | 06 | 09 | INS | UNID. CONDENSADO |  |  |
| HITALER195 | Inicio de entregas spools para sobre parral / sleepers - Fluido Térmico | milestone | 0d | 2027-01-15 | 2027-01-15 | CP014010 SS-5d | 404d |  |  |  | 01 | 08 | PIPING | HOT OIL | PREPI |  |
| FDI1090 | Fabricación y despacho - Materiales para montaje mecánico y Sist. CCTV |  | 100d | 2027-01-20 | 2027-04-29 | GCI1100 | 98d | 21d |  | Lun_Dom_Sin_Feriado | 06 |  |  |  |  |  |
| PQINLY90 | Canalizaciones - Servicios |  | 16d | 2027-01-21 | 2027-02-11 | PQINLY00 SS, CONINS01, PQINLY00 FF+2d | 103d | 61d |  | Lun_Vie_Con_Feriado | 06 | 09 | INS | SALIDA PLANTA |  |  |
| CC014090 | Estructuras de Hormigón Premoldeado - (Cámaras-Soportes-Sleepers) - Salas E&I |  | 36d | 2027-01-23 | 2027-03-05 | FDC1020 SS, FDC1020 FF, CDU511 FF+10d, EDC10150 | 66d | 0d |  |  | 02 | 12 |  |  |  |  |
| TA1030 | Revision modelo 3D 90% | milestone | 0d | 2027-01-25 | 2027-01-25 | PQPILY115 SF+11d, PQPILY115 FF+23d | 230d | 166d |  | Lun_Vie_Con_Feriado | 00 | 00 |  |  | FECHAS CONTROL |  |
| CI020010 | Montaje de Canalizaciones Bandejas / Conduits / JB / Tableros - Senda Norte |  | 90d | 2027-01-26 | 2027-05-10 | CS027100, FDI1050 | 41d | 0d |  |  | 13 | 13 |  |  |  |  |
| HITALER225 | Inicio de entregas spools para parral / sleepers - Servicios | milestone | 0d | 2027-01-26 | 2027-01-26 | CP017010 SS-5d | 395d |  |  |  | 01 | 08 | PIPING | SALIDA PLANTA | PREPI |  |
| HITALER160 | Inicio de entregas spools para parral / sleepers - Slug Catcher | milestone | 0d | 2027-01-27 | 2027-01-27 | CP011010 SS-5d | 394d |  |  |  | 01 | 08 | PIPING | ING. PLANTA - SLUG CUTCHER | PREPI |  |
| PQINLY20 | Canalizaciones - Compresion |  | 16d | 2027-01-28 | 2027-02-22 | PQINLY00 SS, CONINS01, PQINLY00 FF+7d | 30d | 0d |  | Lun_Vie_Con_Feriado | 06 | 09 | INS | COMPRESION |  |  |

| ID | Activity | Type | Duration | Start | Finish | Predecessors | Total float | Free float | Calendar | Resources | CAMPO DE TRABAJO | LAYOUT | 24607 - WBS Cliente | 24607 - WBS Cliente RA | CAMPO DE TRABAJO 2 | CAMPO DE TRABAJO 3 |
| --- | --- | --- | --- | --- | --- | --- | --- | --- | --- | --- | --- | --- | --- | --- | --- | --- |
| PQINLY30 | Canalizaciones - Unidades de proceso de Gas |  | 16d | 2027-01-28 | 2027-02-22 | PQINLY00 SS, CONINS01, PQINLY00 FF+7d | 82d | 8d | Lun_Vie_Con_Feriado |  | INS | UNID PROCESO GAS | 09 | 06 |  |  |
| HITALER670 | Para impactar diseño de soportes en soportes línea a Flare (desde KOD a Flare) | milestone | 0d | 2027-01-30 | 2027-01-30 | HITALER150 SS-60d | 391d |  | FAB.AESA - Lun a Sab Con Feriados |  |  | FLARE - KOD | 01 | 01 |  |  |
| HITALER550 | Inicio entregas Hormigon Premoldeados en ALMAC. DE CONDENSADO | milestone | 0d | 2027-02-03 | 2027-02-03 | CC016300 SS-5d | 452d |  | Lun_Dom_Sin_Feriado |  |  | ALMAC. CONDENSADO | 01 | 01 | PREHO |  |
| PQINLY01 | Shelter - General |  | 37d | 2027-02-10 | 2027-04-06 | PQINLY00, CONINS01 | 14d | 0d | Lun_Vie_Con_Feriado |  | INS | GENERAL | 09 | 06 |  |  |
| PQINLY10 | Canalizaciones - Ingreso a Planta - Slug Cutcher |  | 7d | 2027-02-10 | 2027-02-22 | PQINLY00, CONINS01 | 82d | 0d | Lun_Vie_Con_Feriado |  | INS | ING. PLANTA - SLUG CUTCHER | 09 | 06 |  |  |
| PQINLY80 | Canalizaciones - Almacenamiento de Condensado |  | 16d | 2027-02-10 | 2027-03-05 | PQINLY00, CONINS01 | 81d | 34d | Lun_Vie_Con_Feriado |  | INS | ALMAC. CONDENSADO | 09 | 06 | ING |  |
| TA1040 | Taller de revision SCADA |  | 5d | 2027-02-10 | 2027-02-18 | PQINLY00, TA1050 FF-190d | 104d | 73d | Lun_Vie_Con_Feriado |  |  |  | 00 | 00 |  |  |
| CC011240 | Pavimento para Compresores |  | 79d | 2027-02-16 | 2027-05-18 | CC011230 | 18d | 12d |  |  |  |  | 03 | 01 |  |  |
| HITALER580 | Inicio entregas Hormigon Premoldeados en SERVICIOS | milestone | 0d | 2027-02-17 | 2027-02-17 | CC017200 SS-5d, PQCILY80 | 438d |  | Lun_Dom_Sin_Feriado |  |  | SALIDA PLANTA | 01 | 01 | PREHO |  |
| CE018100 | Tendido y conexionado - Salas E&I |  | 112d | 2027-02-22 | 2027-07-01 | CE019050 SS+20d, CE018070 SS, FDE1170 SS, FDE1170 FF | 141d | 0d |  |  |  |  | 12 | 12 |  |  |
| HC018 | Inicio de tareas de tendido de cables | milestone | 0d | 2027-02-22 | 2027-02-22 | CE018100 SS | 372d |  |  |  |  |  |  | 02 |  |  |
| HITALER640 | Para impactar diseño de soportes en puente de medicion/salida de planta (EMR) | milestone | 0d | 2027-02-22 | 2027-02-22 | HITALER125 SS-60d | 372d |  | FAB.AESA - Lun a Sab Con Feriados |  |  | TRAT. AGUA | 01 | 01 |  |  |
| CC019050 | Estructuras de Hormigón Premoldeado - (Cámaras-Soportes-Sleepers) - Flare + KOD |  | 36d | 2027-02-23 | 2027-04-05 | CDU511, FDC1020 SS+160d, FDC1020 FF-20d, EDC10150 | 98d | 0d |  |  |  |  | 10 | 02 |  |  |
| FDE1160 | Fabricación y despacho - Prensacables |  | 66d | 2027-02-23 | 2027-04-29 | GCE1170 | 24d | 0d | Lun_Dom_Sin_Feriado |  |  |  |  | 05 |  |  |
| HITALER700 | Para impactar diseño de soportes en soportes y plataformas | milestone | 0d | 2027-02-25 | 2027-02-25 | HITALER120 SS-60d | 369d |  | FAB.AESA - Lun a Sab Con Feriados |  |  | ALMAC. CONDENSADO | 01 | 01 |  |  |
| CE018080 | Montaje de Canalizaciones Bandejas / Conduits / EM - Senda Norte |  | 90d | 2027-02-26 | 2027-06-10 | FDE1010 | 69d | 0d |  |  |  |  | 13 | 13 |  |  |
| FDI1120 | Fabricación y despacho - Válvulas de Control (segunda tanda) |  | 64d | 2027-02-26 | 2027-04-30 | GCI1040, FDI1060 | 44d | 0d | Lun_Dom_Sin_Feriado |  |  |  |  | 06 |  |  |
| HITALER135 | Inicio entregas en sector entre calle 2 cercanía calle C hasta ERM-Servicios | milestone | 0d | 2027-02-26 | 2027-02-26 | CS027150 SS-5d | 429d | 0.05d | Lun_Dom_Sin_Feriado |  |  | SALIDA PLANTA | 07 | 01 | PREEEMM |  |
| HITALER215 | Inicio de entregas spools para sobre parral / sleepers - Almac. de Condensado | milestone | 0d | 2027-02-26 | 2027-02-26 | CP016010 SS-5d | 368d |  |  |  | PIPING | ALMAC. CONDENSADO | 08 | 01 | PREPI |  |
| HITALER260 | Inicio entregas en sector Senda E-O | milestone | 0d | 2027-02-26 | 2027-02-26 | CS027150 SS-5d | 429d |  | Lun_Dom_Sin_Feriado |  |  |  | 07 | 01 |  |  |
| HITALER115 | Inicio entregas en sala electrica # 3 | milestone | 0d | 2027-03-01 | 2027-03-01 | CS024070 SS-5d | 426d | 0.05d | Lun_Dom_Sin_Feriado |  |  | HOT OIL | 07 | 01 | PREEEMM |  |
| TA1080 | Taller de pruebas periodicas del SIS |  | 5d | 2027-03-02 | 2027-03-08 | PQINLY01 SS+12d | 92d | 78d | Lun_Vie_Con_Feriado |  |  |  | 00 | 00 |  |  |
| HC016 | Recepción en sitio de la totalidad de los materiales de piping | milestone | 0d | 2027-03-04 | 2027-03-04 | FDP1011 | 363d |  | FAB.AESA - Lun a Sab Con Feriados |  |  |  |  | 02 |  |  |
| HITALER210 | Inicio de entregas spools para conexiones a equipos / skids / módulos - Generación y Sala Eléctrica | milestone | 0d | 2027-03-11 | 2027-03-11 | CP015020 SS-5d | 357d |  |  |  | PIPING | GENERACION | 08 | 01 | PREPI |  |
| HITALER235 | Inicio de entregas spools para sobre parral / sleepers - PTA | milestone | 0d | 2027-03-12 | 2027-03-12 | CP018010 SS-5d | 356d |  |  |  | PIPING | TRAT. AGUA | 08 | 01 | PREPI |  |
| HITALER690 | Para impactar diseño de soportes en Tinglado y Módulos 91040/50 y 92020/30 (SKZZ-91040/50 y 92020/30) | milestone | 0d | 2027-03-13 | 2027-03-13 | HITALER130 SS-60d | 355d |  | FAB.AESA - Lun a Sab Con Feriados |  |  | SALIDA PLANTA | 01 | 01 |  |  |
| VT1350 | Terminaciones | level of effort | 261d | 2027-03-16 | 2028-01-13 | CDC1090 SS, CDC1110 FF, CDC1090 FF, CDC1110 SS | 15d | 0d | FAB.AESA - Lun a Sab Con Feriados | Distibucion Venta [1000000 h]; HH Civil APRO [3880 h] |  |  | 06 | 09 |  |  |
| CS022080 | Montaje estructura de soportes - plataformas Unid. Gas |  | 18d | 2027-03-25 | 2027-04-14 | CC012100 SS, CC012100 FF, FDS1000, CS022070, CC012110 | 63d | 35d |  |  |  |  | 04 | 04 |  |  |
| CS023210 | Montaje estructura de soportes - plataformas Unid. de Condensado |  | 18d | 2027-03-25 | 2027-04-14 | FDS1000, CC012100 SS, CC012100 FF, CS023200, CC013030, CC013110, CC013220 | 74d |  |  |  |  |  | 05 | 05 |  |  |
| CS025010 | Montaje estructura de soportes - plataformas Compresión |  | 18d | 2027-03-25 | 2027-04-14 | CC012050, CC012100 SS, CC012100 FF, FDS1000 | 11d | 5d |  |  |  |  | 03 | 03 |  |  |
| CS029010 | Montaje estructura de soportes - plataformas Hot Oil |  | 18d | 2027-03-25 | 2027-04-14 | FDS1000, CC012100 SS, CC012100 FF, CC014010, CC014110 | 91d | 53d |  |  |  |  | 06 | 06 |  |  |
| CS030010 | Montaje estructura de soportes - plataformas Generación |  | 18d | 2027-03-25 | 2027-04-14 | FDS1000, CC012100 SS, CC012100 FF | 66d | 0d |  |  |  |  | 07 | 07 |  |  |
| HITALER710 | Para impactar diseño de soportes en soportes y plataformas | milestone | 0d | 2027-03-30 | 2027-03-30 | HITALER140 SS-60d | 341d |  | FAB.AESA - Lun a Sab Con Feriados |  |  | SALIDA PLANTA | 01 | 01 |  |  |
| HITALER150 | Inicio entregas en soportes línea a Flare (desde KOD a Flare) | milestone | 0d | 2027-03-31 | 2027-03-31 | CS029030 SS-5d | 396d | 0.05d | Lun_Dom_Sin_Feriado |  |  | FLARE - KOD | 07 | 01 | PREEEMM |  |
| HITALER230 | Inicio de entregas spools para conexiones a equipos / skids / módulos - Servicios | milestone | 0d | 2027-03-31 | 2027-03-31 | CP017020 SS-5d | 340d |  |  |  | PIPING | SALIDA PLANTA | 08 | 01 | PREPI |  |
| CI030020 | Montaje de Canalizaciones Bandejas / Conduits / JB / Tableros - Senda E-O |  | 90d | 2027-04-08 | 2027-07-21 | CS027150, FDI1050 | 31d | 0d |  |  |  |  | 14 | 14 |  |  |
| HITALER170 | Inicio de entregas spools para conexiones a equipos / skids / módulos - Compresión | milestone | 0d | 2027-04-15 | 2027-04-15 | CP011120 SS-5d | 327d |  |  |  | PIPING | COMPRESION | 08 | 01 | PREPI |  |
| CI013005 | Montaje de Canalizaciones Bandejas / Conduits / JB / Tableros - Sala INS-007 |  | 90d | 2027-04-16 | 2027-07-29 | PQINLY01, CS023090, FDI1050 | 90d | 10d |  |  |  |  | 12 | 12 |  |  |
| CP017050 | Montaje de Cañerías _ sobre senda Norte / sleepers |  | 90d | 2027-04-21 | 2027-08-03 | FDP1040, FDP1000, FDP1030, CS027100, CS027110 | 232d | 0d |  |  |  |  | 12 | 13 |  |  |
| HITALER125 | Inicio entregas en puente de medicion/Servicios (EMR) | milestone | 0d | 2027-04-23 | 2027-04-23 | CS028210 SS-5d | 373d | 0.05d | Lun_Dom_Sin_Feriado |  |  | TRAT. AGUA | 07 | 01 | PREEEMM |  |
| CP015035 | Montaje de Tie-ins - Generación |  | 27d | 2027-04-24 | 2027-05-25 | CP015020 FF, CP015020 SS | 111d | 7d |  |  |  |  | 07 | 07 |  |  |
| HITALER120 | Inicio entregas para soportes y plataformas | milestone | 0d | 2027-04-26 | 2027-04-26 | CS026300 SS-5d | 370d | 0.05d | Lun_Dom_Sin_Feriado |  |  | ALMAC. CONDENSADO | 07 | 01 | PREEEMM |  |
| TA1070 | Taller de racionalizacion de alarmas |  | 5d | 2027-04-28 | 2027-05-04 | PQINLY100 SS+42d, PQINLY00 SS, PQINLY00 FF+57d | 52d | 38d | Lun_Vie_Con_Feriado |  |  |  | 00 | 00 |  |  |
| CI030010 | Montaje de instrumentos - Senda E-O |  | 90d | 2027-05-01 | 2027-08-13 | CP017070 FF, FDI1100, FDI1120 | 223d |  |  |  |  |  | 14 | 14 |  |  |
| FDI1130 | Fabricación y despacho - Válvulas de Control (tercera tanda) |  | 65.9d | 2027-05-01 | 2027-07-05 | FDI1120, GCI1040 | 299.1d |  | Lun_Dom_Sin_Feriado |  |  |  |  | 06 |  |  |
| CM015022 | Generador electrico a gas - KBE-600 K |  | 14d | 2027-05-03 | 2027-05-18 | CM015021 | 66d | 0d |  | HH Equipos Mecánicos [905 h] |  |  | 07 | 06 |  |  |
| CP015040 | Pruebas hidrostaticas (Precom/PH) |  | 36d | 2027-05-03 | 2027-06-12 | CP015010 SS+40d, CP015020 SS+40d, CP015010 FF+15d, CP015020 FF+15d, CP015035 FF+9d | 104d | 0d |  |  | PRECOM |  | 07 | 07 |  |  |
| CI020030 | Tendido y Conexionado - Senda Norte |  | 145d | 2027-05-11 | 2027-10-26 | CI020010, PQINLY00 SS, PQINLY00 FF, FDI1110, FDI1140 SS, FDI1140 FF | 41d |  |  |  |  |  | 13 | 13 |  |  |
| HITALER130 | Inicio entregas para Tinglado y Módulos 91040/50 y 92020/30 (SKZZ-91040/50 y 92020/30) | milestone | 0d | 2027-05-12 | 2027-05-12 | CS027020 SS-5d | 354d | 0.05d | Lun_Dom_Sin_Feriado |  |  | SALIDA PLANTA | 07 | 01 | PREEEMM |  |
| HITALER180 | Inicio de entregas spools para conexiones a equipos / skids / módulos - Un. Proceso de Gas | milestone | 0d | 2027-05-20 | 2027-05-20 | CP012020 SS-5d | 297d |  |  |  | PIPING | UNID PROCESO GAS | 08 | 01 | PREPI | 1 |
| HITALER200 | Inicio de entregas spools para conexiones a equipos / skids / módulos - Fluido Térmico | milestone | 0d | 2027-05-20 | 2027-05-20 | CP014020 SS-5d | 297d |  |  |  | PIPING | HOT OIL | 08 | 01 | PREPI |  |
| HITALER250 | Inicio de entregas spools para conexiones a equipos / skids / módulos - Flare + KOD | milestone | 0d | 2027-05-20 | 2027-05-20 | CP019020 SS-5d | 297d |  |  |  | PIPING | FLARE - KOD | 08 | 01 | PREPI |  |
| HITALER140 | Inicio entregas en soportes y plataformas | milestone | 0d | 2027-05-29 | 2027-05-29 | CS027200 SS-5d | 337d | 0.05d | Lun_Dom_Sin_Feriado |  |  | SALIDA PLANTA | 07 | 01 | PREEEMM |  |
| HC015 | Recepción en sitio de de la totalidad de válvulas manuales | milestone | 0d | 2027-05-31 | 2027-05-31 | FDP1030, FDP1021 | 239.05d |  | Lun_Vie_Con_Feriado |  |  |  |  | 02 |  |  |
| CI030030 | Tendido y Conexionado - Senda E-O |  | 133d | 2027-06-05 | 2027-11-06 | CI030020 SS+50d, PQINLY00 SS, PQINLY00 FF, FDI1110, CI030020 FF, FDI1140 SS, FDI1140 FF | 31d |  |  |  |  |  | 14 | 14 |  |  |
| HITALER220 | Inicio de entregas spools para conexiones a equipos / skids / módulos - Almac. de Condensado | milestone | 0d | 2027-06-05 | 2027-06-05 | CP016020 SS-5d | 283d |  |  |  | PIPING | ALMAC. CONDENSADO | 08 | 01 | PREPI |  |
| CE018090 | Tendido y conexionado - Senda Norte |  | 90d | 2027-06-11 | 2027-09-23 | CE018080, FDE1170 SS, FDE1170 FF | 69d | 47d |  |  |  |  | 13 | 13 |  |  |
| HITALER190 | Inicio de entregas spools para conexiones a equipos / skids / módulos - Un. de Condensado | milestone | 0d | 2027-06-14 | 2027-06-14 | CP013020 SS-5d | 276d |  |  |  | PIPING | UNID. CONDENSADO | 08 | 01 | PREPI |  |
| CP017070 | Pruebas hidrostaticas (Precom/PH) |  | 32d | 2027-06-18 | 2027-07-24 | CP017010 SS, CP017010 FF | 240d | 17d |  |  |  |  | 13 | 14 |  |  |
| TA1050 | I-FAT (PCS-PSS-ESD-SCADA) |  | 20d | 2027-06-25 | 2027-07-14 | FDI1070, FDI1080, PCM1130 | 22d | 0d | Lun_Dom_Sin_Feriado |  | NU2 |  | 00 | 00 |  |  |
| CP017060 | Pruebas hidrostaticas (Precom/PH) |  | 32d | 2027-06-28 | 2027-08-03 | CP017050 SS, CP017050 FF | 232d |  |  |  |  |  | 12 | 13 |  |  |
| TA1041 | Taller de revision PCS-PSS-ESD | milestone | 0d | 2027-06-28 | 2027-06-28 | PQINLY01 SS+95d, TA1080 | 14d | 0d | Lun_Vie_Con_Feriado |  |  |  | 00 | 00 |  |  |
| TA1124 | Integracion Shelters y PMS (FAT) | milestone | 0d | 2027-06-28 | 2027-06-28 | FDE1114 FF, FDE1104 FF, FDE1103 FF, SP1120 FF, TA1041 SF, TA1070 FF | 14d | 0d | Lun_Vie_Con_Feriado |  | NU3 |  | 00 | 00 |  | 3 |
| CI013006 | Tendido y Conexionado - Sala INS-007 |  | 90d | 2027-06-30 | 2027-10-12 | CI013005 FS-36d, PQINLY00 SS, PQINLY00 FF, CDE1180 FF, FDI1110, FDI1140 SS, FDI1140 FF | 80d |  |  |  |  |  | 12 | 12 |  |  |
| CDE1170 | Montaje de proteccion galvanica |  | 27d | 2027-07-17 | 2027-08-17 | CM018020, CM018022, CM018040 | 98d | 22d |  | HH Electricidad [1460 h] |  |  | 01 | 01 |  |  |
| CP017035 | Montaje de Tie-ins - Servicios |  | 27d | 2027-07-17 | 2027-08-17 | CP017020 FF, CP017020 SS | 64d | 6d |  |  |  |  | 11 | 11 |  |  |
| HITALER165 | Inicio de entregas spools para conexiones a equipos existentes - Slug Catcher / Manifold de Entrada | milestone | 0d | 2027-07-21 | 2027-07-21 | CP011021 SS-5d | 244d |  |  |  | PIPING | ING. PLANTA - SLUG CUTCHER | 08 | 01 | PREPI |  |
| CM012051 | Bombas de glicol PBE-98130/40 |  | 4.5d | 2027-07-22 | 2027-07-27 | CC012060, FDM1210 | 74.5d | 46.5d |  |  |  |  | 04 | 03 |  |  |
| CE015030 | Ampliacion de la antena existente |  | 27d | 2027-07-24 | 2027-08-24 | CE015022, CC015100 FS+20d, FDE1060 | 82d | 16d |  | HH Electricidad [1460 h] |  |  | 07 | 07 |  |  |
| CP017040 | Pruebas hidrostaticas (Precom/PH) |  | 36d | 2027-07-24 | 2027-09-03 | CP017010 SS+60d, CP017020 SS+60d, CP017010 FF+15d, CP017020 FF+15d, CP017035 FF+9d | 58d | 0d |  |  | PRECOM |  | 11 | 11 |  |  |

| ID | Activity | Type | Duration | Start | Finish | Predecessors | Total float | Free float | Calendar | CAMPO DE TRABAJO | 24607 - WBS Cliente | 24607 - WBS Cliente RA | LAYOUT | CAMPO DE TRABAJO 2 | CAMPO DE TRABAJO 3 |
| --- | --- | --- | --- | --- | --- | --- | --- | --- | --- | --- | --- | --- | --- | --- | --- |
| CP019040 | Pruebas hidrostaticas (Precom/PH) |  | 36d | 2027-07-24 | 2027-09-03 | CP019010 SS+30d, CP019010 FF+15d, CP019020 SS+30d, CP019020 FF+15d | 48d | 0d |  | PRECOM | 10 | 10 |  |  |  |
| HITALER240 | Inicio de entregas spools para conexiones a equipos / skids / módulos - PTA | milestone | 0d | 2027-08-04 | 2027-08-04 | CP018020 SS-5d | 232d |  |  | PIPING | 08 | 01 | TRAT. AGUA | PREPI |  |
| CP016040 | Pruebas hidrostaticas (Precom/PH) |  | 47d | 2027-08-06 | 2027-09-29 | CP016010 SS+30d, CP016020 SS+30d, CP016010 FF+15d, CP016020 FF+15d, CP016035 FF+9d | 26d | 0d |  | PRECOM | 08 | 08 |  |  |  |
| CP014040 | Pruebas hidrostaticas (Precom/PH) |  | 36d | 2027-08-09 | 2027-09-18 | CP014010 SS+40d, CP014020 SS+20d, CP014010 FF+15d, CP014020 FF+5d | 38d | 0d |  | PRECOM | 06 | 06 |  |  |  |
| CDE1180 | Montaje de tableros y equipos electricos |  | 54d | 2027-08-11 | 2027-10-12 | CE014050 | 80d | 0d |  |  |  | 01 |  |  |  |
| CP012040 | Pruebas hidrostaticas (Precom/PH) |  | 42d | 2027-08-16 | 2027-10-02 | CP012010 SS+70d, CP012020 SS+70d, CP012010 FF+15d, CP012020 FF+5d | 28d | 0d |  | PRECOM | 04 | 04 |  |  | 1 |
| CDC1100 | Punch List (cierre de excepciones) |  | 135d | 2027-08-18 | 2028-01-22 | CDW1010 FF-10d, CPI010020 FF | 33d | 0d |  |  | 02 | 08 |  |  |  |
| CP016035 | Montaje de Tie-ins - Almac. de Condensado |  | 18d | 2027-08-23 | 2027-09-11 | CP016020 FF | 32d | 6d |  |  | 08 | 08 |  |  |  |
| CP011035 | Montaje de Tie-ins - Slug Catcher / Manifold de Entrada |  | 27d | 2027-09-03 | 2027-10-04 | CP011021 FF | 23d | 7d |  |  | 02 | 02 |  |  |  |
| CP013040 | Pruebas hidrostaticas (Precom/PH) |  | 44d | 2027-09-09 | 2027-10-29 | CP013010 SS+40d, CP013020 SS+40d, CP013010 FF+5d, CP013020 FF+14d | 0d |  |  | PRECOM | 05 | 05 |  |  | 2 |
| CP011041 | Pruebas hidrostaticas (Precom/PH) |  | 36d | 2027-09-11 | 2027-10-22 | CP011010 SS+30d, CP011010 FF+15d, CP011021 SS+40d, CP011021 FF+5d, CP011035 FF+9d | 16d | 0d |  | PRECOM | 02 | 02 |  |  |  |
| A10300 | Emision de Documentos Conforme a Obra (CAO´s) |  | 135d | 2027-09-19 | 2028-01-31 | CDW1010 FF, TA1030 | 89d |  | Lun_Dom_Sin_Feriado |  | 02 | 02 |  |  |  |
| CP011140 | Pruebas hidrostaticas (Precom/PH) |  | 41d | 2027-09-30 | 2027-11-16 | CP011120 SS+35d, CP011120 FF+5d | 6d | 0d |  | PRECOM | 03 | 03 | COMPRESION |  |  |
| CP018040 | Pruebas hidrostaticas (Precom/PH) |  | 24d | 2027-10-07 | 2027-11-03 | CP018020 SS+50d, CP018020 FF+5d, CP018010 SS+50d, CP018010 FF+15d, CP018022 FF+5d, CP018022 SS+5d | 12d | 0d |  | PRECOM | 09 | 09 |  |  |  |
| CDC1190 | Grout y Grating Terminaciones |  | 90d | 2027-10-09 | 2028-01-22 | CC011210, CDC1100 FF | 85d |  |  |  |  | 01 |  |  |  |
| PRPA110 | Preparacion de tareas Paro (verificación de spools) (Fecha a confirmar) |  | 15d | 2027-11-23 | 2027-12-07 | CI018030 FF | 28d | 0d | PARO |  | 1 | 00 |  |  |  |
| PRPA120 | Tie-ins tipo 2 (T2) - 13 (diam entre 6" y 10") |  | 4d | 2027-12-04 | 2027-12-07 | PRPA100, PRPA110 FF | 28d | 0d | PARO |  | 1 | 00 |  |  |  |
| PARO100 | Tie-ins T3 aprox 4 - grandes diam (8", 16" y 20") |  | 2d | 2027-12-08 | 2027-12-09 | PRPA120 | 28d | 0d | PARO |  | 1 | 01 |  |  |  |
| PARO110 | Tie-ins T3 aprox 4 - 10" |  | 1d | 2027-12-08 | 2027-12-08 | PARO100 SS | 29d | 0d | PARO |  | 2 | 01 |  |  |  |
| PARO120 | Tie-ins T3 aprox 1 - 8" |  | 1d | 2027-12-08 | 2027-12-08 | PARO110 SS | 29d | 0d | PARO |  | 3 | 01 |  |  |  |
| PARO150 | Tie-ins T3 aprox 7 (diam menores a 3") |  | 1d | 2027-12-08 | 2027-12-08 | PARO100 SS | 29d | 0d | PARO |  | 5 | 01 |  |  |  |
| PARO160 | Tie-ins T3 aprox 11 - 10 small bore y 1 big bore |  | 1d | 2027-12-09 | 2027-12-09 | PARO120, PARO150 | 29d | 1d | PARO |  | 4 | 01 |  |  |  |
| PARO130 | Tie-ins Paro Electricidad - Generacion |  | 1d | 2027-12-10 | 2027-12-10 | PARO100 | 28d | 0d | PARO |  | 1 | 02 |  |  |  |
| PARO140 | Tie-ins Paro Instrumentos |  | 1d | 2027-12-11 | 2027-12-11 | PARO130, PARO160 | 28d | 0d | PARO |  | 3 | 03 |  |  |  |
| POST100 | Tareas Postparo (normalizacion del area) |  | 3d | 2027-12-12 | 2027-12-14 | PARO140 | 28d | 0d | PARO |  | 3 | 03 |  |  |  |
| POST110 | Pintura de cañerias |  | 15d | 2027-12-15 | 2027-12-29 | POST100 | 28d | 0d | PARO |  | 3 | 03 |  |  |  |
| POST120 | Aislacion de cañerias |  | 15d | 2027-12-20 | 2028-01-03 | POST110 SS+5d, POST110 FF+5d | 28d |  | PARO |  | 3 | 03 |  |  |  |
| TA1000 | Revision de seguridad previa a la puesta en marcha (PSSR) | milestone | 0d | 2028-01-24 | 2028-01-24 | A10290 FF-8d | 6d |  | Lun_Vie_Con_Feriado |  | 00 | 00 |  |  |  |

| ID | WBS | Activity | Type | Duration | Start | Finish | Predecessors | Complete | Total float | Constraint | Calendar | CAMPO DE TRABAJO 3 | ALCANCE | 24607 - WBS Cliente | 24607 - WBS Cliente RA | LAYOUT | CAMPO DE TRABAJO 2 |
| --- | --- | --- | --- | --- | --- | --- | --- | --- | --- | --- | --- | --- | --- | --- | --- | --- | --- |
|  | 2 | **CPF 2 - Fase 2** |  |  | 2025-06-30 | 2028-04-29 |  |  |  |  |  |  |  |  |  |  |  |
|  | 1 | **HITOS** |  |  | 2025-08-07 | 2028-01-31 |  |  |  |  |  |  |  |  |  |  |  |
|  | 1 | **HITOS GENERALES** |  |  | 2025-08-07 | 2025-12-05 |  |  |  |  |  |  |  |  |  |  |  |
| MG1010 |  | KOM - Reunión de inicio de Proyecto (Pre-RA) | milestone | 0d | 2025-08-07 A | 2025-08-07 A | MG1000 SS+27d | 100% |  |  | Lun_Vie_Con_Feriado | MOV | A&B | 01 | 00 |  |  |
| MG1000 |  | Firma Acta de Inicio de Obra - Fecha Efectiva (Fase RA) | milestone | 0d | 2025-12-05 A | 2025-12-05 A |  | 100% |  |  | Lun_Vie_Con_Feriado |  | A&B | 01 | 00 |  |  |
|  | 3 | **HITOS DE TRABAJOS** |  |  | 2025-12-05 | 2028-01-31 |  |  |  |  |  |  |  |  |  |  |  |
| A10200 |  | Hito 3 - Emisión de OC de primer MTO de cañerías en revisión A (ELIMINAR) | milestone | 0d | 2025-12-05 | 2025-12-05 |  |  | 877d |  | Lun_Dom_Sin_Feriado |  |  | 1 | 10 |  |  |
| A10220 |  | Hito 5 – Fundaciones civiles de parrales principales (ELIMINAR) | milestone | 0d | 2025-12-05 | 2025-12-05 |  |  | 877d |  | Lun_Dom_Sin_Feriado |  |  | 1 | 10 |  |  |
| A10230 |  | Hito 6 – Realización Montaje de 140 tn de Estructuras Metálicas (REVISAR NECESIDAD DE USO) (ELIMINAR) | milestone | 0d | 2025-12-05 | 2025-12-05 |  |  | 877d |  | Lun_Dom_Sin_Feriado |  |  | 1 | 10 |  |  |
| A10270 |  | Hito 8 - RFC Planta Mínima (REVISAR NECESIDAD DE USO) (ELIMINAR) | milestone | 0d | 2025-12-05 | 2025-12-05 |  |  | 877d |  | Lun_Dom_Sin_Feriado |  |  | 1 | 10 |  |  |
| A10275 |  | Hito 9 - RFSU Planta Mínima | milestone | 0d | 2025-12-05 | 2025-12-05 |  |  | 877d |  | Lun_Dom_Sin_Feriado |  |  | 1 | 10 |  |  |
| A10180 |  | Hito 1 - Fin de movilización temprana a sitio | milestone | 0d | 2026-05-26 | 2026-05-26 | CG00010 FF |  | 704d |  | Lun_Dom_Sin_Feriado | MOV |  | 02 | 01 |  |  |
| A10190 |  | Hito 2 - Emisión de OC de equipos principales | milestone | 0d | 2026-05-29 | 2026-05-29 | GCE1102 FF, GCM1110 FF, GCM1100 FF, GCE1100 FF |  | 701d |  | Lun_Dom_Sin_Feriado |  |  | 02 | 01 |  |  |
| A10240 |  | Hito 7 - Piping: prefabricado de 25.000 pulg equivalentes | milestone | 0d | 2026-10-02 | 2026-10-02 | FDP1040 SF+140d |  | 575d |  | Lun_Dom_Sin_Feriado |  |  | 02 | 01 |  |  |
| A10210 |  | Hito 4 – Avance de la Ingeniería de Detalle al 75% (ELIMINAR) | milestone | 0d | 2026-10-30 | 2026-10-30 |  |  | 547.55d | finish on or after 2026-10-30 | Lun_Dom_Sin_Feriado |  |  | 1 | 10 |  |  |
| A10280 |  | Hito 10 - RFC Planta Total | milestone | 0d | 2028-01-13 | 2028-01-13 | CDW1000 FF |  | 107d |  | Lun_Dom_Sin_Feriado |  |  | 02 | 01 |  |  |
| A10290 |  | Hito 11 - RFSU Planta Total | milestone | 0d | 2028-01-31 | 2028-01-31 | CDW1010 FF |  | 0d |  | Lun_Dom_Sin_Feriado |  |  | 02 | 01 |  |  |
|  | 2 | **INGENIERÍA DE DETALLE** |  |  | 2025-12-05 | 2027-06-28 |  |  |  |  |  |  |  |  |  |  |  |
|  | 3 | **HITOS INGENIERIA** |  |  | 2025-12-05 | 2025-12-05 |  |  |  |  |  |  |  |  |  |  |  |
| MI1000 |  | Entrega de documentación de partida por Pluspetrol (Pre-RA) | milestone | 0d | 2025-12-05 | 2025-12-05 |  |  | 603d |  | Lun_Vie_Con_Feriado |  | A&B | 1 | 10 |  |  |
| MI1005 |  | Entrega de Ingeniería de Vendors de provisiones por Pluspetrol (Pre-RA) | milestone | 0d | 2025-12-05 | 2025-12-05 |  |  | 603d |  | Lun_Vie_Con_Feriado |  | A&B | 1 | 10 |  |  |
|  | 9 | **PROCESOS** |  |  | 2025-12-05 | 2026-10-13 |  |  |  |  |  |  |  |  |  |  |  |
| EPR1000 |  | Ingeniería de Detalle - Procesos |  | 209d | 2025-12-05 | 2026-10-13 |  |  | 394d |  | Lun_Vie_Con_Feriado |  | A&B | 07 | 11 |  |  |
| PQPRLY00 |  | P&IDs en Rev A |  | 48d | 2025-12-05 | 2026-02-18 | PQPRLY20 SS |  | 0d |  | Lun_Vie_Con_Feriado |  |  | 02 | 02 | TEMPRANA | FECHAS CONTROL |

| ID | WBS | Activity | Type | Duration | Start | Finish | Predecessors | Total float | Free float | Calendar | ALCANCE | 24607 - WBS Cliente | 24607 - WBS Cliente RA | CAMPO DE TRABAJO 3 | CAMPO DE TRABAJO | CAMPO DE TRABAJO 2 |
| --- | --- | --- | --- | --- | --- | --- | --- | --- | --- | --- | --- | --- | --- | --- | --- | --- |
|  | 6 | **SEGURIDAD EN EL DISEÑO** |  |  | 2025-12-05 | 2026-10-05 |  |  |  |  |  |  |  |  |  |  |
| ES10000 |  | Ingeniería de Detalle - Seguridad en el Diseño |  | 204d | 2025-12-05 | 2026-10-05 |  | 399d |  | Lun_Vie_Con_Feriado | A&B | 07 | 11 |  |  |  |
|  | 7 | **MECANICA** |  |  | 2025-12-05 | 2027-05-25 |  |  |  |  |  |  |  |  |  |  |
| EM10000 |  | Ingeniería de Detalle - Mecánica |  | 360d | 2025-12-05 | 2027-05-25 |  | 243d |  | Lun_Vie_Con_Feriado | A&B | 07 | 11 |  |  |  |
|  | 1 | **RI´s** |  |  | 2026-01-07 | 2026-09-17 |  |  |  |  |  |  |  |  |  |  |
| EDC10110 |  | MD-Alcance de Subcontrato O.Civil | milestone | 0d | 2026-01-07 | 2026-01-07 | CONCIV01 FF | 27d | 0d | Lun_Vie_Con_Feriado | A&B | 06 | 01 | MOV |  |  |
| RIM1050 |  | RI / HD - Tanques Mayores in Situ | milestone | 0d | 2026-01-09 | 2026-01-09 | CONMEC01 | 25d | 0d | Lun_Vie_Con_Feriado | B | 04 | 07 |  | M- |  |
| EDC10100 |  | RI - Estructura Metálica | milestone | 0d | 2026-01-23 | 2026-01-23 | CONCIV01 FF+12d | 47d | 0d | Lun_Vie_Con_Feriado | A&B | 06 | 01 |  |  |  |
| RIM1010 |  | RI / HD - Equipos rotativos |  | 121d | 2026-03-25 | 2026-09-17 | CONMEC01 FS+50d | 23d | 0d | Lun_Vie_Con_Feriado | A&B | 04 | 07 |  | RIRE |  |
| RIM1020 |  | RI / HD - Equipos Estáticos / Plantas Paquete |  | 106d | 2026-04-01 | 2026-09-03 | CONMEC01 FS+55d | 49d | 0d | Lun_Vie_Con_Feriado | A&B | 04 | 07 |  | RIRE |  |
| RIM1060 |  | RI / HD - Tanques Mayores Taller | milestone | 0d | 2026-04-24 | 2026-04-24 | RIM1090 FF | 511d |  | Lun_Vie_Con_Feriado | A&B | 04 | 07 |  | M- |  |
| RIM1030 |  | RI / HD - Filtros | milestone | 0d | 2026-07-06 | 2026-07-06 | RIM1100 FF | 126d | 0d | Lun_Vie_Con_Feriado | A&B | 04 | 07 |  |  | ING |
|  | 8 | **PIPING** |  |  | 2025-12-05 | 2027-05-25 |  |  |  |  |  |  |  |  |  |  |
| IP1050 |  | Cómputos de materiales / Requisiciones de materiales (ELIMINADA) |  | 219d | 2025-12-05 | 2026-10-27 |  | 384d |  | Lun_Vie_Con_Feriado | A&B | 07 | 11 |  | PIPING |  |
| IP1060 |  | Isometrías y planos (A ELIMINAR) |  | 150d | 2025-12-05 | 2026-07-20 |  | 453d |  | Lun_Vie_Con_Feriado | A&B | 07 | 11 |  |  |  |
|  | 1 | **Emisiones** |  |  | 2025-12-05 | 2027-05-25 |  |  |  |  |  |  |  |  |  |  |
| EP10000 |  | Ingeniería de Detalle - Cañerias |  | 360d | 2025-12-05 | 2027-05-25 |  | 243d |  | Lun_Vie_Con_Feriado | A&B | 07 | 11 |  | PIPING |  |
|  | 2 | **RI´s** |  |  | 2026-02-18 | 2026-03-18 |  |  |  |  |  |  |  |  |  |  |
| RIP1000 |  | RI - Cañerías y accesorios _ 1° MTO | milestone | 0d | 2026-02-18 | 2026-02-18 | CONPIP01 FF+27d | 1d | 0d | Lun_Vie_Con_Feriado | A&B | 05 | 04 |  | PIPING | FECHAS CONTROL |
| RIP1030 |  | RI - Válvulas manuales | milestone | 0d | 2026-02-25 | 2026-02-25 | CONPIP01 FF+32d | 0d |  | Lun_Vie_Con_Feriado | A&B | 05 | 04 |  | PIPING |  |
| RIP1005 |  | RI - Cañerías y accesorios al 30% definicion MAQ (anterior 2° MTO) | milestone | 0d | 2026-03-18 | 2026-03-18 | PQPRLY00 SF+30d, PQPILY105 FF | 2d | 0d | Lun_Vie_Con_Feriado | A&B | 05 | 04 |  | PIPING |  |
|  | 1 | **CIVIL** |  |  | 2025-12-05 | 2027-03-09 |  |  |  |  |  |  |  |  |  |  |
|  | 1 | **Emisiones** |  |  | 2025-12-05 | 2027-03-09 |  |  |  |  |  |  |  |  |  |  |
| EDC100000 |  | Ingeniería de Detalle - Civil |  | 306d | 2025-12-05 | 2027-03-09 |  | 297d |  | Lun_Vie_Con_Feriado | A&B | 07 | 11 |  |  |  |
| EDC10050 |  | Plano Movimiento de suelos | milestone | 0d | 2026-02-20 | 2026-02-20 | CONCIV01 FF+30d | 84d | 79d | Lun_Vie_Con_Feriado | A&B | 06 | 01 |  |  |  |
| EDC10010 |  | Plano Lay Out de fundaciones - Tanques in situ | milestone | 0d | 2026-03-06 | 2026-03-06 | CONCIV01 FF+40d | 30d | 0d | Lun_Vie_Con_Feriado | B | 06 | 01 |  | M- |  |
| EDC10020 |  | Plano de Fundaciones - Tanques in situ | milestone | 0d | 2026-03-06 | 2026-03-06 | EDC10010 FF | 79d | 69d | Lun_Vie_Con_Feriado | B | 06 | 01 |  | M- |  |
| EDC10030 |  | Plano Lay Out de fundaciones - Sendas en áreas de Procesamiento de Gas y Condensado | milestone | 0d | 2026-03-06 | 2026-03-06 | EDC10010 FF | 30d | 0d | Lun_Vie_Con_Feriado | A | 06 | 01 |  |  |  |
| EDC10150 |  | Planos de H°A° prefabricado (Cámaras-Soportes-Sleepers-otras fundaciones) |  | 110d | 2026-03-11 | 2026-08-20 | RIC1020 FS+20d | 42d | 0d | Lun_Vie_Con_Feriado | A&B | 06 | 01 |  |  |  |
| EDC10040 |  | Plano de Fundaciones - Sendas en áreas de Procesamiento de Gas y Condensado | milestone | 0d | 2026-04-22 | 2026-04-22 | EDC10030 FF+30d | 30d |  | Lun_Vie_Con_Feriado | A | 06 | 01 |  |  |  |

| ID | WBS | Activity | Type | Duration | Start | Finish | Predecessors | Total float | Free float | Calendar | ALCANCE | 24607 - WBS Cliente | 24607 - WBS Cliente RA | CAMPO DE TRABAJO | CAMPO DE TRABAJO 3 | CAMPO DE TRABAJO 2 |
| --- | --- | --- | --- | --- | --- | --- | --- | --- | --- | --- | --- | --- | --- | --- | --- | --- |
|  | 2 | **RI´s** |  |  | 2026-02-06 | 2026-04-01 |  |  |  |  |  |  |  |  |  |  |
| RIC1020 |  | RI - Hormigón premoldeado | milestone | 0d | 2026-02-06 | 2026-02-06 | CONCIV01 FF+22d | 42d | 0d | Lun_Vie_Con_Feriado | A&B | 06 | 01 |  |  |  |
| RIC1060 |  | RI - Ignifugado | milestone | 0d | 2026-04-01 | 2026-04-01 | EDC10100 FF+45d | 275d | 0d | Lun_Vie_Con_Feriado | A&B | 06 | 01 | M-IGNI |  |  |
|  | 2 | **ELECTRICIDAD** |  |  | 2025-12-05 | 2027-06-28 |  |  |  |  |  |  |  |  |  |  |
|  | 1 | **Emisiones** |  |  | 2025-12-05 | 2027-06-28 |  |  |  |  |  |  |  |  |  |  |
| EDE10000 |  | Ingeniería de Detalle - Electricidad (ELIMINADA) |  | 384d | 2025-12-05 | 2027-06-28 |  | 219d |  | Lun_Vie_Con_Feriado | A&B | 07 | 11 |  |  |  |
|  | 2 | **RI´s** |  |  | 2026-01-12 | 2026-06-16 |  |  |  |  |  |  |  |  |  |  |
| RIE1040 |  | RI - Shelters Salas Eléctricas # 3 (Incl. Tableros BT) | milestone | 0d | 2026-01-12 | 2026-01-12 | CONELE01 FF+3d | 35d | 0d | Lun_Vie_Con_Feriado | A&B | 08 | 05 |  | 3 |  |
| RIE1042 |  | RI - Shelters Salas Eléctricas # 4 (Incl. Tableros MT) | milestone | 0d | 2026-01-12 | 2026-01-12 | CONELE01 FF+3d | 16d | 0d | Lun_Vie_Con_Feriado | A&B | 08 | 05 |  | 3 |  |
| RIE1050 |  | RI - Puesta a tierra y SPCDA | milestone | 0d | 2026-01-27 | 2026-01-27 | CONELE01 FF+14d | 90d | 0d | Lun_Vie_Con_Feriado | A&B | 08 | 05 |  |  | PAT |
| RIE1090 |  | RI - Transformadores Salas Eléctricas # 3 y # 4 AJUST | milestone | 0d | 2026-05-11 | 2026-05-11 | CONELE01 FF+82d | 87d | 0d | Lun_Vie_Con_Feriado | A&B | 08 | 05 |  |  |  |
| RIE1020 |  | RI - Cables - electricidad (MT/BT) | milestone | 0d | 2026-06-12 | 2026-06-12 | CONELE01 FF+105d | 41d | 0d | Lun_Vie_Con_Feriado | A&B | 08 | 05 |  |  |  |
| RIE1000 |  | RI - Material para Canalizaciones (bandejas, conduits y accesorios) | milestone | 0d | 2026-06-15 | 2026-06-15 | CONELE01 FF+106d | 32d | 0d | Lun_Vie_Con_Feriado | A&B | 08 | 05 |  |  |  |
| RIE1080 |  | RI - Iluminación - Columnas y artefactos de iluminación | milestone | 0d | 2026-06-16 | 2026-06-16 | CONELE01 FF+107d | 40d | 0d | Lun_Vie_Con_Feriado | A&B | 08 | 05 |  |  |  |
|  | 4 | **INSTRUMENTACIÓN Y CONTROL** |  |  | 2025-12-05 | 2027-05-25 |  |  |  |  |  |  |  |  |  |  |
|  | 1 | **Emisiones** |  |  | 2025-12-05 | 2027-05-25 |  |  |  |  |  |  |  |  |  |  |
| EI10000 |  | Ingeniería de Detalle - Instrumentación y Control |  | 360d | 2025-12-05 | 2027-05-25 |  | 243d |  | Lun_Vie_Con_Feriado | A&B | 07 | 11 | INS |  |  |
|  | 2 | **RI´s** |  |  | 2026-04-16 | 2026-06-24 |  |  |  |  |  |  |  |  |  |  |
| RII1010 |  | RI - Cables de Instrumentos |  | 20d | 2026-04-16 | 2026-05-14 | CONINS01 SS+85d | 39d | 0d | Lun_Vie_Con_Feriado | A&B | 09 | 06 |  |  |  |
| RII1030 |  | RI - Válvulas de Control | milestone | 0d | 2026-04-23 | 2026-04-23 | CONINS01 FF+71d | 32d | 0d | Lun_Vie_Con_Feriado | A&B | 09 | 06 |  |  |  |
| RII1040 |  | RI - Instrumentos / transmisores / medidores | milestone | 0d | 2026-06-24 | 2026-06-24 | CONINS01 FF+113d | 47.2d | 0d | Lun_Vie_Con_Feriado | A&B | 09 | 06 |  |  |  |
|  | 3 | **SUMINISTROS** |  |  | 2025-12-05 | 2027-06-30 |  |  |  |  |  |  |  |  |  |  |
|  | 4 | **SUMINISTROS PLUSPETROL** |  |  | 2025-12-05 | 2027-02-01 |  |  |  |  |  |  |  |  |  |  |
|  | 1 | **Sistema de Ingreso a Planta** |  |  |  |  |  |  |  |  |  |  |  |  |  |  |
|  | 2 | **Sistema de tratamiento de condensado** |  |  | 2026-06-01 | 2026-07-17 |  |  |  |  |  |  |  |  |  |  |
| SP1150 |  | Provisión de pluspetrol: Desarenador para 10MMm3/d SKZZ-10220 | milestone | 0d | 2026-06-01 | 2026-06-01 | MG1000 SF+116d | 253d | 17d | Lun_Dom_Sin_Feriado | A | 05 | 02 |  |  | OS -004 |
| PCM1150 |  | Recepción - desacopio - control: Desarenador para 10MMm3/d |  | 25d | 2026-06-19 | 2026-07-17 | CG00030 SS, SP1150 | 284d | 85d |  | A | 03 | 14 |  |  |  |

| ID | WBS | Activity | Type | Duration | Start | Finish | Predecessors | Total float | Free float | Calendar | CAMPO DE TRABAJO 2 | ALCANCE | 24607 - WBS Cliente | 24607 - WBS Cliente RA |
| --- | --- | --- | --- | --- | --- | --- | --- | --- | --- | --- | --- | --- | --- | --- |
|  | 3 | **Sistema de Compresión** |  |  | 2025-12-05 | 2027-02-01 |  |  |  |  |  |  |  |  |
| SP1090 |  | Provisión de pluspetrol: Scrubber general (Módulo 290) | milestone | 0d | 2025-12-05 | 2025-12-05 | MG1000 SF | 596d | 255d | Lun_Dom_Sin_Feriado | OS -004 | A | 05 | 02 |
| PCM1090 |  | Recepción - desacopio - control: Scrubber general (Módulo 290) |  | 25d | 2026-08-17 | 2026-09-14 | CG00030 SS, SP1090, PCM1000 | 281d | 128d |  |  | A | 03 | 14 |
| SP1070 |  | Provisión de pluspetrol: Compresores multiservicio Áreas 291 / 292 / 293 | milestone | 0d | 2026-12-30 | 2026-12-30 | MG1000 SF+261d | 60d | 4d | Lun_Dom_Sin_Feriado | OS -004 | A | 05 | 02 |
| PCM1070 |  | Recepción - desacopio - control: Compresores multiservicio Áreas 291 / 292 / 293 |  | 25d | 2027-01-04 | 2027-02-01 | CG00030 SS, SP1070 | 48d | 0d |  |  | A | 03 | 14 |
|  | 4 | **Sistema de deshidratación de Gas** |  |  | 2025-12-05 | 2027-01-09 |  |  |  |  |  |  |  |  |
| SP1020 |  | Provisión de pluspetrol: Separador de Entrada de HP (3.5 MMSCMD) | milestone | 0d | 2025-12-05 | 2025-12-05 | MG1000 SF | 461d | 358d | Lun_Dom_Sin_Feriado | OS -004 | A | 05 | 02 |
| SP1030 |  | Provisión de pluspetrol: TEG (3.5 MMSCMD) | milestone | 0d | 2025-12-05 | 2025-12-05 | MG1000 SF | 461d | 196d | Lun_Dom_Sin_Feriado | OS -004 | A | 05 | 02 |
| PCM1030 |  | Recepción - desacopio - control: TEG (3.5 MMSCMD) |  | 25d | 2026-06-19 | 2026-07-17 | CG00030 SS, SP1030 | 215d | 0d |  |  | A | 03 | 14 |
| PCM1020 |  | Recepción - desacopio - control: Separador de Entrada de HP (3.5 MMSCMD) |  | 25d | 2026-11-28 | 2027-01-09 | CG00030, SP1020 | 76d | 0d |  |  | A | 03 | 14 |
|  | 5 | **Sistema de Estabilización de Condensado** |  |  | 2025-12-05 | 2026-07-17 |  |  |  |  |  |  |  |  |
| CC013001 |  | Fundaciones de Unidad de Procesamiento de Condensado #1 - ÁREA 260 _ Entrega Pluspetrol | milestone | 0d | 2025-12-05 | 2025-12-05 | MG1000 SF | 424d | 322d | Lun_Dom_Sin_Feriado | OS -004 | A | 01 | 01 |
| CC013002 |  | Fundaciones de Unidad de Procesamiento de Condensado #2 - ÁREA 270 _ Entrega Pluspetrol | milestone | 0d | 2025-12-05 | 2025-12-05 |  | 877d |  | Lun_Dom_Sin_Feriado | FUERA NUEVO ALCANCE | A | 1 | 10 |
| PCM1050 |  | Recepción - desacopio - control: Tren de estabilización (2400 m3/d) #2-Área 270 |  | 25d | 2025-12-05 | 2026-01-16 |  | 703d |  |  | FUERA NUEVO ALCANCE | A | 1 | 14 |
| SP1040 |  | Provisión de pluspetrol: Tren de estabilización (2400 m3/d) #1-Área 260 | milestone | 0d | 2025-12-05 | 2025-12-05 | MG1000 SF | 395d | 196d | Lun_Dom_Sin_Feriado | OS -004 | A | 05 | 02 |
| SP1050 |  | Provisión de pluspetrol: Tren de estabilización (2400 m3/d) #2-Área 270 | milestone | 0d | 2025-12-05 | 2025-12-05 |  | 877d |  | Lun_Dom_Sin_Feriado | FUERA NUEVO ALCANCE | A | 1 | 10 |
| PCM1040 |  | Recepción - desacopio - control: Tren de estabilización (2400 m3/d) #1-Área 260 |  | 25d | 2026-06-19 | 2026-07-17 | CG00030 SS, SP1040 | 158d | 0d |  |  | A | 03 | 14 |
|  | 6 | **Sistema de Calentamiento** |  |  | 2025-12-05 | 2026-08-15 |  |  |  |  |  |  |  |  |
| SP1060 |  | Provisión de pluspetrol: Unidad de Hot Oil | milestone | 0d | 2025-12-05 | 2025-12-05 | MG1000 SF | 500d | 225d | Lun_Dom_Sin_Feriado | OS -004 | A | 05 | 02 |
| PCM1060 |  | Recepción - desacopio - control: Unidad de Hot Oil |  | 25d | 2026-07-18 | 2026-08-15 | CG00030 SS, SP1060, PCM1030 | 223d | 0d |  |  | A | 03 | 14 |
|  | 7 | **Sistema de despacho de condensado** |  |  | 2025-12-05 | 2027-02-01 |  |  |  |  |  |  |  |  |
| SP1170 |  | Provisión de pluspetrol: Bombas Booster de Condensado (6 Unidades) | milestone | 0d | 2025-12-05 | 2025-12-05 | MG1000 SF | 560d | 196d | Lun_Dom_Sin_Feriado | OS -004 | B | 05 | 02 |
| PCM1170 |  | Recepción - desacopio - control: Bombas Booster de Condensado (6 Unidades) |  | 25d | 2026-06-19 | 2026-07-17 | CG00030 SS, SP1170 | 300d | 84d |  |  | B | 03 | 14 |
| SP1160 |  | Provisión de pluspetrol: Bombas de exportación de Despacho de Condensado (3 Unidades _ PAY-23310 A/B/C) AJUST | milestone | 0d | 2026-12-30 | 2026-12-30 | MG1000 SF+261d | 187d | 4d | Lun_Dom_Sin_Feriado | FUERA NUEVO ALCANCE | B | 05 | 02 |
| PCM1160 |  | Recepción - desacopio - control: Bombas de exportación de Despacho de Condensado (3 Unidades _ PAY-23310 A/B/C) AJUST |  | 25d | 2027-01-04 | 2027-02-01 | CG00030 SS, SP1160 | 157d | 0d |  | FUERA NUEVO ALCANCE | B | 03 | 14 |

| ID | WBS | Activity | Type | Duration | Start | Finish | Predecessors | Total float | Free float | Constraint | Calendar | CAMPO DE TRABAJO 2 | ALCANCE | 24607 - WBS Cliente | 24607 - WBS Cliente RA | CAMPO DE TRABAJO | CAMPO DE TRABAJO 3 |
| --- | --- | --- | --- | --- | --- | --- | --- | --- | --- | --- | --- | --- | --- | --- | --- | --- | --- |
|  | 8 | **Sistema de inyección de Agua** |  |  | 2025-12-05 | 2026-08-15 |  |  |  |  |  |  |  |  |  |  |  |
| SP1000 |  | Provisión de pluspetrol: Bombas de Inyección de Agua PAZ-24210 A/B/C AJUST | milestone | 0d | 2025-12-05 | 2025-12-05 | MG1010 SF+86d | 566d | 224d |  | Lun_Dom_Sin_Feriado | FUERA NUEVO ALCANCE | B | 05 | 02 |  |  |
| PCM1000 |  | Recepción - desacopio - control: Bombas de Inyección de Agua PAZ-24210 A/B/C AJUST |  | 25d | 2026-07-18 | 2026-08-15 | CG00030 SS, SP1000, PCM1040 | 281d | 0d |  |  | FUERA NUEVO ALCANCE | B | 03 | 14 |  |  |
|  | 9 | **Sistema de descarga de Gas** |  |  |  |  |  |  |  |  |  |  |  |  |  |  |  |
|  | 10 | **Sistema de Generación** |  |  | 2025-12-05 | 2026-07-06 |  |  |  |  |  |  |  |  |  |  |  |
| SP1120 |  | Provisión de pluspetrol: Generadores Eléctricos a Gas (3 Unidades) - KBE-600 J/K AJUST | milestone | 0d | 2025-12-05 | 2025-12-05 | MG1000 SF | 556d | 196d |  | Lun_Dom_Sin_Feriado | FUERA NUEVO ALCANCE | A | 05 | 02 |  |  |
| PCM1120 |  | Recepción - desacopio - control: Generadores Eléctricos a Gas (3 Unidades) - KBE-600 J/K AJUST |  | 15d | 2026-06-19 | 2026-07-06 | CG00030 SS, SP1120 | 296d | 230d |  |  | FUERA NUEVO ALCANCE | A | 03 | 14 |  |  |
|  | 11 | **Sistema de tratamiento de agua de producción (IGF)** |  |  | 2025-12-05 | 2026-01-16 |  |  |  |  |  |  |  |  |  |  |  |
| PCM1100 |  | Recepción - desacopio - control: Unidad de Tratamiento de agua de Producción Módulos MAZ-24360 |  | 25d | 2025-12-05 | 2026-01-16 |  | 703d |  |  |  | FUERA NUEVO ALCANCE | B | 1 | 14 |  |  |
| SP1100 |  | Provisión de pluspetrol: Unidad de Tratamiento de agua de Producción (Módulos MAZ-24360) | milestone | 0d | 2025-12-05 | 2025-12-05 |  | 877d |  |  | Lun_Dom_Sin_Feriado | FUERA NUEVO ALCANCE | B | 1 | 10 |  |  |
|  | 12 | **Sistema de Venteos** |  |  | 2025-12-05 | 2026-09-14 |  |  |  |  |  |  |  |  |  |  |  |
| SP1110 |  | Provisión de pluspetrol: Flare - LZZ-95110 | milestone | 0d | 2025-12-05 | 2025-12-05 | MG1000 SF | 556d | 255d |  | Lun_Dom_Sin_Feriado | OS -004 | B | 05 | 02 |  |  |
| PCM1110 |  | Recepción - desacopio - control: Flare - LZZ-95110 |  | 25d | 2026-08-17 | 2026-09-14 | CG00030 SS, SP1110, PCM1060 | 246d | 156d |  |  |  | B | 03 | 14 |  |  |
|  | 13 | **Sistema de Seguridad** |  |  | 2026-03-31 | 2026-07-17 |  |  |  |  |  |  |  |  |  |  |  |
| SP1130 |  | Provisión de pluspetrol: Sistema de seguridad (tableros CPF-ESD-SC-07 y CPF-PSS-SC-07) AJUST | milestone | 0d | 2026-03-31 | 2026-03-31 | MG1000 SF+76d | 443d | 79d |  | Lun_Dom_Sin_Feriado | OS -004 | A | 05 | 02 |  |  |
| PCM1130 |  | Recepción - desacopio - control: Sistema de seguridad (tableros CPF-ESD-SC-07 y CPF-PSS-SC-07) AJUST |  | 25d | 2026-06-19 | 2026-07-17 | CG00030 SS, SP1130 | 300d | 281d |  |  |  | A | 03 | 14 | NU2 |  |
|  | 14 | **Sistema de tratamiento de agua cruda** |  |  | 2026-03-31 | 2026-07-17 |  |  |  |  |  |  |  |  |  |  |  |
| SP1140 |  | Provisión de pluspetrol: Planta de Clarificación | milestone | 0d | 2026-03-31 | 2026-03-31 | MG1000 SF+76d | 731d | 79d |  | Lun_Dom_Sin_Feriado | OS -004 | A | 05 | 02 |  |  |
| PCM1140 |  | Recepción - desacopio - control: Planta de Clarificación |  | 25d | 2026-06-19 | 2026-07-17 | CG00030 SS, SP1140 | 547d |  |  |  | REVISAR | A | 03 | 14 |  |  |
|  | 1 | **SUMINISTROS AESA** |  |  | 2025-12-05 | 2027-06-30 |  |  |  |  |  |  |  |  |  |  |  |
|  | 1 | **GESTION DE COMPRA** |  |  | 2025-12-05 | 2027-01-11 |  |  |  |  |  |  |  |  |  |  |  |
|  | 1 | **CIVIL** |  |  | 2026-01-08 | 2026-07-16 |  |  |  |  |  |  |  |  |  |  |  |
| GCC1000 |  | Gestión de contratación Obra Civil |  | 65d | 2026-01-08 | 2026-04-15 | EDC10110 | 27d |  | start on or after 2025-08-18 | Lun_Vie_Con_Feriado |  | A&B | 01 | 01 |  | MOV |
| GCC1020 |  | Gestión de compras - Hormigón premoldeado |  | 29d | 2026-02-09 | 2026-03-23 | RIC1020 SS, RIC1020 FF | 58d | 16d |  | Lun_Vie_Con_Feriado |  | A&B | 01 | 01 |  |  |
| GCC1050 |  | Gestión de compras - Ignifugado |  | 71d | 2026-04-06 | 2026-07-16 | RIC1060 SS, RIC1060 FF | 275d | 0d |  | Lun_Vie_Con_Feriado |  | A&B | 01 | 01 | M-IGNI |  |

| ID | WBS | Activity | Duration | Start | Finish | Predecessors | Total float | Free float | Calendar | CAMPO DE TRABAJO 3 | ALCANCE | 24607 - WBS Cliente | 24607 - WBS Cliente RA | CAMPO DE TRABAJO 2 | CAMPO DE TRABAJO |
| --- | --- | --- | --- | --- | --- | --- | --- | --- | --- | --- | --- | --- | --- | --- | --- |
|  | 2 | **ELECTRICIDAD** |  | 2026-01-13 | 2027-01-11 |  |  |  |  |  |  |  |  |  |  |
| GCE1100 |  | Gestión de compras - Shelters Sala Eléctrica # 3 | 91d | 2026-01-13 | 2026-05-28 | RIE1040 SS, RIE1040 FF | 35d | 0d | Lun_Vie_Con_Feriado | 3 | A&B | 03 | 05 |  |  |
| GCE1102 |  | Gestión de compras - Shelter Sala Eléctrica # 4 | 91d | 2026-01-13 | 2026-05-28 | RIE1042 SS, RIE1042 FF | 16d | 0d | Lun_Vie_Con_Feriado | 3 | A&B | 0405 | 05 |  |  |
| GCE1060 |  | Gestión de compras - Puesta a tierra y SPCDA | 31d | 2026-01-28 | 2026-03-13 | RIE1050 SS, RIE1050 FF | 90d | 0d | Lun_Vie_Con_Feriado |  | A&B | 02 | 05 | PAT |  |
| GCE1140 |  | Gestión de compras - Transformadores Salas Eléctricas # 3 y # 4 | 92d | 2026-05-12 | 2026-09-21 | RIE1090 | 87d | 0d | Lun_Vie_Con_Feriado |  | A&B | 02 | 05 |  |  |
| GCE1040 |  | Gestión de compras - Cables - electricidad (MT/BT) | 102d | 2026-06-15 | 2026-11-06 | RIE1020 SS, RIE1020 FF | 41d | 0d | Lun_Vie_Con_Feriado |  | A&B | 02 | 05 |  |  |
| GCE1000 |  | Gestión de compras - Canalizaciones (Bandejas / Conduits / EM / soportes y accesorios) | 84d | 2026-06-16 | 2026-10-14 | RIE1000 SS, RIE1000 FF | 32d | 0d | Lun_Vie_Con_Feriado |  | A&B | 02 | 05 |  |  |
| GCE1110 |  | Gestión de compras - Iluminación - Columnas y artefactos de iluminación | 26d | 2026-06-17 | 2026-07-23 | RIE1080 SS, RIE1080 FF | 40d | 0d | Lun_Vie_Con_Feriado |  | A&B | 02 | 05 |  |  |
| GCE1180 |  | Gestión de compras - Cables - electricidad (MT/BT) Rev.1 | 66d | 2026-09-30 | 2027-01-11 | RIE1070 | 101.05d | 0d | Lun_Vie_Con_Feriado |  | A&B | 02 | 05 |  |  |
|  | 4 | **INSTRUMENTACIÓN Y CONTROL** |  | 2026-04-24 | 2027-01-11 |  |  |  |  |  |  |  |  |  |  |
| GCI1040 |  | Gestión de compras - Válvulas de Control | 80d | 2026-04-24 | 2026-08-19 | RII1030 SS, RII1030 FF | 32d | 0d | Lun_Vie_Con_Feriado |  | A&B | 03 | 06 |  |  |
| GCI1020 |  | Gestión de compras - Cables de Instrumentos | 100d | 2026-05-15 | 2026-10-06 | RII1010 | 39d | 0d | Lun_Vie_Con_Feriado |  | A&B | 03 | 06 |  |  |
| GCI1050 |  | Gestión de compras - Instrumentos / transmisores / medidores | 42d | 2026-06-25 | 2026-08-25 | RII1040 SS, RII1040 FF | 47.2d | 0d | Lun_Vie_Con_Feriado |  | A&B | 03 | 06 |  |  |
| GCI1130 |  | Gestión de compras - Cables de Instrumentos Rev.1 | 88d | 2026-08-31 | 2027-01-11 | RII1020 | 93.05d | 0d | Lun_Vie_Con_Feriado |  | A&B | 03 | 06 |  |  |
|  | 6 | **SEGURIDAD EN EL DISEÑO** |  |  |  |  |  |  |  |  |  |  |  |  |  |
|  | 7 | **MECANICA** |  | 2025-12-05 | 2026-11-12 |  |  |  |  |  |  |  |  |  |  |
|  | 1 | **Tanques** |  | 2025-12-05 | 2026-05-29 |  |  |  |  |  |  |  |  |  |  |
| GCM1050 |  | Gestión de compras - Tanques de aceite para Motores & Compresores (TKBE-90410 & TKBE-90440) | 60d | 2025-12-05 | 2026-03-06 |  | 543d |  | Lun_Vie_Con_Feriado |  | A | 1 | 10 | FUERA NUEVO ALCANCE | M- |
| GCM1400 |  | Gestión de compras - Sumideros PRFV | 65d | 2025-12-05 | 2026-03-13 |  | 538d |  | Lun_Vie_Con_Feriado |  | A | 1 | 10 |  | M-RIRE |
| GCM1100 |  | Gestión de compras/contratación - Provisión y Montaje de Tanques Mayores in Situ | 94d | 2026-01-09 | 2026-05-29 | RIM1050 SS | 25d | 0d | Lun_Vie_Con_Feriado |  | B | 05 | 03 |  | M- |
|  | 8 | **Equipos rotativos** |  | 2025-12-05 | 2026-08-26 |  |  |  |  |  |  |  |  |  |  |
| GCM1250 |  | Gestión de compras - Bomba de desarenado - PAZ-24240 A/B | 65d | 2025-12-05 | 2026-03-13 |  | 538d |  | Lun_Vie_Con_Feriado |  | B | 1 | 10 | FUERA NUEVO ALCANCE |  |
| GCM1370 |  | Gestión de compras - Bomba de desagote de emergencia PZZ-97220 A/B | 62d | 2025-12-05 | 2026-03-10 |  | 541d |  | Lun_Vie_Con_Feriado |  | B | 1 | 10 | FUERA NUEVO ALCANCE |  |
| GCM1380 |  | Gestión de compras - Bomba de carga de Glicol PBE-98120 | 65d | 2025-12-05 | 2026-03-13 |  | 538d |  | Lun_Vie_Con_Feriado |  | A | 1 | 10 | FUERA NUEVO ALCANCE | RIRE |
| GCM1480 |  | Gestión de compras - Bombas de Aceite Motores & Compresores PBE-90430 & PBE-90460 | 65d | 2025-12-05 | 2026-03-13 |  | 538d |  | Lun_Vie_Con_Feriado |  | A | 1 | 10 | FUERA NUEVO ALCANCE | RIRE |
| GCM1510 |  | Gestión de compras - Bombas de Agua de Drenaje a Tratamiento PZZ-97230 A/B | 65d | 2025-12-05 | 2026-03-13 |  | 538d |  | Lun_Vie_Con_Feriado |  | B | 1 | 10 | FUERA NUEVO ALCANCE |  |
| GCM1270 |  | Gestión de compras - Bomba de agua tratada PAZ-24390 A/B/C | 65d | 2026-03-25 | 2026-06-29 | RIM1010 SS, RIM1010 FF-60d | 60d | 0d | Lun_Vie_Con_Feriado |  | B | 05 | 03 |  |  |
| GCM1320 |  | Gestión de compras - Bomba de tanque sumidero de Hot Oil PBE-94250 | 50d | 2026-04-17 | 2026-06-30 | RIM1010 SS, RIM1010 FF-56d | 155d | 0d | Lun_Vie_Con_Feriado |  | A | 05 | 03 |  | M-RIRE |
| GCM1330 |  | Gestión de compras - Bombas (Varias) | 65d | 2026-05-26 | 2026-08-26 | RIM1010 SS+40d, RIM1010 FF-20d | 34d | 0d | Lun_Vie_Con_Feriado |  | A&B | 05 | 03 |  | RIRE |
| GCM1390 |  | Gestión de compras - Bombas de Drenajes PAY-97110 A/B | 44d | 2026-06-02 | 2026-08-03 | RIM1010 SS+45d, RIM1010 FF-33d | 23d | 0d | Lun_Vie_Con_Feriado |  | A | 05 | 03 | FUERA NUEVO ALCANCE | RIRE |

| ID | WBS | Activity | Duration | Start | Finish | Predecessors | Total float | Free float | Calendar | Resources | CAMPO DE TRABAJO | ALCANCE | 24607 - WBS Cliente | 24607 - WBS Cliente RA | CAMPO DE TRABAJO 2 | LAYOUT |
| --- | --- | --- | --- | --- | --- | --- | --- | --- | --- | --- | --- | --- | --- | --- | --- | --- |
|  | 2 | **Equipos estaticos y recipientes** |  | 2026-04-24 | 2026-11-12 |  |  |  |  |  |  |  |  |  |  |  |
|  | 1 | **Filtros** |  | 2026-07-07 | 2026-11-12 |  |  |  |  |  |  |  |  |  |  |  |
| GCM1130 |  | Gestión de compras - Filtros FAJ-24250 & FAJ-24230 A/B | 90d | 2026-07-07 | 2026-11-12 | RIM1100 | 36d | 0d | Lun_Vie_Con_Feriado |  | RIRE | B | 05 | 03 |  |  |
| GCM1140 |  | Gestión de compras - Filtro de bomba Hot Oil FAJ-94260 | 11d | 2026-07-07 | 2026-07-22 | RIM1030 SS, RIM1030 FF | 126d | 0d | Lun_Vie_Con_Feriado |  |  | A | 05 | 03 |  |  |
|  | 2 | **Estáticos y paquetes** |  | 2026-04-24 | 2026-10-29 |  |  |  |  |  |  |  |  |  |  |  |
| GCM1190 |  | Gestión de compras - Skid generación de nitrógeno SKZZ-92020/30 | 66d | 2026-04-24 | 2026-07-29 | RIM1020 SS+15d, RIM1020 FF-60d | 101d | 0d | Lun_Vie_Con_Feriado |  | RIRE | A | 05 | 03 |  |  |
| GCM1490 |  | Gestión de compras - Skids de inyección de químicos (tanque + bombas) | 80d | 2026-04-24 | 2026-08-19 | RIM1020 SS+15d, RIM1020 FF-50d | 143d | 0d | Lun_Vie_Con_Feriado |  | M-RIRE | A | 05 | 03 | REVISAR |  |
| GCM1230 |  | Gestión de compras - Trim Cooler | 63d | 2026-04-30 | 2026-07-31 | RIM1020 SS+5d, RIM1020 FF-24d | 69d | 0d | Lun_Vie_Con_Feriado |  |  | A | 05 | 03 |  |  |
| GCM1090 |  | Gestión de compras - Separador de condensados de EPF VBD-10240 | 50d | 2026-05-07 | 2026-07-20 | RIM1020 SS, RIM1020 FF-33d | 97d | 0d | Lun_Vie_Con_Feriado |  | RIRE | A | 05 | 03 |  |  |
| GCM1460 |  | Gestión de compras - Pulmón de Nitrógeno VBE-92010 | 65d | 2026-05-08 | 2026-08-11 | RIM1020 SS+10d, RIM1020 FF-17d | 121d | 0d | Lun_Vie_Con_Feriado |  |  | A | 05 | 03 |  |  |
| GCM1470 |  | Gestión de compras - Recipientes enterrados | 35d | 2026-05-08 | 2026-06-29 | RIM1020 SS, RIM1020 FF-47d | 102d | 0d | Lun_Vie_Con_Feriado |  | M-RIRE | B | 05 | 03 |  |  |
| GCM1450 |  | Gestión de compras - Pulmones de Aire de Arranque - VBE-91030 y de Instrumentos VBE-91020 | 80d | 2026-05-11 | 2026-09-02 | RIM1020 SS+25d, RIM1020 FF-17d | 89d | 0d | Lun_Vie_Con_Feriado |  | RIRE | A | 05 | 03 |  |  |
| GCM1440 |  | Gestión de compras - Calentadores eléctricos EAP-95130 A/B | 65d | 2026-07-22 | 2026-10-22 | RIM1020 SS+75d, RIM1020 FF | 49d | 0d | Lun_Vie_Con_Feriado |  | RIRE | A | 05 | 03 |  |  |
| GCM1210 |  | Gestión de compras - Desgasificadores presurizado / atmosférico DBM-24310 / DBM-24320 | 65d | 2026-07-29 | 2026-10-29 | RIM1020 SS+80d, RIM1020 FF | 50d | 0d | Lun_Vie_Con_Feriado |  | RIRE | B | 05 | 03 |  |  |
| GCM1220 |  | Gestión de compras - KOD | 65d | 2026-07-29 | 2026-10-29 | RIM1020 SS+80d, RIM1020 FF | 50d | 0d | Lun_Vie_Con_Feriado |  | RIRE | B | 05 | 03 |  |  |
|  | 3 | **Equipos de izaje** |  |  |  |  |  |  |  |  |  |  |  |  |  |  |
|  | 8 | **PIPING** |  | 2026-02-19 | 2026-06-02 |  |  |  |  |  |  |  |  |  |  |  |
| GCP1000 |  | Gestión de compra Material de Cañerías y Accesorios _ 1° MTO | 36d | 2026-02-19 | 2026-04-14 | RIP1000 SS, RIP1000 FF | 1d | 0d | Lun_Vie_Con_Feriado |  | PIPING | A&B | 06 | 04 |  |  |
| GCP1030 |  | Gestión de compras - Válvulas manuales | 64d | 2026-02-26 | 2026-06-02 | RIP1030, RIP1030 FF | 0d |  | Lun_Vie_Con_Feriado |  | PIPING | A&B | 06 | 04 |  |  |
| GCP1001 |  | Gestión de compra Material de Cañerías y Accesorios al 30% definicion MAQ (anterior 2° MTO) | 30d | 2026-03-19 | 2026-05-05 | RIP1005 SS, RIP1005 FF | 8d | 0d | Lun_Vie_Con_Feriado |  | PIPING | A&B | 06 | 04 |  |  |
|  | 10 | **ESTRUCTURA METÁLICA** |  | 2026-01-26 | 2026-03-16 |  |  |  |  |  |  |  |  |  |  |  |
| GCS1000 |  | Gestión de compras / contratación - Estructuras Metálicas | 34d | 2026-01-26 | 2026-03-16 | EDC10100 SS, EDC10100 FF | 47d | 17d | Lun_Vie_Con_Feriado |  |  | A&B | 07 | 02 |  |  |
|  | 2 | **FABRICACIÓN Y DESPACHO** |  | 2025-12-05 | 2027-06-30 |  |  |  |  |  |  |  |  |  |  |  |
|  | 1 | **CIVIL** |  | 2026-04-18 | 2026-11-06 |  |  |  |  |  |  |  |  |  |  |  |
| FDC1020 |  | Provisión y despacho de Hormigón Premoldeado (Cámaras-Soportes-Sleepers-otras fundaciones) | 203d | 2026-04-18 | 2026-11-06 | EDC10150 FF+30d, EDC10150 SS+25d, GCC1020 | 62d | 0d | Lun_Dom_Sin_Feriado | Distibucion Venta [1000000 h] |  | A&B | 01 | 01 | PREHO | SALIDA PLANTA |
| FDC1050 |  | Fabricación y despacho - Ignifugado | 76d | 2026-07-17 | 2026-09-30 | GCC1050 | 400d | 166d | Lun_Dom_Sin_Feriado |  | M-IGNI | A&B | 01 | 01 |  |  |

| ID | WBS | Activity | Duration | Start | Finish | Predecessors | Total float | Free float | Calendar | Resources | CAMPO DE TRABAJO 2 | ALCANCE | 24607 - WBS Cliente | 24607 - WBS Cliente RA | CAMPO DE TRABAJO | CAMPO DE TRABAJO 3 |
| --- | --- | --- | --- | --- | --- | --- | --- | --- | --- | --- | --- | --- | --- | --- | --- | --- |
|  | 2 | **ELECTRICIDAD** |  | 2026-03-14 | 2027-06-30 |  |  |  |  |  |  |  |  |  |  |  |
| FDE1030 |  | Fabricación y despacho - Puesta a tierra y SPCDA | 38d | 2026-03-14 | 2026-04-20 | GCE1060 | 136d | 61d | Lun_Dom_Sin_Feriado |  | PAT | A&B | 02 | 05 |  |  |
| FDE1103 |  | Fabricación y despacho - Shelter Sala Eléctrica # 3 | 361d | 2026-05-29 | 2027-05-24 | GCE1100 | 52d | 34d | Lun_Dom_Sin_Feriado |  |  | A | 02 | 05 | NU3 | 3 |
| FDE1104 |  | Fabricación y despacho - Shelter Sala Eléctrica # 4 | 391d | 2026-05-29 | 2027-06-23 | GCE1102 | 22d | 4d | Lun_Dom_Sin_Feriado |  |  | B | 02 | 05 | NU3 | 3 |
| FDE1090 |  | Fabricación y despacho - Iluminación - Columnas y artefactos de iluminación | 158d | 2026-07-24 | 2026-12-28 | GCE1110 | 57d | 0d | Lun_Dom_Sin_Feriado |  |  | A&B | 02 | 05 |  |  |
| FDE1140 |  | Fabricación y despacho - Transformadores Salas Eléctricas # 3 y # 4 AJUST | 238d | 2026-09-22 | 2027-05-17 | GCE1140 | 130d | 73d | Lun_Dom_Sin_Feriado |  |  | A&B | 02 | 05 |  | 3 |
| FDE1010 |  | Fabricación y despacho - Canalizaciones (Bandejas / Conduits / EM / soportes y accesorios) | 112d | 2026-11-06 | 2027-02-25 | GCE1000 SS+100d, GCE1000 FF+5d | 51d | 0d | Lun_Dom_Sin_Feriado |  |  | A&B | 02 | 05 |  |  |
| FDE1050 |  | Fabricación y despacho - Cables - electricidad (MT/BT) | 171d | 2026-11-07 | 2027-04-26 | GCE1040 | 67d | 3d | Lun_Dom_Sin_Feriado |  |  | A&B | 02 | 05 |  |  |
| FDE1170 |  | Fabricación y despacho - Cables - electricidad (MT/BT) Rev.1 | 170d | 2027-01-11 | 2027-06-30 | GCE1180 | 145.05d | 1.05d | Lun_Dom_Sin_Feriado |  |  | A&B | 02 | 05 |  |  |
|  | 4 | **INSTRUMENTACIÓN Y CONTROL** |  | 2026-08-20 | 2027-06-19 |  |  |  |  |  |  |  |  |  |  |  |
| FDI1060 |  | Fabricación y despacho - Válvulas de Control | 190d | 2026-08-20 | 2027-02-25 | GCI1040 | 44d | 0d | Lun_Dom_Sin_Feriado |  |  | A&B | 03 | 06 |  |  |
| FDI1040 |  | Fabricación y despacho - Instrumentos / transmisores / medidores | 168d | 2026-08-26 | 2027-02-09 | GCI1050 | 124d | 94d | Lun_Dom_Sin_Feriado |  |  | A&B | 03 | 06 |  |  |
| FDI1020 |  | Fabricación y despacho - Cables de Instrumentos | 174d | 2026-10-07 | 2027-03-29 | GCI1020 | 57d | 4d | Lun_Dom_Sin_Feriado |  |  | A&B | 03 | 06 |  |  |
| FDI1140 |  | Fabricación y despacho - Cables de Instrumentos Rev.1 | 159d | 2027-01-11 | 2027-06-19 | GCI1130 | 134.05d | 58.05d | Lun_Dom_Sin_Feriado |  |  | A&B | 03 | 06 |  |  |
|  | 6 | **SEGURIDAD EN EL DISEÑO** |  |  |  |  |  |  |  |  |  |  |  |  |  |  |
|  | 7 | **MECANICA** |  | 2025-12-05 | 2027-06-29 |  |  |  |  |  |  |  |  |  |  |  |
|  | 1 | **Tanques** |  | 2025-12-05 | 2027-03-02 |  |  |  |  |  |  |  |  |  |  |  |
| FDM1000 |  | Ing. Detalle p/montaje, provisión y mecanizado de chapas p/ Tanque* Agua de Inyección - TKAZ-24220 A | 120d | 2025-12-05 | 2026-04-03 |  | 757d |  | Lun_Dom_Sin_Feriado |  | FUERA NUEVO ALCANCE | B | 1 | 10 | M- |  |
| FDM1002 |  | Ing. Detalle p/montaje, provisión y mecanizado de chapas p/ Tanque* Agua de Inyección - TKAZ-24220 B | 85d | 2025-12-05 | 2026-02-27 |  | 792d |  | Lun_Dom_Sin_Feriado |  | FUERA NUEVO ALCANCE | B | 1 | 10 | M- |  |
| FDM1030 |  | Ing. Detalle p/montaje, provisión y mecanizado de chapas p/ Tanque* de Almacenamiento de Condensado TKAY-23110 A | 120d | 2025-12-05 | 2026-04-03 |  | 757d |  | Lun_Dom_Sin_Feriado |  | FUERA NUEVO ALCANCE | B | 1 | 10 | M- |  |
| FDM1050 |  | Ing. Detalle, fabricación y despacho de Tanque- de Recuperacion de Flotados - TKZZ-24440 | 300d | 2025-12-05 | 2026-09-30 |  | 577d |  | Lun_Dom_Sin_Feriado |  | FUERA NUEVO ALCANCE | B | 1 | 10 | M- |  |
| FDM1060 |  | Fabricación y despacho - Tanques de aceite para Motores & Compresores (TKBE-90410 & TKBE-90440) | 180d | 2025-12-05 | 2026-06-02 |  | 697d |  | Lun_Dom_Sin_Feriado |  | FUERA NUEVO ALCANCE | A | 1 | 10 | M- |  |
| FDM1070 |  | Fabricación y despacho - Sumideros PRFV | 240d | 2025-12-05 | 2026-08-01 |  | 637d |  | Lun_Dom_Sin_Feriado |  | REVISAR | A | 1 | 10 | M-RIRE |  |
| FDM1090 |  | Ing. Detalle, fabricación y despacho de Tanque- de Glicol - TKZZ-98110 | 300d | 2025-12-05 | 2026-09-30 |  | 577d |  | Lun_Dom_Sin_Feriado |  | FUERA NUEVO ALCANCE | A | 1 | 10 | M- |  |
| FDM1040 |  | Ing. Detalle, fabricación y despacho de Tanque- Cónico de Efluentes - TKBA-24410 A | 300d | 2026-05-07 | 2027-03-02 | GCM1110 | 138d | 0d | Lun_Dom_Sin_Feriado |  |  | A | 05 | 03 | M-RIRE |  |
| FDM1042 |  | Ing. Detalle, fabricación y despacho de Tanque- Cónico de Efluentes - TKBA-24410 B | 300d | 2026-05-07 | 2027-03-02 | GCM1110 | 149d | 12d | Lun_Dom_Sin_Feriado |  |  | A | 05 | 03 | M-RIRE |  |
| FDM1020 |  | Ing. Detalle p/montaje, provisión y mecanizado de chapas p/ Tanque* Skimmer - TKAZ-24350 | 91d | 2026-05-30 | 2026-08-28 | GCM1100 | 37d | 0d | Lun_Dom_Sin_Feriado | Distibucion Venta [1000000 h] |  | B | 05 | 03 | M- |  |
| FDM1080 |  | Ing. Detalle p/montaje, provisión y mecanizado de chapas p/ Tanque* de Slop - TKBA-97140 | 57d | 2026-05-30 | 2026-07-25 | GCM1100 | 184d | 89d | Lun_Dom_Sin_Feriado | Distibucion Venta [1000000 h] |  | B | 05 | 03 | M- |  |
| FDM1022 |  | Ing. Detalle p/montaje, provisión y mecanizado de chapas p/ Tanque* Pulmón de Agua (Internos Skimmer) - TKAZ-24330 | 85d | 2026-08-29 | 2026-11-21 | GCM1100, FDM1020 | 53d | 25d | Lun_Dom_Sin_Feriado | Distibucion Venta [1000000 h] |  | B | 05 | 03 | M- |  |

| ID | WBS | Activity | Duration | Start | Finish | Predecessors | Total float | Free float | Calendar | CAMPO DE TRABAJO | CAMPO DE TRABAJO 2 | ALCANCE | 24607 - WBS Cliente | 24607 - WBS Cliente RA |
| --- | --- | --- | --- | --- | --- | --- | --- | --- | --- | --- | --- | --- | --- | --- |
|  | 2 | **Equipos rotativos** |  | 2025-12-05 | 2027-06-28 |  |  |  |  |  |  |  |  |  |
| FDM1130 |  | Fabricación y despacho - Bombas de Desarenado - PAZ-24240 A/B | 300d | 2025-12-05 | 2026-09-30 |  | 577d |  | Lun_Dom_Sin_Feriado | RIRE | FUERA NUEVO ALCANCE | B | 1 | 10 |
| FDM1190 |  | Fabricación y despacho - Bomba de tanque de flotados PZZ-24450 A/B | 250d | 2025-12-05 | 2026-08-11 |  | 627d |  | Lun_Dom_Sin_Feriado | M-RIRE |  | B | 1 | 10 |
| FDM1200 |  | Fabricación y despacho - Bombas de Aceite Motores & Compresores PBE-90430 & PBE-90460 | 220d | 2025-12-05 | 2026-07-12 |  | 657d |  | Lun_Dom_Sin_Feriado | RIRE | FUERA NUEVO ALCANCE | A | 1 | 10 |
| FDM1260 |  | Fabricación y despacho - Bomba de desagote de emergencia PZZ-97220 A/B | 305d | 2025-12-05 | 2026-10-05 |  | 572d |  | Lun_Dom_Sin_Feriado |  | FUERA NUEVO ALCANCE | B | 1 | 10 |
| FDM1270 |  | Fabricación y despacho - Bomba de carga de Glicol PBE-98120 | 220d | 2025-12-05 | 2026-07-12 |  | 657d |  | Lun_Dom_Sin_Feriado | RIRE | FUERA NUEVO ALCANCE | A | 1 | 10 |
| FDM1500 |  | Fabricación y despacho - Bomba de agua de lavado PZZ-99230 | 250d | 2025-12-05 | 2026-08-11 |  | 627d |  | Lun_Dom_Sin_Feriado | RIRE | FUERA NUEVO ALCANCE | A | 1 | 10 |
| FDM1510 |  | Fabricación y despacho - Bombas de Agua de Drenaje a Tratamiento PZZ-97230 A/B | 305d | 2025-12-05 | 2026-10-05 |  | 572d |  | Lun_Dom_Sin_Feriado |  | FUERA NUEVO ALCANCE | B | 1 | 10 |
| FDM1150 |  | Fabricación y despacho - Bomba de agua tratada PAZ-24390 A/B/C | 305d | 2026-06-30 | 2027-04-30 | GCM1270 | 86d | 0d | Lun_Dom_Sin_Feriado | RIRE |  | B | 05 | 03 |
| FDM1210 |  | Fabricación y despacho - Bomba de tanque sumidero de Hot Oil PBE-94250 | 218d | 2026-06-30 | 2027-02-02 | GCM1320 | 232d | 76d | Lun_Dom_Sin_Feriado | M-RIRE |  | A | 05 | 03 |
| FDM1280 |  | Fabricación y despacho - Bombas de Drenajes PAY-97110 A/B AJUST | 329d | 2026-08-04 | 2027-06-28 | GCM1390 | 34d | 0d | Lun_Dom_Sin_Feriado | RIRE | FUERA NUEVO ALCANCE | A | 05 | 03 |
| FDM1140 |  | Fabricación y despacho - Bombas Transferencia - PBM-24340 A/B | 250d | 2026-08-27 | 2027-05-03 | GCM1330 | 69d | 0d | Lun_Dom_Sin_Feriado | RIRE |  | B | 05 | 03 |
| FDM1170 |  | Fabricación y despacho - Bomba de tanques de efluentes PAZ-24430 A/B | 250d | 2026-08-27 | 2027-05-03 | GCM1330 | 49d | 0d | Lun_Dom_Sin_Feriado | M- |  | A | 05 | 03 |
| FDM1180 |  | Fabricación y despacho - Bomba de skimmeado PBA-24420 A/B | 250d | 2026-08-27 | 2027-05-03 | GCM1330 | 83d | 14d | Lun_Dom_Sin_Feriado | RIRE |  | B | 05 | 03 |
| FDM1220 |  | Fabricación y despacho - Bomba de KOD PAY-95140 A/B | 250d | 2026-08-27 | 2027-05-03 | GCM1330 | 146d | 69d | Lun_Dom_Sin_Feriado | RIRE |  | B | 05 | 03 |
| FDM1230 |  | Fabricación y despacho - Bomba de sumideros PAY-97320 A/B | 250d | 2026-08-27 | 2027-05-03 | GCM1330 | 130d | 0d | Lun_Dom_Sin_Feriado | RIRE |  | A | 05 | 03 |
| FDM1240 |  | Fabricación y despacho - Bombas de Agua de Tanque de Slop PBA-97150 A/B | 250d | 2026-08-27 | 2027-05-03 | GCM1330 | 69d | 0d | Lun_Dom_Sin_Feriado | M-RIRE |  | B | 05 | 03 |
| FDM1250 |  | Fabricación y despacho - Bombas de Condensado de Tanque de Slop PBA-97160 A/B | 250d | 2026-08-27 | 2027-05-03 | GCM1330 | 83d | 14d | Lun_Dom_Sin_Feriado | M- |  | B | 05 | 03 |
|  | 3 | **Equipos estaticos y recipientes** |  | 2026-06-29 | 2027-06-29 |  |  |  |  |  |  |  |  |  |
|  | 2 | **Filtros** |  | 2026-07-23 | 2027-06-10 |  |  |  |  |  |  |  |  |  |
| FDM1320 |  | Fabricación y despacho - Filtro de bomba Hot Oil FAJ-94260 | 217d | 2026-07-23 | 2027-02-24 | GCM1140 | 188d | 106d | Lun_Dom_Sin_Feriado |  |  | A | 05 | 03 |
| FDM1310 |  | Fabricación y despacho - Filtros FAJ-24250 & FAJ-24230 A/B | 210d | 2026-11-13 | 2027-06-10 | GCM1130 | 60d | 0d | Lun_Dom_Sin_Feriado | RIRE |  | B | 05 | 03 |
|  | 1 | **Estaticos y paquetes** |  | 2026-06-29 | 2027-06-29 |  |  |  |  |  |  |  |  |  |
| FDM1490 |  | Fabricación y despacho - Recipientes enterrados | 248d | 2026-06-29 | 2027-03-03 | GCM1470 | 145d | 0d | Lun_Dom_Sin_Feriado | M-RIRE |  | B | 05 | 03 |
| FDM1410 |  | Fabricación y despacho - Separador de condensados de EPF VBD-10240 | 247d | 2026-07-20 | 2027-03-23 | GCM1090 | 139d | 0d | Lun_Dom_Sin_Feriado | RIRE |  | A | 05 | 03 |
| FDM1380 |  | Fabricación y despacho - Skid generación de nitrógeno SKZZ-92020/30 | 180d | 2026-07-30 | 2027-01-25 | GCM1190 | 149d | 1d | Lun_Dom_Sin_Feriado | RIRE |  | A | 05 | 03 |
| FDM1460 |  | Fabricación y despacho - Trim Cooler | 244d | 2026-07-31 | 2027-03-31 | GCM1230 | 99d | 0d | Lun_Dom_Sin_Feriado |  |  | A | 05 | 03 |
| FDM1450 |  | Fabricación y despacho - Pulmón de Nitrógeno VBE-92010 | 225d | 2026-08-11 | 2027-03-23 | GCM1460 | 180d | 0d | Lun_Dom_Sin_Feriado |  |  | A | 05 | 03 |
| FDM1400 |  | Fabricación y despacho - Skid de inyección de químicos (tanque + bombas) | 189d | 2026-08-20 | 2027-02-24 | GCM1490 | 214d | 0d | Lun_Dom_Sin_Feriado | M-RIRE | REVISAR | A | 05 | 03 |
| FDM1440 |  | Fabricación y despacho - Pulmones de Aire de Arranque - VBE-91030 y de Instrumentos VBE-91020 | 248d | 2026-09-03 | 2027-05-08 | GCM1450 | 134d | 1d | Lun_Dom_Sin_Feriado | RIRE |  | A | 05 | 03 |
| FDM1430 |  | Fabricación y despacho - Calentadores eléctricos EAP-95130 A/B | 250d | 2026-10-23 | 2027-06-29 | GCM1440 | 77d | 0d | Lun_Dom_Sin_Feriado | RIRE |  | A | 05 | 03 |
| FDM1420 |  | Fabricación y despacho - Desgasificadores presurizado / atmosférico DBM-24310 / DBM-24320 | 240d | 2026-10-30 | 2027-06-26 | GCM1210 | 78d | 1d | Lun_Dom_Sin_Feriado | RIRE |  | B | 05 | 03 |
| FDM1470 |  | Fabricación y despacho - KOD | 240d | 2026-10-30 | 2027-06-26 | GCM1220 | 80d | 3d | Lun_Dom_Sin_Feriado | RIRE |  | B | 05 | 03 |

| ID | WBS | Activity | Type | Duration | Start | Finish | Predecessors | Total float | Free float | Calendar | Resources | CAMPO DE TRABAJO | ALCANCE | 24607 - WBS Cliente | 24607 - WBS Cliente RA | CAMPO DE TRABAJO 2 | CAMPO DE TRABAJO 3 | INI ESTA MC | FIN EST MC |
| --- | --- | --- | --- | --- | --- | --- | --- | --- | --- | --- | --- | --- | --- | --- | --- | --- | --- | --- | --- |
|  | 4 | **Equipos de izaje** |  |  |  |  |  |  |  |  |  |  |  |  |  |  |  |  |  |
|  | 8 | **PIPING** |  |  | 2026-04-15 | 2027-04-20 |  |  |  |  |  |  |  |  |  |  |  |  |  |
| FDP1000 |  | Fabricación y despacho - Material de Cañerías y Accesorios _ 1° MTO |  | 113d | 2026-04-15 | 2026-08-05 | GCP1000 | 1d |  | Lun_Dom_Sin_Feriado | Distibucion Venta [1000000 h] | PIPING | A&B | 06 | 04 |  |  |  |  |
| FDP1030 |  | Fabricación y despacho - Válvulas manuales |  | 278d | 2026-04-28 | 2027-01-30 | GCP1030 SS+40d, GCP1030 FF | 0d |  | Lun_Dom_Sin_Feriado |  | PIPING | A&B | 06 | 04 |  |  |  |  |
| FDP1001 |  | Fabricación y despacho - Material de Cañerías y Accesorios al 30% definicion MAQ (anterior 2° MTO) |  | 150d | 2026-05-06 | 2026-10-02 | GCP1001, FDP1002 FF | 10d | 0d | Lun_Dom_Sin_Feriado | Distibucion Venta [1000000 h] | PIPING | A&B | 06 | 04 |  |  |  |  |
| FDP1040 |  | Prefabricado de Cañerías en Taller |  | 340d | 2026-05-16 | 2027-04-20 | FDP1030 FF+80d, FDP1001 FF+150d, FDP1000 SS+30d, PQPILY00 SS+30d, PQPILY10 SS+30d, PQPILY20 SS+30d, PQPILY30 SS+30d, PQPILY40 SS+30d, PQPILY50 SS+30d, PQPILY60 SS+30d, PQPILY70 SS+30d, FDP1011 FF+6d, FDP1010 FF+30d, PQPILY95 SS+45d, PQPILY90 SS+30d, PQPILY80 SS+30d, PQPILY90 FF, PQPILY95 FF, PQPILY00 FF, PQPILY80 FF, PQPILY10 FF, PQPILY20 FF, PQPILY30 FF, PQPILY40 FF, PQPILY50 FF, PQPILY60 FF, PQPILY70 FF, PQPILY125 SS, PQPILY125 FF, FDP1001 SS, FDP1010 SS-130d, FDP1011 SS-260d, FDP1030 SS, GCP1021, PQPILY91 SS, PQPILY91 FF, PQPILY92 SS, PQPILY92 FF, FDP1000 FF | 0d |  | Lun_Dom_Sin_Feriado | Distibucion Venta [1000000 h] | M-PIPING 1 | A&B | 08 | 01 | PREPI |  |  |  |
|  | 10 | **ESTRUCTURA METÁLICA** |  |  | 2026-04-14 | 2026-09-21 |  |  |  |  |  |  |  |  |  |  |  |  |  |
| FDS1000 |  | Ingeniería de taller, provisión material y fabricación y despacho de Estructuras Metálicas |  | 160d | 2026-04-14 | 2026-09-21 | GCS1000, PQPILY120 FF-125d, PQPILY120 SS | 44d | 0d | Lun_Dom_Sin_Feriado | Distibucion Venta [1000000 h] |  | A&B | 07 | 01 | PREEEMM |  |  |  |
|  | 4 | **CONSTRUCCIÓN** |  |  | 2025-06-30 | 2028-04-29 |  |  |  |  |  |  |  |  |  |  |  |  |  |
|  | 10 | **MOVILIZACIÓN Y DESMOVILIZACIÓN** |  |  | 2025-12-05 | 2028-04-29 |  |  |  |  |  |  |  |  |  |  |  |  |  |
| VT1000 |  | INGENIERÍA | level of effort | 402d | 2025-12-05 | 2027-04-15 | PQPRLY20 SS, PQPRLY50 FF, PQSDLY40 FF, CONSDD01 SS, CONMEC01 SS, CONPIP01 SS, CONCIV01 SS, CONELE01 SS, CONINS01 SS, PQPILY116 FF, PQCILY23 FF, PQELLY90 FF, PQINLY80 FF, CONCIV01 FF, CONELE01 FF, CONINS01 FF, CONMEC01 FF, CONPIP01 FF, CONSDD01 FF, PQCILY23 SS, PQELLY90 SS, PQINLY80 SS, PQPILY116 SS, PQPRLY20 FF, PQPRLY50 SS, PQSDLY40 SS | 0d |  |  | Distibucion Venta [1000000 h] |  | A&B | 06 | 09 |  |  |  |  |
| VT1020 |  | P - ELE & I&C _ 1 | level of effort | 356d | 2026-03-14 | 2027-05-17 | FDE1140 FF, FDE1030 SS, FDI1060 FF, FDE1030 FF, FDE1140 SS, FDI1060 SS | 112d | 0d |  | Distibucion Venta [1000000 h] |  | A&B | 06 | 09 |  |  |  |  |
| VT1040 |  | P - MATERIALES | level of effort | 287d | 2026-03-14 | 2027-02-25 | FDE1090 FF, FDP1000 SS, FDE1030 SS, FDE1010 FF, FDE1010 SS, FDE1030 FF, FDE1090 SS, FDP1000 FF | 28d | 0d |  | Distibucion Venta [1000000 h] |  | A&B | 06 | 09 |  |  |  |  |
| CG00010 |  | Movilización Primaria AESA (Gestión ingresos / movilización oficinas - comedor - baños/vestuarios primarios) |  | 40d | 2026-04-10 | 2026-05-26 | SUS001, MG1010 SS, TA1100 | 0d |  |  | Distibucion Venta [1000000 h] |  | A&B | 04 | 01 |  | MOV |  |  |
| CG00020 |  | Movilización Subcontratista O.Civil (Gestión ingresos / movilización herramientas - materiales - equipos primarios) |  | 20d | 2026-05-27 | 2026-06-18 | GCC1000, CG00010 | 0d |  |  |  |  | A&B | 04 | 01 |  | MOV | 2025-10-15 | 2025-11-15 |
| VT1030 |  | P - ELE & I&C _ 2 (Shelters) | level of effort | 326d | 2026-05-29 | 2027-06-26 | FDE1103 FF, FDE1103 SS, FDE1104 SS, FDE1104 FF, TA1124 FF | 16d | 0d |  | Distibucion Venta [1000000 h] |  | A&B | 06 | 09 |  |  |  |  |
| CG00030 |  | Movilización Complementaria AESA (ampliación de capacidades, talleres/almacenes, equipos para montajes) |  | 139d | 2026-06-19 | 2026-11-27 | CG00020 | 76d | 0d |  | Distibucion Venta [1000000 h] |  | A&B | 04 | 01 |  | MOV |  |  |
| HH1000 |  | Obra Civil | level of effort | 222d | 2026-06-19 | 2027-03-18 | CC018360 FF, CC018020 SS, CC018020 FF, CC018360 SS | 12d | 0d |  |  |  | A&B | 06 | 09 |  |  |  |  |
| VT1090 |  | H°A° Premoldeado - MONTAJE | level of effort | 201d | 2026-06-19 | 2027-02-22 | CDU511 SS, CC011050 SS, CC012070 SS, CC013200 SS, CC016310 SS, CC014200 SS, CC014300 SS, CC019030 SS, CC020010 SS, CC017150 SS, CC011190, CC012100, CC013100, CC014100, CC015100, CC016300, CC017200, CC018210, CC019040, CC011050 FF, CC012070 FF, CC013200 FF, CC014200 FF, CC014300 FF, CC016310 FF, CC017150 FF, CC019030 FF, CC020010 FF, CDU511 FF | 6d | 0d |  | Distibucion Venta [1000000 h] |  | A&B | 06 | 09 |  |  |  |  |
| VT1110 |  | H°A° & Otros | level of effort | 335d | 2026-06-19 | 2027-07-28 | CC018360 SS, CC018360 FF, CC011210 SS, CC011220 SS, CC011230 SS, CC011140 SS, CC011150 SS, CC011160 SS, CC011240 SS, CC012050 SS, CC012110 SS, CC012020 SS, CC012080 SS, CC013030 SS, CC013040 SS, CC013050 SS, CC013060 SS, CC013110 SS, CC013080 SS, CC012040 SS, CC013210 SS, CC013220 SS, CC013070 SS, CC014010 SS, CC014040 SS, CC014110 SS, CC014050 SS, CC014030 SS, CC015021 SS, CC017100 SS, CC017090 SS, CC018320 SS, CC016080 SS, CC016072 SS, CC016320 SS, CC016110 SS, CC018020 SS, CC012060 SS, CC013090 SS, CC014070 SS, CC014080 SS, CC017030 SS, CC017040 SS, CC017050 SS, CC017160 SS, CC017170 SS, CC018022 SS, CC018040 SS, CC018120 SS, CC018130 SS, CC018220 SS, CC018305 SS, CC018330 SS, CC018340 SS, CC018365 SS, CC018370 SS, CC018380 SS, CC019010 SS, CC019020 SS, CC020020 SS, CC020030 SS, CC011140 FF, CC011150 FF, CC011160 FF, CC011210 FF, CC011220 FF, CC011230 FF, CC011240 FF, CC012020 FF, CC012040 FF, CC012050 FF, CC012060 FF, CC012080 FF, CC012110 FF, CC013030 FF, CC013040 FF, CC013050 FF, CC013060 FF, CC013070 FF, CC013080 FF, CC013090 FF, CC013110 FF, CC013210 FF, CC013220 FF, CC014010 FF, CC014030 FF, CC014040 FF, CC014050 FF, CC014070 FF, CC014080 FF, CC014110 FF, CC015021 FF, CC016072 FF, CC016080 FF, CC016110 FF, CC016320 FF, CC017030 FF, CC017040 FF, CC017050 FF, CC017090 FF, CC017100 FF, CC017160 FF, CC017170 FF, CC018020 FF, CC018022 FF, CC018040 FF, CC018120 FF, CC018130 FF, CC018220 FF, CC018305 FF, CC018320 FF, CC018330 FF, CC018340 FF, CC018365 FF, CC018370 FF, CC018380 FF, CC019010 FF, CC019020 FF, CC020020 FF, CC020030 FF | 12d | 0d |  | Distibucion Venta [1000000 h] |  | A&B | 06 | 09 |  |  |  |  |
| VT1010 |  | P - EQUIPOS DE PROCESO | level of effort | 300d | 2026-06-30 | 2027-06-28 | FDM1280 FF, FDM1150 SS | 29d | 0d |  | Distibucion Venta [1000000 h] |  | A&B | 06 | 09 |  |  |  |  |
| HH4000 |  | Andamios | level of effort | 403d | 2026-09-17 | 2028-01-13 | CM019040 SS, CS023200 SS, CS022070 SS, CM011031 FF, CM011011 FF, CDW1000 FF, CDW1000 SS, CM011011 SS, CM011031 SS, CM019040 FF, CS022070 FF, CS023200 FF | 0d |  |  | HH Andamios [37360 h] |  | A&B | 06 | 09 |  |  |  |  |
| HH3000 |  | Montaje Electricidad Resto | level of effort | 350d | 2026-09-22 | 2027-11-17 | CDE1110 SS, CE011130 FF, CE012030 FF, CE013030 FF, CDE1110 FF, CE011130 SS, CE012030 SS, CE013030 SS | 49d | 0d |  |  |  | A&B | 06 | 09 |  |  |  |  |
| HH2000 |  | Montaje de Cañerías | level of effort | 254d | 2026-10-03 | 2027-08-09 | CP018022 FF, CP015010 SS, CP015010 FF, CP018022 SS | 12d | 0d |  |  |  | A&B | 06 | 09 |  |  |  |  |
| VT1170 |  | MONTAJE MECÁNICA - PROCESOS | level of effort | 235d | 2026-10-23 | 2027-08-06 | CM013010 SS, CM011230 FF, CM011210 SS, CM011210 FF, CM011230 SS, CM013010 FF | 48d | 0d |  | Distibucion Venta [1000000 h] |  | A&B | 06 | 09 |  |  |  |  |
| VT1160 |  | MONTAJE MECÁNICA - ROTANTES | level of effort | 215d | 2026-10-24 | 2027-07-15 | CM018320 SS, CM016080 SS, CM013071 FF, CM013071 SS, CM016080 FF, CM018320 FF | 62d | 0d |  | Distibucion Venta [1000000 h] |  | A&B | 06 | 09 |  |  |  |  |
| HH2500 |  | Montaje Electricidad PAT & Canalizaciones | level of effort | 172d | 2027-01-04 | 2027-07-22 | CE011120 FF, CE012020 FF, CE013020 FF, CE011110 SS, CE011110 FF, CE011120 SS, CE012020 SS, CE013020 SS | 20d | 0d |  |  |  | A&B | 06 | 09 | PAT |  |  |  |
| HH3500 |  | Mtje I&C | level of effort | 251d | 2027-03-06 | 2027-12-23 | CI015010 SS, CI014010 SS, CI011130 FF, CI012030 FF, CI013030 FF, CI018010 SS, CI011130 SS, CI012030 SS, CI013030 SS, CI014010 FF, CI015010 FF, CI018010 FF | 6d | 0d |  |  |  | A&B | 06 | 09 |  |  |  |  |
| VT1050 |  | MOV. SUELOS | level of effort | 253d | 2027-03-25 | 2028-01-13 | CC018130 FF, CDC1110 SS, CC018130 SS, CDC1110 FF | 15d | 0d |  | Distibucion Venta |  | A&B | 06 | 09 |  |  |  |  |
| HH1500 |  | Montaje de Equipos Mecánicos | level of effort | 93d | 2027-03-30 | 2027-07-15 | CM019040 SS, CM013071 FF, CM013071 SS, CM019040 FF | 62d | 0d |  |  |  | A&B | 06 | 09 |  |  |  |  |
| VT1150 |  | MONTAJE MECÁNICA - ESTÁTICOS | level of effort | 89d | 2027-03-30 | 2027-07-10 | CM019040 SS, CM019010 FF, CM019010 SS, CM019040 FF | 66d | 0d |  | Distibucion Venta [1000000 h] |  | A&B | 06 | 09 |  |  |  |  |
| VT1130 |  | Edificios - Shelters ELE - I&C | level of effort | 110d | 2027-04-16 | 2027-08-21 | CE018050 FF, CI013002 SS, CE014050 FF, CE014050 SS, CE018050 SS, CI013002 FF | 16d | 0d |  | Distibucion Venta [1000000 h] |  | A&B | 06 | 09 |  |  |  |  |
| VT1120 |  | Edificios - Tinglados | level of effort | 35d | 2027-05-18 | 2027-06-26 | CS027020 SS, CS027020 FF | 67d | 0d |  | Distibucion Venta [1000000 h] |  | A&B | 06 | 09 |  |  |  |  |
| VT1260 |  | ELECTRICIDAD - TABLEROS Y EQUIPOS ELECTRICOS | level of effort | 48d | 2027-06-28 | 2027-08-21 | CE018050 SS, CE014060 FF, CE014050 SS | 16d | 0d |  | Distibucion Venta [1000000 h] |  | A&B | 06 | 09 |  |  |  |  |
| HH0500 |  | MDS _ Perfilado y nivelación sectores (SOLO CAMINOS) | level of effort | 50d | 2027-11-17 | 2028-01-13 | CDC1110 FF, CDC1110 SS | 15d | 0d |  |  |  | A&B | 06 | 09 |  |  |  |  |
| HH4500 |  | Asistencia a PEM / Performance / Estabilización Instalaciones | level of effort | 78d | 2028-01-31 | 2028-04-29 | CDW1020 SS, CDW1040 FF, CDW1020 FF, CDW1040 SS | 0d |  |  | HH Comisionado [11183 h] |  | A&B | 06 | 09 |  |  |  |  |
| VT1340 |  | ASISTENCIA A PUESTA EN MARCHA (incl. Asist. Performance Test & Estabilizac.) | level of effort | 78d | 2028-01-31 | 2028-04-29 | CDW1040 FF, CDW1030 FF, CDW1020 SS, CDW1020 FF, CDW1030 SS, CDW1040 SS | 0d |  |  | Distibucion Venta [1000000 h] |  | A&B | 06 | 09 |  |  |  |  |
| CG00050 |  | Desmovilización |  | 77d | 2028-02-01 | 2028-04-29 | CDW1040 FF, A10290, CDC1180, TA1000 | 0d |  |  | Distibucion Venta [1000000 h] |  | A&B | 04 | 01 |  |  |  |  |

| ID | WBS | Activity | Type | Duration | Start | Finish | Predecessors | Total float | Free float | Calendar | Resources | CAMPO DE TRABAJO | LAYOUT | ALCANCE | 24607 - WBS Cliente | 24607 - WBS Cliente RA | CAMPO DE TRABAJO 2 | INI ESTA MC | FIN EST MC | CAMPO DE TRABAJO 3 |
| --- | --- | --- | --- | --- | --- | --- | --- | --- | --- | --- | --- | --- | --- | --- | --- | --- | --- | --- | --- | --- |
|  | 9 | **MOVIMIENTO DE SUELO** |  |  | 2025-12-05 | 2027-07-21 |  |  |  |  |  |  |  |  |  |  |  |  |  |  |
| CDU0500 |  | Movimiento de Suelos _ Perfilado y nivelación sectores - Tanques Mayores (TKAZ-24220 / 24350 / 24330 / 23110)(Eliminada) |  | 0d | 2025-12-05 | 2025-12-05 |  | 728d |  |  |  | M-CIVIL | GENERAL | B | 07 | 11 |  |  |  |  |
| CDU0510 |  | Movimiento de Suelos _ Perfilado y nivelación resto de áreas (Eliminada) |  | 0d | 2025-12-05 | 2025-12-05 |  | 728d |  |  |  | CIVIL | GENERAL | A&B | 07 | 11 |  |  |  |  |
| CDU1000 |  | MDS _ Excavación | level of effort | 329d | 2026-06-19 | 2027-07-21 | CC011160 FF, CC019010 SS, CC018365 FF, CC016110 FF, CC013200 SS, CC013100 FF, CC012070 SS, CC012070 FF, CC011210 SS, CC011050 SS, CDU514 SS, CE018022 FF, CC014030 SS, CC012060 FF, CC019040 FF, CC018020 SS, CC020010 SS, CC016310 SS, CC016320 SS, CC020020 SS, CC017160 SS, CC014090, CC019050 SS, CC019050 FF, CC016320 FF, CC016310 FF, CC017160 FF, CC020010 FF, CC020020 FF, CC011050 FF, CC011160 SS, CC011210 FF, CC012060 SS, CC013100 SS, CC013200 FF, CC014030 FF, CC018020 FF, CC018365 SS, CC019010 FF, CC019040 SS, CDU514 FF, CE018022 SS | 12d | 0d |  | Distibucion Venta [1275194 h] |  |  | A&B | 06 | 09 |  |  |  |  |
| CDU1030 |  | MDS _ Relleno y compactación | level of effort | 329d | 2026-06-19 | 2027-07-21 | CC011160 FF, CC014030 SS+80d, CDU514 SS+80d, CC012060 FF, CE018022 FF, CC011050 SS+80d, CC011210 SS+80d, CC012070 SS+80d, CC012050 FF, CC013200 SS+80d, CC013100 FF, CC018365 FF, CC016110 FF, CC015021 SS+80d, CC014200 SS+80d, CC014040 FF, CC017150 SS+80d, CC019040 FF, CC018020 SS, CC011050 FF, CC011160 SS, CC011210 FF, CC012050 SS, CC012060 SS, CC012070 FF, CC013100 SS, CC013200 FF, CC014030 FF, CC014040 SS, CC014200 FF, CC015021 FF, CC016110 SS, CC017150 FF, CC018020 FF, CC018365 SS, CDU514 FF, CE018022 SS | 12d | 0d |  | Distibucion Venta [1326613 h] |  |  | A&B | 06 | 09 |  |  |  |  |
|  | 1 | **CIVIL** |  |  | 2025-12-05 | 2028-01-13 |  |  |  |  |  |  |  |  |  |  |  |  |  |  |
| CC011100 |  | Fundaciones Bombas de Aceite Motores & Compresores PBE-90430 & PBE-90460 |  | 20d | 2025-12-05 | 2026-01-10 |  | 708d |  |  |  | CIVIL | COMPRESION | A | 1 | 10 | FUERA NUEVO ALCANCE |  |  |  |
| CC011110 |  | Fundaciones Módulos PROPAK 942 (EAP-94201 A) ELIMINAR |  | 20d | 2025-12-05 | 2026-01-10 |  | 708d |  |  |  | M-CIVIL | COMPRESION | A | 1 | 10 | FUERA NUEVO ALCANCE |  |  |  |
| CC011120 |  | Fundación Bomba Carga de Glicol - PBE-98120 |  | 20d | 2025-12-05 | 2026-01-10 |  | 708d |  |  |  | CIVIL | COMPRESION | A | 1 | 10 | FUERA NUEVO ALCANCE |  |  |  |
| CC011130 |  | Fundación Tanque- de Glicol - TKZZ-98110 |  | 40d | 2025-12-05 | 2026-02-03 |  | 688d |  |  |  | M-CIVIL | COMPRESION | A | 1 | 10 | FUERA NUEVO ALCANCE |  |  |  |
| CC012001 |  | Fundaciones de Equipos & SKID para Unidad de Procesamiento de Gas #1 - AREA 140 _ Entrega Pluspetrol | milestone | 0d | 2025-12-05 | 2025-12-05 | MG1000 SF | 257d | 231d | Lun_Dom_Sin_Feriado |  |  |  | A | 01 | 01 | OS -004 |  |  |  |
| CC016050 |  | Fundaciones y Cisterna para Sumidero y Bombas de Drenajes Abiertos Fríos VBH-97120 / PAY-97120 A/B |  | 65d | 2025-12-05 | 2026-03-04 |  | 663d |  |  |  | CIVIL | ALMAC. CONDENSADO | B | 1 | 10 | FUERA NUEVO ALCANCE |  |  |  |
| CC016070 |  | Fundaciones y pavimento recinto de Bombas Booster de Condensado PAY-23140 |  | 45d | 2025-12-05 | 2026-02-09 |  | 683d |  |  |  | CIVIL | ALMAC. CONDENSADO | B | 1 | 10 | FUERA NUEVO ALCANCE |  |  |  |
| CC017010 |  | Fundación de Puente de Medición/Servicios (ERM) -RECUPERADO- ELIMINAR |  | 45d | 2025-12-05 | 2026-02-09 |  | 683d |  |  |  | CIVIL | SALIDA PLANTA | A | 1 | 10 | CDU1000 |  |  |  |
| CC017020 |  | Fundaciones de Módulo MZZ-99240 AJUST |  | 25d | 2025-12-05 | 2026-01-16 |  | 703d |  |  |  | CIVIL | SALIDA PLANTA | A | 1 | 10 | FUERA NUEVO ALCANCE |  |  |  |
| CC017060 |  | Construcción de Fosa de Lodos MZZ-99150 |  | 50d | 2025-12-05 | 2026-02-14 |  | 678d |  |  |  |  |  | A | 1 | 10 |  |  |  |  |
| CC017070 |  | Fundaciones de SKIDs Inyección de Químicos SKZZ-99104/99110/99016 AJUST |  | 40d | 2025-12-05 | 2026-02-03 |  | 688d |  |  |  | CIVIL | SALIDA PLANTA | A | 1 | 10 | FUERA NUEVO ALCANCE |  |  |  |
| CC017080 |  | Fundación de Bomba de Agua Cruda PZZ-99140 |  | 15d | 2025-12-05 | 2026-01-05 |  | 713d |  |  |  | CIVIL | SALIDA PLANTA | A | 1 | 10 | FUERA NUEVO ALCANCE |  |  |  |
| CC018250 |  | Fundaciones Sala Eléctrica #4 |  | 79d | 2025-12-05 | 2026-03-20 |  | 649d |  |  |  | CIVIL | TRAT. AGUA | B | 1 | 10 | FUERA NUEVO ALCANCE |  |  |  |
| CC018280 |  | Fundaciones de Sala INS-008 |  | 60d | 2025-12-05 | 2026-02-26 |  | 668d |  |  |  | CIVIL | TRAT. AGUA | B | 1 | 10 | FUERA NUEVO ALCANCE |  |  |  |
| CC018310 |  | Fundaciones de Filtros FAJ-24250 & FAJ-24230 A/B AJUST |  | 30d | 2025-12-05 | 2026-01-22 |  | 698d |  |  |  | CIVIL | TRAT. AGUA | B | 1 | 10 | FUERA NUEVO ALCANCE |  |  |  |
| CC018350 |  | Fundaciones y pavimento recinto de Bombas de Tanque de Flotados - PZZ-24450 A/B |  | 45d | 2025-12-05 | 2026-02-09 |  | 683d |  |  |  | M-CIVIL | TRAT. AGUA | B | 1 | 10 |  |  |  |  |
| CC018390 |  | Fundaciones y Cisterna para Sumidero y Bombas de Drenajes Abiertos VBH-97130 & PAY-97130 A/B |  | 65d | 2025-12-05 | 2026-03-04 |  | 663d |  |  |  | CIVIL | TRAT. AGUA | B | 1 | 10 | FUERA NUEVO ALCANCE |  |  |  |
| CC018400 |  | Cámara y fundaciones de Bombas Desagote de Emergencia PZZ-97220 A/B y Agua de Drenaje a Tratamiento PZZ-97230 A/B |  | 75d | 2025-12-05 | 2026-03-16 |  | 653d |  |  |  | CIVIL | TRAT. AGUA | B | 1 | 10 | FUERA NUEVO ALCANCE |  |  |  |
| CDC1091 |  | Colocación Ignifugado - Fireproofing #1 |  | 215d | 2025-12-05 | 2026-08-26 |  | 513d |  |  |  | M-IGNI |  | A&B | 1 | 10 |  |  |  |  |
| CC017150 |  | Fundaciones de Sendas de cañerias E-O |  | 60d | 2026-06-19 | 2026-08-27 | PQCILY83 SS, PQCILY83 FF, CG00020 | 31d | 0d |  | HH Civil APRO [4794 h] | CIVIL | SALIDA PLANTA | A | 14 | 02 | CDU1000 |  |  |  |
| CDC1160 |  | Veredadas de hormigón | level of effort | 181d | 2026-06-19 | 2027-01-29 | CC011050 FF, CC012070 SS+60d, CC013200 SS+60d, CC017150 FF, CC017150 SS, CC013200 FF, CC012070 FF, CC011050 SS | 31d | 0d |  |  |  |  | A | 06 | 09 |  |  |  |  |
| CC013200 |  | Fundaciones de Sendas de cañeria N-S 001 (entre calles C, D y 3, 2) |  | 81d | 2026-07-22 | 2026-10-23 | CG00020 FS+28d, EDC10040 FS+31d, PQCILY30 | 0d |  |  | HH Civil APRO [4122 h] | CIVIL | UNID. CONDENSADO | A | 05 | 02 | CDU1000 | 2026-01-13 | 2026-05-31 | 2 |
| CC012070 |  | Fundaciones de Sendas de cañeria N-S 002 (entre calles E, C y 3, 4) |  | 81d | 2026-07-24 | 2026-10-26 | CG00020 FS+30d, EDC10040, PQCILY20, CC012001 | 22d | 0d |  | HH Civil APRO [4040 h] | CIVIL | UNID PROCESO GAS | A | 04 | 02 | CDU1000 | 2026-01-13 | 2026-05-31 | 1 |
| CC019010 |  | Fundaciones y pavimento recinto de Recipiente KOD - VBE-95120 |  | 45d | 2026-08-17 | 2026-10-07 | PQCILY70 SS+120d, PQCILY70 FF-55d, CDU511 SS+50d | 173d | 0d |  | HH Civil APRO [2036 h] | CIVIL | FLARE - KOD | B | 10 | 01 | CDU1000 |  |  |  |
| CC015100 |  | Estructuras de Hormigón Premoldeado - (Cámaras-Soportes-Sleepers-otras fundaciones) - Ampliación Generación |  | 85d | 2026-08-21 | 2026-11-27 | FDC1020 SS+120d, CDU511 SS+30d, FDC1020 FF, EDC10150 | 76d | 0d |  | HH Civil APRO [1789 h] | M-CIVIL | GENERACION | A | 07 | 02 | CDU1000 |  |  |  |
| CC018380 |  | Fundaciones y pavimento puesto de control SCI 2 (incluye TKZZ-102002) |  | 21d | 2026-08-28 | 2026-09-21 | PQCILY62 SS, PQCILY62 FF-90d, CC018022 SS+20d | 193d | 34d |  | HH Civil APRO [948 h] | CIVIL | TRAT. AGUA | B | 09 | 01 | REVISAR |  |  |  |
| CC014300 |  | Fundaciones de Soportes (desde cruce calle D hasta KOD) |  | 69d | 2026-09-02 | 2026-11-20 | CC014200 FF+5d, PQCILY70 SS, PQCILY70 FF | 82d | 27d |  | HH Civil APRO [3108 h] | CIVIL | FLARE - KOD | A | 09 | 02 | CDU1000 |  |  |  |
| CDC1000 |  | Cañeros - canalizaciones enterradas E&I (aproyo Civil a E&I) | level of effort | 237d | 2026-09-02 | 2027-06-18 | CE015022 SS, CE014022 SS, CE019040 FF, CE017022 FF, CE018022 FF, CE017022 SS, CE019040 SS, CE018022 SS, CE014022 FF, CE015022 FF | 70d | 0d |  | Distibucion Venta [1000000 h] |  |  | A&B | 06 | 09 |  |  |  |  |
| CC014070 |  | Fundaciones Sala Eléctrica # 3 y # 4 |  | 60d | 2026-09-07 | 2026-11-14 | CC014200 FF, PQCILY87 | 151d | 0d |  | HH Civil APRO [1904 h] | CIVIL | HOT OIL | A | 12 | 01 | CDU1000 |  |  | 3 |
| CC014200 |  | Fundaciones de Sendas de cañería PTA (entre calles D, E1 y 3, 2) |  | 60d | 2026-09-07 | 2026-11-14 | CC013200 SS+40d, PQCILY63 | 45d | 0d |  | HH Civil APRO [3831 h] | CIVIL | HOT OIL | A | 09 | 02 | CDU1000 |  |  |  |
| CC018320 |  | Fundaciones y pavimento recinto de Bombas de Inyección de Agua PAZ-24210 A/B/C AJUST |  | 39d | 2026-09-09 | 2026-10-23 | PQCILY50 SS, PQCILY50 FF, CC015100 SS | 63d | 0d |  | HH Civil APRO [3516 h] | CIVIL | TRAT. AGUA | B | 08 | 01 | FUERA NUEVO ALCANCE |  |  |  |
| CC019020 |  | Fundaciones y pavimento recinto de Bombas KOD - PAY-95140 A/B |  | 10d | 2026-09-26 | 2026-10-07 | CC019010 FF, PQCILY70 SS+125d, PQCILY70 FF-50d | 175d | 65d |  | HH Civil APRO [359 h] | CIVIL | FLARE - KOD | B | 10 | 01 | CDU1000 |  |  |  |
| CC011040 |  | Fundaciones de Skid Desarenador/Acumulador/Separador de Gas _ SKZZ-10220 y soportes de cañerías |  | 23d | 2026-09-29 | 2026-10-24 | PQCILY10, PQCILY10 FF, SP1150 | 103d | 0d |  | HH Civil APRO [1052 h] | CIVIL | ING. PLANTA - SLUG CUTCHER | A | 02 | 01 | CDU1000 |  |  |  |
| CC013090 |  | Fundaciones de Sala INS-007 |  | 54d | 2026-10-01 | 2026-12-02 | CC013200 FS-20d | 129d | 0d |  | HH Civil APRO [4816 h] | CIVIL | UNID. CONDENSADO | A | 12 | 01 | CDU1000 |  |  |  |
| CC016072 |  | Fundaciones y pavimento recinto de Bombas Booster de Condensado PAY-23040 A/B/C/D |  | 15d | 2026-10-07 | 2026-10-23 | PQCILY50 SS+60d, PQCILY50 FF, CC018320 FF | 216d | 0d |  | HH Civil APRO [661 h] | CIVIL | ALMAC. CONDENSADO | B | 08 | 01 | CDU1000 |  |  |  |
| CC019030 |  | Fundaciones soportes línea a Flare |  | 42d | 2026-10-08 | 2026-11-25 | CC019010, PQCILY70 SS+160d, PQCILY70 FF, CC020010 SS+18d | 173d | 0d |  | HH Civil APRO [3761 h] | CIVIL | FLARE - KOD | B | 10 | 02 | CDU1000 |  |  |  |
| CC011190 |  | Estructuras de Hormigón Premoldeado - (Cámaras-Soportes-Sleepers-otras fundaciones) - Compresión |  | 94d | 2026-10-22 | 2027-02-22 | FDC1020 SS+70d, CDU511 SS+5d, CDU511 FF, FDC1020 FF-65d, EDC10150 | 6d | 0d |  | HH Civil APRO [5680 h] | M-CIVIL | COMPRESION | A | 03 | 02 | CDU1000 |  |  |  |
| CC011210 |  | Fundaciones Área 291 Ud. de Compresión Gas Multiservicio #1 |  | 20d | 2026-10-22 | 2026-11-13 | PQCILY15, CC011190 SS | 6d | 0d |  | HH Civil APRO [2662 h] | CIVIL | COMPRESION | A | 03 | 01 | CDU1000 |  |  |  |
| CC016080 |  | Fundaciones y pavimento recinto de Bombas Principales de Condensado PAY-23310 A/B/C |  | 74d | 2026-10-24 | 2027-02-01 | PQCILY50 SS+40d, PQCILY50 FF, CC018320 | 157d | 0d |  | HH Civil APRO [2824 h] | CIVIL | ALMAC. CONDENSADO | B | 08 | 01 | CDU1000 |  |  |  |
| CC011060 |  | Fundaciones de Módulos 90213 / 90214 _ SKZZ-90213 / 90214 |  | 10d | 2026-10-26 | 2026-11-05 | CC011040, PQCILY10 | 103d | 61d |  | HH Civil APRO [144 h] | CIVIL | ING. PLANTA - SLUG CUTCHER | A | 02 | 01 | FUERA NUEVO ALCANCE |  |  |  |
| CC018330 |  | Fundaciones y pavimento recinto de Bombas Transferencia - PBM-24340 A/B & Bombas Skimmeado - PBA-24420 A/B |  | 33d | 2026-10-31 | 2026-12-09 | CC018380, CC018320 SS+25d, PQCILY62 SS+90d, PQCILY62 FF-30d, CC018320 FF | 159d | 0d |  | HH Civil APRO [1486 h] | CIVIL | TRAT. AGUA | B | 09 | 01 | CDU1000 |  |  |  |
| CC018220 |  | Fundaciones de Estructuras cruces de calles E1 |  | 20d | 2026-11-03 | 2026-11-25 | CC018040 SS+30d, PQCILY62 SS+108d, PQCILY62 FF-100d, CC018040 FF | 136d | 0d |  | HH Civil APRO [890 h] | M-CIVIL | TRAT. AGUA | A | 09 | 01 | CDU1000 |  |  |  |
| CC017050 |  | Fundaciones de Tinglado y Módulos 91040/50 y 92020/30 (SKZZ-91040/50 y 92020/30) |  | 59d | 2026-11-05 | 2027-01-26 | CC011040 FS-10d, PQCILY80 SS+110d, PQCILY80 FF | 117d | 0d |  | HH Civil APRO [4908 h] | CIVIL | SALIDA PLANTA | A | 11 | 01 | CDU1000 |  |  |  |
| CC013060 |  | Fundación de Bombas Tanques de Efluentes PAZ-24430 A/B |  | 13d | 2026-11-09 | 2026-11-23 | CC013040 | 122d | 34d |  | HH Civil APRO [590 h] | M-CIVIL | UNID. CONDENSADO | A | 05 | 01 | CDU1000 |  |  |  |
| CDC1070 |  | Protección Membranas. Polietileno. Geotextiles. Films | level of effort | 213d | 2026-11-09 | 2027-07-28 | CC013050 SS, CC018130 FF, CC018120 FF, CC013050 FF, CC018120 SS, CC018130 SS | 70d | 0d |  |  |  |  | A&B | 06 | 09 |  |  |  |  |
| CC014100 |  | Estructuras de Hormigón Premoldeado - (Cámaras-Soportes-Sleepers-otras fundaciones) - Hot Oil |  | 55d | 2026-11-13 | 2027-01-30 | CC014200 SS+20d, FDC1020 SS+60d, CDU511 SS+60d, CC014200 FF, CDU511 FF-20d, FDC1020 FF, EDC10150 | 26d | 0d |  | HH Civil APRO [2461 h] | M-CIVIL | HOT OIL | A | 06 | 02 | CDU1000 |  |  |  |
| CC011050 |  | Fundaciones de Sendas de cañerias / soportes en el sector (entre Manifold de Entrada y calle C) |  | 54d | 2026-11-14 | 2027-01-29 | CC011060 FF, CC011210, PQCILY10 SS+25d, PQCILY10 FF | 42d | 0d |  | HH Civil APRO [2445 h] | CIVIL | ING. PLANTA - SLUG CUTCHER | A | 02 | 02 | CDU1000 |  |  |  |
| CC011220 |  | Fundaciones Área 292 Ud. de Compresión Gas Multiservicio #2 |  | 20d | 2026-11-14 | 2026-12-07 | CC011210, PQCILY15 SS+80d, PQCILY15 FF-90d | 6d | 0d |  | HH Civil APRO [2662 h] | CIVIL | COMPRESION | A | 03 | 01 | CDU1000 |  |  |  |
| CC011230 |  | Fundaciones Área 293 Ud. de Compresión Gas Multiservicio #3 |  | 68d | 2026-11-14 | 2027-02-15 | CC011220 SS, PQCILY15 SS+80d, PQCILY15 FF-90d | 6d | 0d |  | HH Civil APRO [13475 h] | CIVIL | COMPRESION | A | 03 | 01 | CDU1000 |  |  |  |
| CC015021 |  | Fundaciones de Generadores Eléctricos a Gas (2 Unidades) - KBE-600 J/K AJUST |  | 10d | 2026-11-14 | 2026-11-25 | PQCILY45, CC011210 | 123d | 0d |  | HH Civil APRO [210 h] | CIVIL | GENERACION | A | 07 | 01 | FUERA NUEVO ALCANCE |  |  |  |
| CC018305 |  | Fundaciones y pavimento recinto de Bombas de Agua y Condensado de Tanque de Slop PBA-97150 A/B y PBA-97160 A/B |  | 33d | 2026-11-17 | 2027-01-08 | CC018040, PQCILY62 SS+108d, PQCILY62 FF-12d | 158d | 99d |  | HH Civil APRO [1486 h] | M-CIVIL | TRAT. AGUA | B | 09 | 01 | CDU1000 |  |  |  |
| CC013080 |  | Fundaciones de Módulos SKZZ-90206 A/SKZZ-90207 A/ SKZZ-90208 A/ SKZZ-90209 A AJUST |  | 10d | 2026-12-03 | 2026-12-14 | CC013090 | 129d | 0d |  | HH Civil APRO [288 h] | CIVIL | UNID. CONDENSADO | A | 05 | 01 | FUERA NUEVO ALCANCE |  |  |  |
| CC018370 |  | Fundaciones y pavimento recinto de Módulos SKZZ-90201/90200A/B 90202C/D 90203B/C AJUST |  | 11d | 2026-12-09 | 2027-01-04 | CC018330 | 215d | 44d |  | HH Civil APRO [504 h] | CIVIL | TRAT. AGUA | B | 09 | 01 | FUERA NUEVO ALCANCE |  |  |  |
| CC014010 |  | Fundación SKID-942 y VBD-94202 |  | 16d | 2026-12-15 | 2027-01-15 | CC014200 SS+20d, PQCILY40 SS+25d, PQCILY40 FF, CC014200 FF-30d | 70d | 0d |  | HH Civil APRO [730 h] | CIVIL | HOT OIL | A | 06 | 01 | CDU1000 |  |  |  |
| CC018340 |  | Fundaciones y pavimento recinto de Bombas Agua Tratada PAZ-24390 A/B/C |  | 22d | 2026-12-17 | 2027-01-25 | CC018330, PQCILY62 SS+99d, PQCILY62 FF | 152d | 0d |  | HH Civil APRO [994 h] | CIVIL | TRAT. AGUA | B | 09 | 01 | CDU1000 |  |  |  |
| CC012020 |  | Fundación de Módulo 93110 (SKZZ-93110) |  | 16d | 2026-12-19 | 2027-01-20 | CC012070, PQCILY23 | 44d | 0d |  | HH Civil APRO [1410 h] | CIVIL | UNID PROCESO GAS | A | 04 | 01 | CDU1000 |  |  |  |
| CC012080 |  | Fundaciones de Módulos SKZZ-90210 A/B / SKZZ-90211 A / SKZZ-90212 A |  | 10d | 2026-12-19 | 2027-01-13 | PQCILY23, CC012070 | 231d | 36d |  | HH Civil APRO [288 h] | CIVIL | UNID PROCESO GAS | A | 04 | 01 | FUERA NUEVO ALCANCE |  |  |  |
| CC017100 |  | Fundación de Módulo 67040 - SKZZ-67040 |  | 22d | 2026-12-19 | 2027-01-27 | CC015021, PQCILY80 SS+140d, PQCILY80 FF-55d | 131d | 0d |  | HH Civil APRO [987 h] | CIVIL | SALIDA PLANTA | A | 07 | 01 | CDU1000 |  |  |  |
| CC011140 |  | Fundación de Pulmón de Aire de Arranque - VBE-91030 |  | 25d | 2027-01-04 | 2027-02-01 | PQCILY16 | 20d | 0d |  | HH Civil APRO [126 h] | CIVIL | COMPRESION | A | 03 | 01 | CDU1000 |  |  |  |
| CC014020 |  | Fundación Trim Cooler EAL-94270 |  | 10d | 2027-01-16 | 2027-01-27 | CC013060, CC014010, PQCILY40 SS+55d, PQCILY40 FF | 109d | 0d |  | HH Civil APRO [405 h] | CIVIL | HOT OIL | A | 06 | 01 | CDU1000 |  |  |  |
| CC014040 |  | Fundación de Filtro de la Bomba de Hot Oil FAJ-94260 |  | 84d | 2027-01-16 | 2027-04-23 | PQCILY40, CC014010 | 70d | 0d |  | HH Civil APRO [7 h] | CIVIL | HOT OIL | A | 06 | 01 | CDU1000 |  |  |  |
| CC017090 |  | Fundación de Módulo 90215 - SKZZ-90215 |  | 10d | 2027-01-16 | 2027-01-27 | CC017100 FF, CC017100 SS | 225d | 24d |  | HH Civil APRO [72 h] | CIVIL | SALIDA PLANTA | A | 07 | 01 | FUERA NUEVO ALCANCE |  |  |  |
| CC012040 |  | Fundaciones de Tanque y Bombas de Drenajes Cerrados (VBH-97310 / PAY-97320 A/B) |  | 20d | 2027-01-21 | 2027-02-12 | CC012020, PQCILY23 | 45d | 1d |  | HH Civil APRO [904 h] | M-CIVIL | UNID PROCESO GAS | A | 05 | 01 | FUERA NUEVO ALCANCE |  |  |  |
| CC012050 |  | Fundaciones y pavimento puesto de control SCI 3 - FAJ-102003 |  | 21d | 2027-01-21 | 2027-02-13 | CC012020, CC012040 FF, PQCILY23 | 44d | 33d |  | HH Civil APRO [948 h] | CIVIL | UNID PROCESO GAS | A | 03 | 01 | CDU1000 |  |  |  |

| ID | WBS | Activity | Duration | Start | Finish | Predecessors | Total float | Free float | Resources | CAMPO DE TRABAJO | LAYOUT | CAMPO DE TRABAJO 2 | ALCANCE | 24607 - WBS Cliente | 24607 - WBS Cliente RA |
| --- | --- | --- | --- | --- | --- | --- | --- | --- | --- | --- | --- | --- | --- | --- | --- |
| CC018360 |  | Fundaciones y pavimento recinto de Desgasificador Presurizado DBM-24310 | 45d | 2027-01-26 | 2027-03-18 | CC018370 FF, CC018340, PQCILY62 SS+153d, PQCILY62 FF | 152d | 86d | HH Civil APRO [2036 h] | CIVIL | TRAT. AGUA | CDU1000 | B | 09 | 01 |
| CC017030 |  | Fundación Pulmón de Aire de Instrumentos VBE-91020 | 25d | 2027-01-28 | 2027-02-25 | CC017100, PQCILY80 SS+40d, PQCILY80 FF | 176d | 62d | HH Civil APRO [126 h] | CIVIL | SALIDA PLANTA | CDU1000 | A | 11 | 01 |
| CC011150 |  | Fundación Separador de Condensados de EPF VBD-10240 | 20d | 2027-02-02 | 2027-02-24 | CC011140, PQCILY16 | 174d | 55d | HH Civil APRO [878 h] | CIVIL | COMPRESION | CDU1000 | A | 03 | 01 |
| CC011160 |  | Fundación de SKID-290 | 20d | 2027-02-02 | 2027-02-24 | PQCILY16 FF, CC011140, PQCILY16 | 153d | 0d | HH Civil APRO [878 h] | CIVIL | COMPRESION | CDU1000 | A | 03 | 01 |
| CC014050 |  | Fundaciones para Módulos PROPAK 942 (EAP-94201 A) AJUST | 16d | 2027-02-02 | 2027-02-19 | CC013060, CC014010 SS+30d, PQCILY40 SS+54d, PQCILY40 FF, CC014010 FF | 74d | 0d | HH Civil APRO [1401 h] | CIVIL | HOT OIL | CDU1000 | A | 06 | 01 |
| CC019040 |  | Instalación de premoldeados: fundación de Flare y pesos muertos de anclaje - LZZ-95110 | 15d | 2027-02-05 | 2027-02-22 | FDC1020 SS, CC019010 SS, CDU511 SS+5d, CC019010 FF-40d, CDU511 FF, FDC1020 FF-70d | 90d | 0d | HH Civil APRO [3122 h] | CIVIL | FLARE - KOD | CDU1000 | B | 10 | 02 |
| CC016300 |  | Estructuras de Hormigón Premoldeado - (Cámaras-Soportes-Sleepers) - Almacenamiento de Condensado | 70d | 2027-02-09 | 2027-04-30 | CC014100 FS+8d, FDC1020, CDU511 FS-20d, EDC10150 | 26d | 0d | HH Civil APRO [6639 h] | M-CIVIL | ALMAC. CONDENSADO | 5 | B | 08 | 02 |
| CC013100 |  | Estructuras de Hormigón Premoldeado - (Cámaras-Soportes-Sleepers-otras fundaciones) - Ud. de Condensado | 90d | 2027-02-23 | 2027-06-07 | FDC1020, CDU511, EDC10150 | 281d |  | HH Civil APRO [3837 h] | M-CIVIL | UNID. CONDENSADO | CDU1000 | A | 05 | 02 |
| CC017040 |  | Fundación Pulmón de Nitrógeno VBE-92010 | 25d | 2027-02-23 | 2027-03-23 | CC017050, PQCILY80 SS+180d, PQCILY80 FF | 154d | 0d | HH Civil APRO [126 h] | CIVIL | SALIDA PLANTA | CDU1000 | A | 11 | 01 |
| CC017200 |  | Estructuras de Hormigón Premoldeado - (Cámaras-Soportes-Sleepers-otras fundaciones) - Servicios | 80d | 2027-02-23 | 2027-05-26 | CC017050 SS, FDC1020, CDU511, CC017050 FF, EDC10150 | 74d | 0d | HH Civil APRO [2065 h] | M-CIVIL | SALIDA PLANTA | CDU1000 | A | 11 | 02 |
| CC018210 |  | Estructuras de Hormigón Premoldeado - (Cámaras-Soportes-Sleepers-otras fundaciones) - PTA | 40d | 2027-02-23 | 2027-04-09 | CC018040, FDC1020 SS+160d, CDU511, FDC1020 FF-20d, EDC10150 | 23d | 0d | HH Civil APRO [17097 h] | M-CIVIL | TRAT. AGUA | CDU1000 | A&B | 09 | 02 |
| CC012100 |  | Estructuras de Hormigón Premoldeado - (Cámaras-Soportes-Sleepers-otras fundaciones) - Ud. Proceso Gas | 40d | 2027-02-27 | 2027-04-14 | CC011230 FS+10d, FDC1020 SS+150d, CDU511 SS+5d, CDU511 FF, FDC1020 FF, EDC10150 | 6d | 0d | HH Civil APRO [4219 h] | M-CIVIL | UNID PROCESO GAS | CDU1000 | A | 04 | 02 |
| CDC1090 |  | Colocación Ignifugado - Fireproofing | 60d | 2027-03-16 | 2027-05-24 | CS022070 FF+40d, CS023200 FF+40d, CS027150 FF+40d, CS023200 SS+20d, CS022070 SS+20d, CS021050 FF+40d, FDC1050 | 201d |  |  | M-IGNI |  |  | A&B | 02 | 03 |
| CC014030 |  | Fundaciones y Cisterna para Sumidero y Bomba de Hot Oil VBH-94250 & PBE-94250 | 16d | 2027-04-01 | 2027-04-19 | CM014030 FF, CC014020, CDU512, PQCILY40 | 134d | 0d | HH Civil APRO [722 h] | CIVIL | HOT OIL | CDU1000 | A | 06 | 01 |
| CC016110 |  | Fundaciones y pavimento puesto de control SCI -SE EXCLUYE TKZZ-102001- | 21d | 2027-05-01 | 2027-05-25 | CC016300, CC016080, PQCILY50 SS, PQCILY50 FF | 292d |  | HH Civil APRO [948 h] | CIVIL | ALMAC. CONDENSADO | REVISAR | B | 08 | 01 |
| CC018365 |  | Fundación de Estructura Soporte de Desgasificador Atmosférico DBM-24320 | 10d | 2027-06-12 | 2027-06-24 | CC018120 SS, PQCILY62 SS+153d, PQCILY62 FF, CC018120 FF-30d | 55d | 0d | HH Civil APRO [320 h] | M-CIVIL | TRAT. AGUA | CDU1000 | B | 09 | 01 |
| CC013070 |  | Fundaciones y Cisterna para Sumidero y Bombas de Drenajes Abiertos Calientes VBH-97110 & PAY-97110 A/B | 10d | 2027-06-29 | 2027-07-09 | CC013080 FF, PQCILY32 SS+120d, PQCILY32 FF-40d, CDU512, CM013070 FF | 29d | 0d | HH Civil APRO [200 h] | CIVIL | UNID. CONDENSADO | CDU1000 | A | 05 | 01 |
| CC012060 |  | Fundación de Tanque Drenaje de Glicol TKBH-98130 | 10d | 2027-07-10 | 2027-07-21 | PQCILY22, CC013070 | 29d | 0d | HH Civil APRO [266 h] | M-CIVIL | UNID PROCESO GAS | CDU1000 | A | 04 | 01 |
| CDC1110 |  | Caminos - Calles internas - Mov.suelos | 50d | 2027-11-17 | 2028-01-13 | CDW1000 FF, PQCILY00, CDU511 FF, CDU514 FF, CDU518 FF | 15d | 0d | HH Civil APRO [3731 h] |  | GENERAL |  | A&B | 02 | 01 |
| CDC1180 |  | Posibles cierres con cercos (incluye portones y puertas) | 30d | 2027-12-10 | 2028-01-13 | CDC1110 FF | 15d |  | HH Civil APRO [447 h] |  |  |  | A&B | 02 | 01 |
|  | 1 | **Anillos de tanques** |  | 2025-12-05 | 2026-11-07 |  |  |  |  |  |  |  |  |  |  |
| CC016010 |  | Fundación de Tanque* de Almacenamiento de Condensado TKAY-23110 A | 59d | 2025-12-05 | 2026-02-25 |  | 669d |  |  | M-CIVIL | ALMAC. CONDENSADO | FUERA NUEVO ALCANCE | B | 1 | 10 |
| CC018010 |  | Fundación de Tanque* Agua de Inyección - TKAZ-24220 A | 45d | 2025-12-05 | 2026-02-09 |  | 683d |  |  | M-CIVIL | TRAT. AGUA | FUERA NUEVO ALCANCE | B | 1 | 10 |
| CC018012 |  | Fundación de Tanque* Agua de Inyección - TKAZ-24220 B | 60d | 2025-12-05 | 2026-02-26 |  | 668d |  |  | M-CIVIL | TRAT. AGUA | FUERA NUEVO ALCANCE | B | 1 | 10 |
| CC018050 |  | Fundación de Tanque- de Recuperación de Flotados - TKZZ-24440 | 30d | 2025-12-05 | 2026-01-22 |  | 698d |  |  | M-CIVIL | TRAT. AGUA | FUERA NUEVO ALCANCE | B | 1 | 10 |
| CC018020 |  | Fundación de Tanque* Skimmer - TKAZ-24350 | 80d | 2026-06-19 | 2026-09-19 | EDC10020, PQCILY60 SS, PQCILY90 SS+40d, PQCILY90 FF, PQCILY60 FF-170d, CG00020 | 12d | 0d | HH Civil APRO [3614 h] | M-CIVIL | TRAT. AGUA | CDU1000 | B | 09 | 01 |
| CC018022 |  | Fundación de Tanque* Pulmón de Agua (Internos Skimmer) - TKAZ-24330 | 40d | 2026-08-05 | 2026-09-19 | CC018020 SS+29d, PQCILY60 SS, PQCILY90 SS+40d, PQCILY90 FF, PQCILY60 FF-170d, CC018020 FF | 69d | 0d | HH Civil APRO [3614 h] | M-CIVIL | TRAT. AGUA | CDU1000 | B | 09 | 01 |
| CC013030 |  | Fundación de Tanque Cónico de Efluentes TKBA-24410 A | 22d | 2026-09-18 | 2026-10-13 | CC013200 SS+50d, CC013200 FF-60d | 110d | 0d | HH Civil APRO [999 h] | M-CIVIL | UNID. CONDENSADO | CDU1000 | A | 05 | 01 |
| CC018040 |  | Fundación de Tanque* Slop TKBA-97140 | 28d | 2026-09-21 | 2026-10-22 | CC018022, PQCILY60 SS, PQCILY60 FF-110d | 69d | 0d | HH Civil APRO [1270 h] | M-CIVIL | TRAT. AGUA | CDU1000 | B | 09 | 01 |
| CC013040 |  | Fundación de Tanque Cónico de Efluentes TKBA-24410 B | 22d | 2026-10-14 | 2026-11-07 | CC013030 | 110d | 0d | HH Civil APRO [999 h] | M-CIVIL | UNID. CONDENSADO | CDU1000 | A | 05 | 01 |

| ID | WBS | Activity | Type | Duration | Start | Finish | Predecessors | Total float | Free float | Resources | CAMPO DE TRABAJO | LAYOUT | CAMPO DE TRABAJO 2 | ALCANCE | 24607 - WBS Cliente | 24607 - WBS Cliente RA | INI ESTA MC | FIN EST MC | CAMPO DE TRABAJO 3 |
| --- | --- | --- | --- | --- | --- | --- | --- | --- | --- | --- | --- | --- | --- | --- | --- | --- | --- | --- | --- |
|  | 2 | **Recintos de tanques** |  |  | 2025-12-05 | 2027-07-28 |  |  |  |  |  |  |  |  |  |  |  |  |  |
| CC016030 |  | Recinto de Tanque* de Almacenamiento de Condensado TKAY-23110 A |  | 70d | 2025-12-05 | 2026-03-10 |  | 658d |  |  | M-CIVIL | ALMAC. CONDENSADO | FUERA NUEVO ALCANCE | B | 1 | 10 |  |  |  |
| CC018110 |  | Recinto de Tanque* Agua de Inyección - TKAZ-24220 A / B |  | 90d | 2025-12-05 | 2026-04-02 |  | 638d |  |  | M-CIVIL | TRAT. AGUA | FUERA NUEVO ALCANCE | B | 1 | 10 |  |  |  |
| CC018140 |  | Recinto de Tanque- de Recuperación de Flotados - TKZZ-24440 |  | 60d | 2025-12-05 | 2026-02-26 |  | 668d |  |  | M-CIVIL | TRAT. AGUA | FUERA NUEVO ALCANCE | B | 1 | 10 |  |  |  |
| CC013050 |  | Recinto de Tanques de Efluentes TKBA-24410 A/B |  | 36d | 2026-11-09 | 2026-12-19 | CC013040 | 110d | 0d | HH Civil APRO [1614 h] | M-CIVIL | UNID. CONDENSADO |  | A | 05 | 01 |  |  |  |
| CC018130 |  | Recinto de Tanque* Slop TKBA-97140 |  | 31d | 2027-03-25 | 2027-04-29 | CM018040 FF, CC018040, PQCILY60 SS, PQCILY60 FF | 147d |  | HH Civil APRO [2761 h] | M-CIVIL | TRAT. AGUA |  | B | 09 | 01 |  |  |  |
| CC018120 |  | Recinto de Tanque* Skimmer (TKAZ-24350) y Pulmón de Agua (Internos Skimmer) (TKAZ-24330) |  | 54d | 2027-05-27 | 2027-07-28 | CM018020 FF+10d, CM018022 FF+10d, CC018020, CC018022, PQCILY60 SS, PQCILY60 FF | 55d | 0d | HH Civil APRO [7298 h] | M-CIVIL | TRAT. AGUA |  | B | 09 | 01 |  |  |  |
|  | 2 | **ESTRUCTURA METÁLICA** |  |  | 2025-12-05 | 2027-07-16 |  |  |  |  |  |  |  |  |  |  |  |  |  |
| CS027010 |  | Montaje estructura de soportes y asociada a Puente de Medición/Salida de Planta (ERM) (A eliminar) |  | 20d | 2025-12-05 | 2026-01-10 |  | 708d |  |  | M-CIVIL | SALIDA PLANTA |  | A | 07 | 11 |  |  |  |
| CS028250 |  | Montaje estructura de soporte / asociada a Sala Eléctrica #4 |  | 45d | 2025-12-05 | 2026-02-09 |  | 683d |  |  | M-CIVIL | TRAT. AGUA | FUERA NUEVO ALCANCE | B | 1 | 10 |  |  |  |
| CS028280 |  | Montaje estructura de soporte / asociada a Sala INS-008 |  | 30d | 2025-12-05 | 2026-01-22 |  | 698d |  |  | M-CIVIL | TRAT. AGUA | FUERA NUEVO ALCANCE | B | 1 | 10 |  |  |  |
| CDS1040 |  | Montaje estructura de parrales / soportes | level of effort | 246d | 2026-09-17 | 2027-07-14 | CS022070 FF, CS023200 FF, CS024081 FF, CS024081 SS, CS027150 FF, CS023200 SS, CS022070 SS, CS021050 SS, CS027100 SS, CS026310 SS, CS027110 SS, CS027160 SS, CS029050 SS, CS028260 SS, CS027100 FF, CS027110 FF, CS027160 FF, CS028260 FF, CS029050 FF, CS021050 FF, CS026310 FF, CS027150 SS, CS027200 SS, CS027200 FF, CS027020 SS, CS027020 FF, CS029030 SS, CS029030 FF, CS029040 SS, CS029040 FF, CS023090 SS, CS023090 FF, CS024070 SS, CS024070 FF, CS028210 SS, CS028210 FF, CS026300 SS, CS026300 FF, CS030010 SS, CS030010 FF | 0d |  | Distibucion Venta [1000000 h] |  |  |  | A&B | 06 | 09 |  |  |  |
| CS023200 |  | Montaje estructura de Sendas de cañerias N-S 001 / soportes en el sector (entre calles C, D y 3, 2) |  | 41d | 2026-09-17 | 2026-11-03 | CC013200 SS+10d, FDS1000 SS+30d, PQCILY31 SS+60d, PQCILY31 FF, CC013200 FF+9d, FDS1000 FF | 0d |  | HH Estructura Metalica APRO [11280 h] | M-CIVIL | UNID. CONDENSADO | 1 | A | 05 | 05 | 2026-03-24 | 2026-12-31 | 2 |
| CS022070 |  | Montaje estructura de Sendas de cañerias N-S 002 / soportes en el sector (entre calles E, C y 3, 4) |  | 43d | 2026-09-22 | 2026-11-10 | CC012070 SS+43d, FDS1000 SS+40d, PQCILY21 SS+40d, PQCILY21 FF, CC012070 FF+13d, FDS1000 FF | 22d | 0d | HH Estructura Metalica APRO [11280 h] | M-CIVIL | UNID PROCESO GAS |  | A | 04 | 04 | 2026-03-24 | 2026-12-31 | 1 |
| CS029040 |  | Montaje estructura de soportes línea a Flare (desde calle E1 hasta KOD) |  | 50d | 2026-10-31 | 2027-01-11 | FDS1000 SS+200d, CC014300 FF+5d, PQCILY71 SS, PQCILY71 FF, CC014300 SS, FDS1000 FF-81d | 55d | 0d | HH Estructura Metalica APRO [1899 h] | M-CIVIL | FLARE - KOD | 1 | A | 10 | 10 |  |  |  |
| CS024081 |  | Montaje estructura de Sendas de cañerias PTA / soportes en el sector (entre calles D, E1 y 3, 2) |  | 45d | 2026-11-16 | 2027-01-20 | CC014200, FDS1000 SS, FDS1000 FF, PQCILY63 | 45d | 0d | HH Estructura Metalica APRO [2746 h] | M-CIVIL | HOT OIL | 1 | A | 09 | 09 |  |  |  |
| CS021040 |  | Montaje estructura de Sendas de cañerias / soportes / plataformas Slug Cutcher |  | 20d | 2026-11-18 | 2026-12-10 | CM011040, CC011040, PQCILY11, FDS1000 SS, FDS1000 FF-130d | 199d | 183d | HH Estructura Metalica APRO [1618 h] | M-CIVIL | ING. PLANTA - SLUG CUTCHER |  | A | 02 | 02 |  |  |  |
| CS028260 |  | Montaje estructura cruces de calles PTA |  | 45d | 2026-11-26 | 2027-01-30 | FDS1000 FS-60d, CC018220, PQCILY61 SS, PQCILY61 FF | 153d | 0d | HH Estructura Metalica APRO [2651 h] | M-CIVIL | TRAT. AGUA |  | A | 09 | 09 |  |  |  |
| CS021050 |  | Montaje estructura de Sendas de cañerias / soportes en el sector (entre Manifold de Entrada y calle C) |  | 45d | 2026-12-02 | 2027-02-05 | CC011050 FF+5d, CC011050 SS+15d, FDS1000 SS+140d, PQCILY11 SS+40d, PQCILY11 FF, FDS1000 FF-21d | 42d | 0d | HH Estructura Metalica APRO [22560 h] | M-CIVIL | ING. PLANTA - SLUG CUTCHER | 1 | A | 02 | 02 |  |  |  |
| CS027150 |  | Montaje estructura de Sendas de cañerias E-O / soportes |  | 30d | 2027-03-04 | 2027-04-07 | FDS1000 SS+220d, CC017150 FF+25d, CC017150 SS+40d, PQCILY81 SS+115d, PQCILY81 FF, FDS1000 FF, CC017160, CC017170, PQCILY84 | 31d | 0d | HH Estructura Metalica APRO [13022 h] | M-CIVIL | SALIDA PLANTA |  | A | 14 | 14 |  |  |  |
| CS023090 |  | Montaje estructura de soporte/asociada a Sala INS-007 |  | 35d | 2027-03-06 | 2027-04-15 | CC013090, FDS1000 SS, FDS1000 FF-46d, PQCILY88, CC014090 | 66d | 0d | HH Estructura Metalica APRO [467 h] | M-CIVIL | UNID. CONDENSADO |  | A | 12 | 12 |  |  |  |
| CS024070 |  | Montaje estructura de soporte / asociada a Sala Eléctrica # 3 y # 4 |  | 45d | 2027-03-06 | 2027-04-27 | CC014070, FDS1000, PQCILY88, CC014090 | 68d | 0d | HH Estructura Metalica APRO [470 h] | M-CIVIL | HOT OIL |  | A | 12 | 12 |  |  | 3 |
| CS029030 |  | Montaje estructura de soportes línea a Flare (desde KOD a Flare) |  | 35d | 2027-04-06 | 2027-05-15 | CS029040, CC019030 FF+20d, FDS1000 FF+20d, PQCILY71 SS, PQCILY71 FF, CC019050 | 98d | 0d | HH Estructura Metalica APRO [3656 h] | M-CIVIL | FLARE - KOD | 1 | B | 10 | 10 |  |  |  |
| CS028210 |  | Montaje estructura de soportes - plataformas PTA |  | 30d | 2027-04-29 | 2027-06-02 | CC018210 FF+46d, CC018210 SS+45d, FDS1000 SS+200d, PQCILY61 SS, PQCILY61 FF, FDS1000 FF-10d | 23d | 0d | HH Estructura Metalica APRO [6624 h] | M-CIVIL | TRAT. AGUA |  | B | 09 | 09 |  |  |  |
| CS026300 |  | Montaje estructura de soportes - plataformas Alm. Condensado |  | 45d | 2027-05-01 | 2027-06-22 | CC016300, FDS1000 FS+6d, CC018320, PQCILY51 | 56d | 0d | HH Estructura Metalica APRO [4878 h] | M-CIVIL | ALMAC. CONDENSADO |  | B | 08 | 08 |  |  |  |
| CS027020 |  | Montaje estructura de Tinglado y Módulos 91040/50 y 92020/30 (SKZZ-91040/50 y 92020/30) |  | 35d | 2027-05-18 | 2027-06-26 | FDS1000, CC017050, PQCILY81 SS+250d, PQCILY81 FF | 67d | 0d |  | M-CIVIL | SALIDA PLANTA |  | A | 11 | 11 |  |  |  |
| CS027200 |  | Montaje estructura de soportes - plataformas sector |  | 35d | 2027-06-04 | 2027-07-14 | CS027020 FF+15d, CC017200, PQCILY81 SS, PQCILY81 FF, FDS1000 | 67d | 0d | HH Estructura Metalica APRO [1518 h] | M-CIVIL | SALIDA PLANTA |  | A | 11 | 11 |  |  |  |
| CS028290 |  | Montaje estructura de soporte Desgasificador Atmosférico DBM-24320 |  | 20d | 2027-06-24 | 2027-07-16 | CC018365, PQCILY61 SS, PQCILY61 FF, FDS1000 | 55d | 0d | HH Estructura Metalica APRO [1567 h] | M-CIVIL | TRAT. AGUA |  | B | 09 | 09 |  |  |  |

| ID | WBS | Activity | Type | Duration | Start | Finish | Predecessors | Total float | Free float | Resources | CAMPO DE TRABAJO 2 | ALCANCE | 24607 - WBS Cliente | 24607 - WBS Cliente RA | CAMPO DE TRABAJO | CAMPO DE TRABAJO 3 |
| --- | --- | --- | --- | --- | --- | --- | --- | --- | --- | --- | --- | --- | --- | --- | --- | --- |
|  | 8 | **MONTAJE MECANICO** |  |  | 2025-12-05 | 2027-11-20 |  |  |  |  |  |  |  |  |  |  |
| CM011100 |  | Bombas de Aceite Motores & Compresores PBE-90430 & PBE-90460 |  | 10d | 2025-12-05 | 2025-12-16 |  | 718d |  |  | FUERA NUEVO ALCANCE | A | 1 | 10 |  |  |
| CM011110 |  | Calentadores Eléctricos EAP-90420/450 AJUST |  | 10d | 2025-12-05 | 2025-12-16 |  | 718d |  |  | FUERA NUEVO ALCANCE | A | 1 | 10 | M- |  |
| CM011120 |  | Bomba Carga de Glicol - PBE-98120 |  | 5d | 2025-12-05 | 2025-12-10 |  | 723d |  |  | FUERA NUEVO ALCANCE | A | 1 | 10 |  |  |
| CM011130 |  | Montaje de Tanque- de Glicol - TKZZ-98110 |  | 20d | 2025-12-05 | 2026-01-10 |  | 708d |  |  | FUERA NUEVO ALCANCE | A | 1 | 10 | M- |  |
| CM013020 |  | Unidad De Procesamiento De Condensado #2 - ÁREA 270 |  | 130d | 2025-12-05 | 2026-05-19 |  | 598d |  |  | FUERA NUEVO ALCANCE | A | 1 | 10 |  |  |
| CM016010 |  | Montaje de Tanque* de Almacenamiento de Condensado - TKAY-23110 A |  | 180d | 2025-12-05 | 2026-07-16 |  | 548d |  |  | FUERA NUEVO ALCANCE | B | 1 | 10 | M- |  |
| CM016050 |  | Montaje Tanque Sumidero de Drenajes Abiertos Fríos VBH-97120 |  | 10d | 2025-12-05 | 2025-12-16 |  | 718d |  |  | FUERA NUEVO ALCANCE | B | 1 | 10 | M- |  |
| CM016051 |  | Bombas de Drenajes Abiertos Fríos VBH-97120 / PAY 97120 A/B |  | 10d | 2025-12-05 | 2025-12-16 |  | 718d |  |  | FUERA NUEVO ALCANCE | B | 1 | 10 | M- |  |
| CM016070 |  | Bombas Booster de Condensado PAY-23140 A AJUST |  | 30d | 2025-12-05 | 2026-01-22 |  | 698d |  |  | FUERA NUEVO ALCANCE | B | 1 | 10 |  |  |
| CM016100 |  | Tanque TKZZ-102001 |  | 5d | 2025-12-05 | 2025-12-10 |  | 723d |  |  | FUERA NUEVO ALCANCE | B | 1 | 10 | M- |  |
| CM017010 |  | Puente de Medición/Servicios (ERM) -RECUPERADO- ELIMINAR |  | 12d | 2025-12-05 | 2025-12-18 |  | 716d |  |  |  | A | 1 | 10 |  |  |
| CM017020 |  | Bombas de Agua de Lavado - PZZ-99230 |  | 6d | 2025-12-05 | 2025-12-11 |  | 722d |  |  | FUERA NUEVO ALCANCE | A | 1 | 10 |  |  |
| CM017021 |  | Módulo MZZ-99240 AJUST |  | 6d | 2025-12-05 | 2025-12-11 |  | 722d |  |  | FUERA NUEVO ALCANCE | A | 1 | 10 |  |  |
| CM017070 |  | SKIDs Inyección de Químicos SKZZ-99104/99110/99016 AJUST |  | 30d | 2025-12-05 | 2026-01-22 |  | 698d |  |  | FUERA NUEVO ALCANCE | A | 1 | 10 |  |  |
| CM017080 |  | Bomba de Agua Cruda PZZ-99140 |  | 6d | 2025-12-05 | 2025-12-11 |  | 722d |  |  | FUERA NUEVO ALCANCE | A | 1 | 10 |  |  |
| CM018010 |  | Montaje de Tanque* Agua de Inyección - TKAZ-24220 A |  | 180d | 2025-12-05 | 2026-07-16 |  | 548d |  |  | FUERA NUEVO ALCANCE | B | 1 | 10 | M- |  |
| CM018012 |  | Montaje de Tanque* Agua de Inyección - TKAZ-24220 B (2° grupo) |  | 135d | 2025-12-05 | 2026-05-25 |  | 593d |  |  | FUERA NUEVO ALCANCE | B | 1 | 10 | M- |  |
| CM018050 |  | Montaje de Tanque- de Recuperación de Flotados - TKZZ-24440 |  | 20d | 2025-12-05 | 2026-01-10 |  | 708d |  |  | FUERA NUEVO ALCANCE | B | 1 | 10 | M- |  |
| CM018310 |  | Bombas de Desarenado - PAZ-24240 A/B |  | 12d | 2025-12-05 | 2025-12-18 |  | 716d |  |  | FUERA NUEVO ALCANCE | B | 1 | 10 |  |  |
| CM018350 |  | Bombas de Tanque de Flotados - PZZ-24450 A/B |  | 12d | 2025-12-05 | 2025-12-18 |  | 716d |  |  | FUERA NUEVO ALCANCE | B | 1 | 10 | M- |  |
| CM018390 |  | Montaje Tanque Sumidero VBH-97130 |  | 10d | 2025-12-05 | 2025-12-16 |  | 718d |  |  | FUERA NUEVO ALCANCE | B | 1 | 10 | M-RIRE |  |
| CM018391 |  | Bombas de Drenajes Abiertos PAY-97130 A/B |  | 12d | 2025-12-05 | 2025-12-18 |  | 716d |  |  | FUERA NUEVO ALCANCE | B | 1 | 10 |  |  |
| CM018400 |  | Bombas de Desagote de Emergencia PZZ-97220 A/B |  | 12d | 2025-12-05 | 2025-12-18 |  | 716d |  |  | FUERA NUEVO ALCANCE | B | 1 | 10 |  |  |
| CM018401 |  | Bombas de Agua de Drenaje a Tratamiento PZZ-97230 A/B |  | 12d | 2025-12-05 | 2025-12-18 |  | 716d |  |  | FUERA NUEVO ALCANCE | B | 1 | 10 |  |  |
| CDM01000 |  | Tanques Mayores in Situ -RESUMEN- | level of effort | 245d | 2026-09-21 | 2027-07-16 | CM018022 FF, CM018020 SS, CM018040 FF, CM018020 FF, CM018022 SS, CM018040 SS | 12d | 0d |  |  | B | 06 | 09 |  |  |
| CM018020 |  | Montaje de Tanque* Skimmer - TKAZ-24350 |  | 155d | 2026-09-21 | 2027-04-02 | CC018020, FDM1020, FDE1040 FF | 12d | 0d | HH Equipos Mecánicos [11406 h]; Distibucion Venta [1000000 h] |  | B | 09 | 08 | M- |  |
| CM013010 |  | Unidad De Procesamiento De Condensado #1 - ÁREA 260 |  | 130d | 2026-10-23 | 2027-04-06 | CC013200 SS+80d, PCM1040, CC013001, CC013200 FF | 75d | 0d | HH Equipos Mecánicos [8722 h] |  | A | 05 | 04 |  | 2 |
| CM018040 |  | Montaje de Tanque* de Slop - TKBA-97140 |  | 150d | 2026-10-23 | 2027-04-29 | CC018040, FDM1080 | 69d | 0d | HH Equipos Mecánicos [10064 h]; Distibucion Venta [1000000 h] |  | B | 09 | 08 | M- |  |
| CM016072 |  | Bombas Booster de Condensado PAY-23040 A/B/C/D |  | 45d | 2026-10-24 | 2026-12-15 | CC016072, PCM1170 | 216d | 140d | HH Equipos Mecánicos [3019 h] |  | B | 08 | 07 |  |  |
| CM018320 |  | Montaje de Bombas de Inyección de Agua PAZ-24210 A/B/C AJUST |  | 18d | 2026-10-24 | 2026-11-13 | PCM1000, CC018320 | 230d | 218d | HH Equipos Mecánicos [1207 h] | FUERA NUEVO ALCANCE | B | 08 | 07 |  |  |
| CM011040 |  | Skid Desarenador/Acumulador/Separador de Gas _ SKZZ-10220 |  | 20d | 2026-10-26 | 2026-11-17 | PCM1150, CC011040 | 199d | 0d | HH Equipos Mecánicos [1341 h] |  | A | 02 | 01 |  |  |
| CM018022 |  | Montaje de Tanque* Pulmón de Agua (Internos Skimmer) - TKAZ-24330 |  | 170d | 2026-12-17 | 2027-07-16 | CC018022, CM018020 SS+75d, FDM1022, CM018020 FF, FDE1040 FF | 12d | 0d | HH Equipos Mecánicos [11406 h]; Distibucion Venta [1000000 h] |  | B | 09 | 08 | M- |  |
| CM018380 |  | Tanque TKZZ-102002 |  | 5d | 2027-01-09 | 2027-01-14 | CC018380 SS, FDM1330 | 189d | 177d | HH Equipos Mecánicos [335 h] |  | B | 09 | 08 | M- |  |
| CM012010 |  | Unidad De Procesamiento De Gas #1 - ÁREA 140 |  | 90d | 2027-01-11 | 2027-04-24 | CS022070 SS+43d, CC012070 SS+20d, PCM1030, PCM1020, CC012001, CC012070 FF, CS022070 FF-80d | 76d | 4d | HH Equipos Mecánicos [6038 h] |  | A | 04 | 03 |  |  |
| CM012020 |  | Módulo 93110 (SKZZ-93110) |  | 20d | 2027-01-21 | 2027-02-12 | CC012020 | 137d | 65d | HH Equipos Mecánicos [1341 h] |  | A | 04 | 03 |  |  |
| CM017050 |  | Módulos 91040/50 y 92020/30 (SKZZ-91040/50 y 92020/30) |  | 25d | 2027-01-27 | 2027-02-24 | CC017050, FDM1380 | 127d | 91d | HH Equipos Mecánicos [1677 h] |  | A | 11 | 10 |  |  |
| CM014010 |  | SKID-942 |  | 45d | 2027-01-28 | 2027-03-20 | PCM1060, CC014020, CC014010 | 109d | 71d | HH Equipos Mecánicos [3019 h] |  | A | 06 | 05 |  |  |
| CM011210 |  | Área 291 Ud. de Compresión Gas Multiservicio #1 |  | 120d | 2027-02-02 | 2027-06-21 | CS022070 SS+29d, PCM1070, CC011210, CS022070 FF-61d | 48d | 0d | HH Equipos Mecánicos [8051 h] |  | A | 03 | 02 |  |  |
| CM016080 |  | Bombas Principales de Condensado PAY-23310 A/B/C AJUST |  | 30d | 2027-02-02 | 2027-03-08 | PCM1160, CC016080 | 157d | 81d | HH Equipos Mecánicos [2012 h] |  | B | 08 | 07 |  |  |
| CM014050 |  | Módulos PROPAK 942 (EAP-94201 A) AJUST |  | 65d | 2027-02-20 | 2027-05-06 | PCM1060, CC014050 | 74d | 36d | HH Equipos Mecánicos [4361 h] | FUERA NUEVO ALCANCE | A | 06 | 05 |  |  |
| CM011050 |  | Módulos 90213 / 90214 _ SKZZ-90213 / 90214 |  | 20d | 2027-02-25 | 2027-03-19 | FDM1400, CC011060 | 186d | 131d | HH Equipos Mecánicos [1341 h] | FUERA NUEVO ALCANCE | A | 02 | 01 |  |  |
| CM011160 |  | SKID-290 |  | 30d | 2027-02-25 | 2027-03-31 | PCM1090, CC011160 | 153d | 147d | HH Equipos Mecánicos [2012 h] |  | A | 03 | 02 |  |  |
| CM011220 |  | Área 292 Ud. de Compresión Gas Multiservicio #2 |  | 120d | 2027-02-25 | 2027-07-14 | PCM1070, CM011210 SS+20d, CC011220, CM011210 FF | 48d | 0d | HH Equipos Mecánicos [8051 h] |  | A | 03 | 02 |  |  |
| CM012080 |  | Módulos SKZZ-90210 A/B / SKZZ-90211 A / SKZZ-90212 A |  | 10d | 2027-02-25 | 2027-03-08 | FDM1400, CC012080 | 195d | 165d | HH Equipos Mecánicos [670 h] | FUERA NUEVO ALCANCE | A | 04 | 03 | RIRE |  |
| CM013060 |  | SKZZ-90206 A/SKZZ-90207 A/ SKZZ-90208 A/ SKZZ-90209 A AJUST |  | 15d | 2027-02-25 | 2027-03-13 | FDM1400, CC013080 | 183d |  | HH Equipos Mecánicos [1006 h] | FUERA NUEVO ALCANCE | A | 05 | 04 | RIRE |  |
| CM017090 |  | Módulo 90215 - SKZZ-90215 |  | 6d | 2027-02-25 | 2027-03-03 | FDM1400, CC017090 | 201d | 143d | HH Equipos Mecánicos [402 h] | FUERA NUEVO ALCANCE | A | 07 | 06 | RIRE |  |
| CM018370 |  | Módulos SKZZ-90201/90200A/B 90202C/D 90203B/C AJUST |  | 20d | 2027-02-25 | 2027-03-19 | FDM1400, CC018370 | 199d | 187d | HH Equipos Mecánicos [1341 h] | FUERA NUEVO ALCANCE | B | 09 | 08 | RIRE |  |
| CM013040 |  | Montaje de Tanque- Cónico de Efluentes - TKBA-24410 A |  | 20d | 2027-03-03 | 2027-03-25 | FDM1040, CC013030 | 118d | 0d | HH Equipos Mecánicos [1341 h] |  | A | 05 | 04 | M-RIRE |  |
| CM013050 |  | Montaje de Tanque- Cónico de Efluentes - TKBA-24410 B |  | 20d | 2027-03-15 | 2027-04-06 | CC013050 FF, CM013040 SS+10d, FDM1042, CC013040, CM013040 FF, CC013050 SS | 118d |  | HH Equipos Mecánicos [1341 h] |  | A | 05 | 04 | M-RIRE |  |
| CM011230 |  | Área 293 Ud. de Compresión Gas Multiservicio #3 |  | 120d | 2027-03-20 | 2027-08-06 | PCM1070, CM011220 SS+20d, CC011230, CM011220 FF | 48d | 42d | HH Equipos Mecánicos [8051 h] |  | A | 03 | 02 |  |  |
| CM017040 |  | Pulmón de Nitrógeno VBE-92010 |  | 10d | 2027-03-24 | 2027-04-03 | FDM1450, CC017040 | 154d | 96d | HH Equipos Mecánicos [670 h] |  | A | 11 | 10 |  |  |
| CM019040 |  | Montaje de Flare - LZZ-95110 (Armado horizontal e Izaje) |  | 55d | 2027-03-30 | 2027-06-01 | PCM1110, CC019040 FS+30d | 90d | 24d | HH Equipos Mecánicos [3690 h] |  | B | 10 | 09 |  |  |
| CM014020 |  | Trim Cooler EAL-94270 |  | 15d | 2027-04-01 | 2027-04-17 | CC014020, FDM1460 | 85d | 47d | HH Equipos Mecánicos [1006 h] |  | A | 06 | 05 |  |  |
| CM012040 |  | Montaje Tanque de Drenajes Cerrados (VBH-97310) |  | 10d | 2027-04-08 | 2027-04-19 | CC012040, FDM1490 FS+35d | 124d | 12d |  |  | A | 05 | 04 | M- |  |
| CM014030 |  | Montaje Tanque Sumidero de Hot Oil VBH-94250 |  | 10d | 2027-04-08 | 2027-04-19 | FDM1490 FS+35d | 134d | 0d |  |  | A | 01 | 02 | M- |  |
| CM015021 |  | Generador electrico a gas - KBE-600 J |  | 15d | 2027-04-15 | 2027-05-01 | CC015021 FS+20d, PCM1120, CS030010 | 66d | 0d | HH Equipos Mecánicos [1006 h] |  | A | 07 | 06 |  |  |
| CM017100 |  | Módulo 67040 - SKZZ-67040 |  | 20d | 2027-04-17 | 2027-05-10 | CC017100, FDM1520 | 63d | 27d | HH Equipos Mecánicos [1341 h] |  | A | 07 | 06 |  |  |
| CM014031 |  | Bomba de Hot Oil VBH-94250 & PBE-94250 |  | 5d | 2027-04-20 | 2027-04-24 | CC014030, FDM1210 | 134d | 96d | HH Equipos Mecánicos [335 h] |  | A | 06 | 05 | M- |  |
| CM011150 |  | Separador de Condensados de EPF VBD-10240 |  | 9d | 2027-04-30 | 2027-05-10 | CC011150, FDM1410 FS+37d | 119d | 113d | HH Equipos Mecánicos [335 h] |  | A | 03 | 02 |  |  |
| CM018340 |  | Bombas Agua Tratada PAZ-24390 A/B/C AJUST |  | 40d | 2027-05-01 | 2027-06-16 | FDM1150, CC018340 | 73d | 42d | HH Equipos Mecánicos [2683 h] | FUERA NUEVO ALCANCE | B | 09 | 08 |  |  |
| CM012041 |  | Bombas de Drenajes Cerrados (PAY-97320 A/B) VBH-97130 |  | 5d | 2027-05-04 | 2027-05-08 | CM012040, FDM1230 | 112d | 82d | HH Equipos Mecánicos [335 h] |  | A | 05 | 04 | M- |  |
| CM013030 |  | Bombas de Tanques de Efluentes - PAZ-24430 A/B |  | 10d | 2027-05-04 | 2027-05-14 | CC013060, FDM1170 | 42d | 0d | HH Equipos Mecánicos [670 h] |  | A | 05 | 04 | M- |  |
| CM018305 |  | Bombas de Agua de Tanque de Slop PBA-97150 A/B |  | 12d | 2027-05-04 | 2027-05-17 | CC018305, FDM1240 | 59d | 0d | HH Equipos Mecánicos [805 h] |  | B | 09 | 08 | M- |  |
| CM018330 |  | Bombas Transferencia - PBM-24340 A/B |  | 12d | 2027-05-04 | 2027-05-17 | CC018330, FDM1140 | 59d | 0d | HH Equipos Mecánicos [805 h] |  | B | 09 | 08 | RIRE |  |
| CM011140 |  | Pulmón de Aire de Arranque - VBE-91030 |  | 5d | 2027-05-10 | 2027-05-14 | CC011140, FDM1440 | 130d | 124d | HH Equipos Mecánicos [335 h] |  | A | 03 | 02 | RIRE |  |
| CM017030 |  | Pulmón de Aire de Instrumentos VBE-91020 |  | 10d | 2027-05-10 | 2027-05-20 | FDM1440, CC017030 | 114d | 56d | HH Equipos Mecánicos [670 h] |  | A | 11 | 10 |  |  |
| CM018306 |  | Bombas de Condensado de Tanque de Slop PBA-97160 A/B |  | 12d | 2027-05-18 | 2027-05-31 | CM018305, CC018305, FDM1250 | 59d | 28d | HH Equipos Mecánicos [805 h] |  | B | 09 | 08 | M- |  |
| CM018332 |  | Bombas Skimmeado - PBA-24420 A/B |  | 12d | 2027-05-18 | 2027-05-31 | CC018330, CM018330, FDM1180 | 59d | 28d | HH Equipos Mecánicos [805 h] |  | B | 09 | 08 | RIRE |  |
| CM014040 |  | Filtro de la Bomba de Hot Oil FAJ-94260 |  | 24d | 2027-06-11 | 2027-07-08 | FDM1320, CC014040 FS+41d | 70d | 32d | HH Equipos Mecánicos [1677 h] |  | A | 06 | 05 |  |  |

| ID | WBS | Activity | Type | Duration | Start | Finish | Predecessors | Complete | Planned start | Planned finish | Total float | Free float | Resources | ALCANCE | 24607 - WBS Cliente | 24607 - WBS Cliente RA | CAMPO DE TRABAJO | LAYOUT | CAMPO DE TRABAJO 2 | INI ESTA MC | FIN EST MC | CAMPO DE TRABAJO 3 |
| --- | --- | --- | --- | --- | --- | --- | --- | --- | --- | --- | --- | --- | --- | --- | --- | --- | --- | --- | --- | --- | --- | --- |
| CM018311 |  | Filtros FAJ-24250 & FAJ-24230 A/B |  | 12d | 2027-06-11 | 2027-06-24 | FDM1310 |  |  |  | 51d | 39d |  | B | 09 | 08 |  |  |  |  |  |  |
| CM018360 |  | Desgasificador Presurizado DBM-24310 |  | 18d | 2027-06-28 | 2027-07-17 | CC018360, FDM1420 |  |  |  | 66d | 54d | HH Equipos Mecánicos [1207 h] | B | 09 | 08 |  |  |  |  |  |  |
| CM013070 |  | Montaje Tanque Sumidero de Drenajes Abiertos Calientes VBH-97110 |  | 10d | 2027-06-29 | 2027-07-09 | FDM1280, FDM1490 |  |  |  | 29d | 0d |  | A | 01 | 02 | RIRE |  |  |  |  |  |
| CM019010 |  | Montaje de Knock Out Drum - VBE-95120 y Calentadores Eléctricos EAP-95130 A/B |  | 10d | 2027-06-30 | 2027-07-10 | FDM1430, CC019010, CM019040, FDM1470 |  |  |  | 66d | 0d | HH Equipos Mecánicos [670 h] | B | 10 | 09 | RIRE |  |  |  |  |  |
| CM013071 |  | Bombas de Drenajes Abiertos Calientes VBH-97110 & PAY-97110 A/B |  | 5d | 2027-07-10 | 2027-07-15 | CC013070, CM013070, FDM1280 |  |  |  | 62d |  | HH Equipos Mecánicos [335 h] | A | 05 | 04 | RIRE |  |  |  |  |  |
| CM019020 |  | Montaje de Bombas KOD - PAY-95140 A/B |  | 12d | 2027-07-12 | 2027-07-24 | CE019010, CM019010, CC019020, FDM1220 |  |  |  | 66d | 16d | HH Equipos Mecánicos [805 h] | B | 10 | 09 |  |  |  |  |  |  |
| CM018365 |  | Desgasificador Atmosférico DBM-24320 |  | 12d | 2027-07-17 | 2027-07-30 | FDM1420, CS028290 |  |  |  | 55d | 43d | HH Equipos Mecánicos [805 h] | B | 09 | 08 |  |  |  |  |  |  |
| CM012060 |  | Montaje Tanque Drenaje de Glicol TKBH-98130 |  | 5d | 2027-07-22 | 2027-07-27 | CC012060, FDM1490, FDM1340 |  |  |  | 29d | 1d |  | A | 01 | 02 | M- |  |  |  |  |  |
| CM011011 |  | Adecuaciones colector Slug Catcher existente |  | 20d | 2027-10-29 | 2027-11-20 | CP011021, CI011030 FF |  |  |  | 16d |  | HH Equipos Mecánicos [1341 h] | A | 02 | 01 |  |  |  |  |  |  |
| CM011031 |  | Adecuaciones colector Manifold de Entrada existente |  | 20d | 2027-10-29 | 2027-11-20 | CP011021, CI011030 FF |  |  |  | 16d |  | HH Equipos Mecánicos [1341 h] | A | 02 | 01 |  |  |  |  |  |  |
|  | 3 | **PIPING** |  |  | 2025-06-30 | 2028-01-13 |  |  |  |  |  |  |  |  |  |  |  |  |  |  |  |  |
|  | 2 | **Soportes** |  |  | 2025-06-30 | 2025-06-30 |  |  |  |  |  |  |  |  |  |  |  |  |  |  |  |  |
| CP010030 |  | Montaje de soportes - General | level of effort | 234d | 2025-06-30 A | 2025-06-30 A |  | 100% | 2026-08-31 | 2027-06-12 |  |  |  | A&B | 06 | 09 |  |  |  |  |  |  |
|  | 1 | **Cañerias** |  |  | 2025-12-05 | 2028-01-13 |  |  |  |  |  |  |  |  |  |  |  |  |  |  |  |  |
|  | 1 | **Prefabricado** |  |  | 2026-10-03 | 2027-11-16 |  |  |  |  |  |  |  |  |  |  |  |  |  |  |  |  |
| CP010010 |  | Montaje de Cañerías _ sobre parral / sleepers - General | level of effort | 339d | 2026-10-03 | 2027-11-16 | CP015010 SS, CP014010 FF, CP013010 FF, CP012010 SS, CP011010 SS, CP016010 SS, CP018010 SS, CP019010 FF, CP017010 FF, CP016010 FF, CP011010 FF, CP012010 FF, CP013010 SS, CP014010 SS, CP015010 FF, CP017010 SS, CP018010 FF, CP019010 SS, CP011041 SS, CP011140 SS, CP012040 SS, CP013040 SS, CP014040 SS, CP015040 SS, CP016040 SS, CP018040 SS, CP019040 SS, CP017040 SS, CP017060, CP017070 SS, CP011041 FF, CP011140 FF, CP012040 FF, CP013040 FF, CP014040 FF, CP015040 FF, CP016040 FF, CP018040 FF, CP019040 FF, CP017040 FF, CP017060 FF, CP017070 FF |  |  |  | 27d | 0d | Distibucion Venta [1000000 h] | A&B | 06 | 09 |  |  |  |  |  |  |
| CP015010 |  | Montaje de Cañerías _ sobre parral / sleepers - Generación |  | 124d | 2026-10-03 | 2027-03-10 | CC015100 SS+10d, FDP1001, FDP1040 SS+90d, FDP1040 FF-62d |  |  |  | 58d | 0d | HH Cañerias AN [30802 h] | A | 07 | 07 | PIPING | GENERACION |  |  |  |  |
| CP013010 |  | Montaje de Cañerías _ sobre senda / sleepers - Un. de Condensado |  | 183d | 2026-11-04 | 2027-06-18 | CS023200, CS023200 FF+16d, FDP1040 FF+20d, FDP1040 SS+172d |  |  |  | 0d |  | HH Cañerias AN [70855 h] | A | 05 | 05 | PIPING | UNID. CONDENSADO | 1 | 2026-04-13 | 2026-12-17 | 2 |
| CP012010 |  | Montaje de Cañerías _ sobre senda / sleepers - Un. Proceso de Gas (& Compresión) |  | 110d | 2026-11-30 | 2027-04-20 | CS022070, FDP1040 FF-30d, FDP1040 SS, CC012100 FF+5d |  |  |  | 6d | 0d | HH Cañerias AN [47236 h] | A | 04 | 04 | PIPING | UNID PROCESO GAS |  | 2026-04-13 | 2026-12-17 | 1 |
| CP019010 |  | Montaje de Cañerías _ sobre senda / sleepers - Flare + KOD |  | 125d | 2027-01-08 | 2027-06-02 | CS029030 FF+15d, CS029040 SS+10d, FDP1001, FDP1040 FF, FDP1040 SS, CS029040 FF |  |  |  | 98d | 0d | HH Cañerias AN [37767 h] | B | 10 | 10 | PIPING | FLARE - KOD | 1 |  |  |  |
| CP014010 |  | Montaje de Cañerías _ sobre senda / sleepers - Fluido Térmico |  | 100d | 2027-01-21 | 2027-05-17 | CS024081, FDP1001, FDP1040 FF+5d, FDP1040 SS |  |  |  | 45d | 0d | HH Cañerias AN [23618 h] | A | 06 | 06 | PIPING | HOT OIL | 1 |  |  |  |
| CP017010 |  | Montaje de Cañerías _ sobre senda E-O / sleepers |  | 150d | 2027-02-01 | 2027-07-24 | FDP1030, CS027200 FF, CS027150 FF+30d, FDP1040 FF+30d, FDP1000, FDP1040 SS, CS027160 |  |  |  | 58d | 0d | HH Cañerias AN [47236 h] | A | 13 | 14 | PIPING | SALIDA PLANTA |  |  |  |  |
| CP011010 |  | Montaje de Cañerías _ sobre parral / sleepers - Slug Catcher |  | 110d | 2027-02-02 | 2027-06-09 | CS021050 SS+15d, CS021050 FF+5d, FDP1001, FDP1040 FF+50d, FDP1040 SS |  |  |  | 16d | 0d | HH Cañerias AN [47236 h] | A | 02 | 02 | PIPING | ING. PLANTA - SLUG CUTCHER | 1 |  |  |  |
| CP016010 |  | Montaje de Cañerías _ sobre senda / sleepers - Almac. de Condensado |  | 135d | 2027-03-04 | 2027-08-07 | CP015010 FS-40d, CC016300 SS+20d, FDP1001, FDP1040 FF+10d, CC016300 FF+10d, FDP1040 SS, CC016310, CC016320, CS026310 |  |  |  | 26d | 0d | HH Cañerias AN [55465 h] | B | 08 | 08 | PIPING | ALMAC. CONDENSADO |  |  |  |  |
| CP015020 |  | Montaje de Cañerías - conexiones a equipos / skids / módulos - Generación |  | 60d | 2027-03-17 | 2027-05-25 | CM015022 FF, CP015010, FDP1040 SS+120d, FDP1040 FF, FDS1010 SS, FDS1010 FF |  |  |  | 104d | 0d | HH Cañerias AN [5904 h] | A | 07 | 07 | PIPING | GENERACION |  |  |  |  |
| CP018010 |  | Montaje de Cañerías _ sobre senda / sleepers - PTA |  | 119d | 2027-03-18 | 2027-08-03 | CP015010, CS028260 FF, CC018220, CC018210 SS+20d, FDP1001, FDP1040 SS+140d, CC018210 FF, FDP1040 FF-30d |  |  |  | 52d | 0d | HH Cañerias AN [42530 h] | B | 09 | 09 | PIPING | TRAT. AGUA |  |  |  |  |

| ID | WBS | Activity | Type | Duration | Start | Finish | Predecessors | Total float | Free float | Resources | CAMPO DE TRABAJO | LAYOUT | CAMPO DE TRABAJO 2 | ALCANCE | 24607 - WBS Cliente | 24607 - WBS Cliente RA | CAMPO DE TRABAJO 3 |
| --- | --- | --- | --- | --- | --- | --- | --- | --- | --- | --- | --- | --- | --- | --- | --- | --- | --- |
|  | 2 | **Montaje** |  |  | 2025-12-05 | 2028-01-13 |  |  |  |  |  |  |  |  |  |  |  |
| CP016022 |  | Montaje de Cañerías - conexiones a Tanques Mayores in situ - Almac. de Condensado |  | 40d | 2025-12-05 | 2026-02-03 |  | 688d |  |  | PIPING | ALMAC. CONDENSADO | REVISAR | B | 1 | 10 |  |
| CP018024 |  | Montaje de Cañerías - conexiones a Tanques Mayores in situ (2° grupo) - PTA |  | 40d | 2025-12-05 | 2026-02-03 |  | 688d |  |  | PIPING | TRAT. AGUA |  | B | 1 | 10 |  |
| CP017020 |  | Montaje de Cañerías - conexiones a equipos / skids / módulos - Servicios |  | 115d | 2027-04-06 | 2027-08-17 | CM017090 FF, CC012070, CC011040, CM017100 FF+50d, CM017050 FF+40d, CM017040 FF+20d, CM017030 FF+20d, FDP1001, FDP1040 FF+60d, CP017010 FF+20d, FDP1040 SS, CC017050, CE017010 FF, FDS1010 SS, FDS1010 FF | 58d | 0d | HH Cañerias AN [11809 h] | PIPING | SALIDA PLANTA |  | A | 11 | 11 |  |
| CP010020 |  | Terminaciones - Pintura | level of effort | 240d | 2027-04-09 | 2028-01-13 | CPI010010 SS, CPI010020 SS, CPI010020 FF, CPI010010 FF | 15d | 0d | Distibucion Venta [1000000 h] |  |  |  | A&B | 06 | 09 |  |
| CP011120 |  | Montaje de Cañerías - conexiones a equipos / skids / módulos - Compresión |  | 175d | 2027-04-21 | 2027-11-10 | CC011190, CP012010, CM011150 FF+45d, CM011140 FF+30d, CM011230 FF+40d, CM011160 FF+45d, CM011220 FF+45d, CM011210 FF+45d, FDP1001, FDP1040 FF+90d, FDP1040 SS, CC011240 FS-36d, CS025010, FDS1010 SS, FDS1010 FF | 6d | 0d | HH Cañerias AN [76803 h] | PIPING | COMPRESION |  | A | 03 | 03 |  |
| CP012020 |  | Montaje de Cañerías - conexiones a equipos / skids / módulos - Un. Proceso de Gas |  | 100d | 2027-05-26 | 2027-09-18 | CM012080 FF, FDP1001, CM012060 FF+45d, CM012020 FF+45d, CM012010 FF+70d, FDP1040 FF+90d, CP012010 FF+43d, CC012050 FF, CM012041 FF+30d, FDP1040 SS, CC012110, CS022080, CM012051 FF, FDS1010 | 28d | 0d | HH Cañerias AN [11809 h] | PIPING | UNID PROCESO GAS |  | A | 04 | 04 | 1 |
| CP014020 |  | Montaje de Cañerías - conexiones a equipos / skids / módulos - Fluido Térmico |  | 95d | 2027-05-26 | 2027-09-13 | CP014010, CM014050 FF+75d, CM014040 FF+25d, CM014010 FF+80d, CM014020 SS, FDP1040 FF+60d, CM014031 FF+25d, FDP1040 SS, CS029010 SS, CS029010 FF, FDS1010 | 38d | 0d | HH Cañerias AN [5904 h] | PIPING | HOT OIL |  | A | 06 | 06 |  |
| CP019020 |  | Montaje de Cañerías - conexiones a equipos / skids / módulos - Flare + KOD |  | 72d | 2027-05-26 | 2027-08-17 | CM019040 FF+10d, CM019010 FF+10d, CM019020 FF+2d, FDP1001, FDP1040 FF+20d, CP019010 FF+15d, FDP1040 SS, CS029050, FDS1010 | 48d | 0d | HH Cañerias AN [9441 h] | PIPING | FLARE - KOD |  | B | 10 | 10 |  |
| CP016020 |  | Montaje de Cañerías - conexiones a equipos / skids / módulos - Almac. de Condensado AJUST |  | 80d | 2027-06-11 | 2027-09-11 | CM016080 FF+30d, CM016072 FF+30d, FDP1001, FDP1040 FF+30d, CP016010 FF+30d, FDP1040 SS | 26d | 0d | HH Cañerias AN [14176 h] | PIPING | ALMAC. CONDENSADO | REVISAR | B | 08 | 08 |  |
| CP018022 |  | Montaje de Cañerías - conexiones a Tanques Mayores in situ - PTA |  | 50d | 2027-06-12 | 2027-08-09 | CM018020, CM018040 FF+30d, CM018022 FF+20d | 12d | 0d | HH Cañerias AN [14176 h] | PIPING | TRAT. AGUA |  | B | 09 | 09 |  |
| CP013020 |  | Montaje de Cañerías - conexiones a equipos / skids / módulos - Un. de Condensado |  | 100d | 2027-06-19 | 2027-10-13 | CM013060 FF, CM013050 FF+45d, CM013040 FF+45d, CM013030 FF+45d, CM013010 FF+60d, CP013010, FDP1001, FDP1040 FF+90d, CM013071 FF+15d, FDP1040 SS, CC013210, CS023210 SS, CS023210 FF, FDS1010 | 0d |  | HH Cañerias AN [17713 h] | PIPING | UNID. CONDENSADO |  | A | 05 | 05 | 2 |
| CP011021 |  | Montaje de Cañerías - conexiones a equipos existentes - Slug Catcher / Manifold de Entrada |  | 60d | 2027-07-27 | 2027-10-04 | CM011050 FF, CS021040 FF+60d, FDP1001, FDP1040 FF+40d, CM011040, CP011010 FS+40d, FDP1040 SS, CS021040 SS, CC011070, FDS1010 | 16d | 0d | HH Cañerias AN [11808 h] | PIPING | ING. PLANTA - SLUG CUTCHER | 1 | A | 02 | 02 |  |
| CP018020 |  | Montaje de Cañerías - conexiones a equipos / skids / módulos - PTA |  | 65d | 2027-08-10 | 2027-10-23 | CP018022, CM018370 FF, CM018380, CM018320, CM018365 FF+30d, CM018360 FF+30d, CM018306 FF+30d, CM018332 FF+30d, CM018305 FF+70d, CM018330 FF+70d, CM018340 FF+30d, FDP1001, FDP1040 FF+60d, CP018010 FF+30d, FDP1040 SS, CM018311, FDS1010 | 12d | 0d | HH Cañerias AN [14176 h] | PIPING | TRAT. AGUA |  | B | 09 | 09 |  |
|  | 3 | **Valvulas** |  |  | 2025-12-05 | 2026-08-26 |  |  |  |  |  |  |  |  |  |  |  |
| CP011031 |  | Montaje de Soportes de Cañerías - Slug Catcher / Manifold de Entrada (Existentes) (A eliminar) |  | 70d | 2025-12-05 | 2026-03-10 |  | 658d |  |  |  | ING. PLANTA - SLUG CUTCHER |  | A | 07 | 11 |  |
| CP011130 |  | Montaje de Soportes de Cañerías - Compresión (A eliminar) |  | 215d | 2025-12-05 | 2026-08-26 |  | 513d |  |  | PIPING | COMPRESION |  | A | 07 | 11 |  |
| CP012030 |  | Montaje de Soportes de Cañerías - Un. Proceso de Gas (A eliminar) |  | 180d | 2025-12-05 | 2026-07-16 |  | 548d |  |  |  | UNID PROCESO GAS |  | A | 07 | 11 |  |
| CP013030 |  | Montaje de Soportes de Cañerías - Un. de Condensado (A eliminar) |  | 200d | 2025-12-05 | 2026-08-08 |  | 528d |  |  |  | UNID. CONDENSADO |  | A | 07 | 11 |  |
| CP014030 |  | Montaje de Soportes de Cañerías - Fluido Térmico (A eliminar) |  | 100d | 2025-12-05 | 2026-04-14 |  | 628d |  |  |  | HOT OIL |  | A | 07 | 11 |  |
| CP015030 |  | Montaje de Soportes de Cañerías - Generación y Sala Eléctrica (A eliminar) |  | 75d | 2025-12-05 | 2026-03-16 |  | 653d |  |  |  | GENERACION |  | A | 07 | 11 |  |
| CP016030 |  | Montaje de Soportes de Cañerías - Almac. de Condensado (A eliminar) |  | 45d | 2025-12-05 | 2026-02-09 |  | 683d |  |  |  | ALMAC. CONDENSADO |  | B | 07 | 11 |  |
| CP017030 |  | Montaje de Soportes de Cañerías - Salida de Planta (A eliminar) |  | 180d | 2025-12-05 | 2026-07-16 |  | 548d |  |  | PIPING | SALIDA PLANTA |  | A | 07 | 11 |  |
| CP018030 |  | Montaje de Soportes de Cañerías - Tratamiento de Agua (A eliminar) |  | 90d | 2025-12-05 | 2026-04-02 |  | 638d |  |  |  | TRAT. AGUA |  | B | 07 | 11 |  |
| CP019030 |  | Montaje de Soportes de Cañerías - Flare + KOD (A eliminar) |  | 75d | 2025-12-05 | 2026-03-16 |  | 653d |  |  |  | FLARE - KOD |  | B | 07 | 11 |  |

| ID | WBS | Activity | Type | Duration | Start | Finish | Predecessors | Total float | Free float | Resources | ALCANCE | 24607 - WBS Cliente | 24607 - WBS Cliente RA | CAMPO DE TRABAJO | LAYOUT | CAMPO DE TRABAJO 2 | CAMPO DE TRABAJO 3 |
| --- | --- | --- | --- | --- | --- | --- | --- | --- | --- | --- | --- | --- | --- | --- | --- | --- | --- |
|  | 4 | **Tie-ins** |  |  |  |  |  |  |  |  |  |  |  |  |  |  |  |
|  | 4 | **ELECTRICIDAD** |  |  | 2025-12-05 | 2027-11-17 |  |  |  |  |  |  |  |  |  |  |  |
| CDE1160 |  | Tendido de Tracing |  | 180d | 2027-04-17 | 2027-11-12 | CP017020 SS+10d, CP017020 FF, CP013020 FF, CP011021 FF, PQELLY01, CP011010 SS, CP018020 FF+10d, FDE1020 | 73d | 33d | HH Electricidad [9733 h]; Distibucion Venta [1000000 h] | A&B | 01 | 01 |  |  |  |  |
|  | 0 | **Montaje de PAT** |  |  | 2025-12-05 | 2027-06-26 |  |  |  |  |  |  |  |  |  |  |  |
| CE016010 |  | Instalación de Puesta a Tierra (PAT-enterrada) de Tanques - Almacenamiento de Condensado |  | 50d | 2025-12-05 | 2026-02-14 |  | 678d |  |  | B | 1 | 10 | ELEC | ALMAC. CONDENSADO | PAT |  |
| CDE1055 |  | Instalación de Puesta a Tierra (PAT-enterrada) - General | level of effort | 288d | 2026-07-13 | 2027-06-26 | CE017010 FF, CE019010 SS, CE018010 SS, CE016012 FF, CE015010 SS, CE014010 FF, CE013010 SS, CE012010 SS, CE011110 SS, CE011010 SS, CE012010 FF, CE011110 FF, CE011010 FF, CE019050 SS, CE019050 FF, CE013010 FF, CE014010 SS, CE015010 FF, CE016012 SS, CE017010 SS, CE018010 FF, CE019010 FF | 102d | 0d | Distibucion Venta [1000000 h] | A&B | 06 | 09 |  |  | PAT |  |
| CE018010 |  | Instalación de Puesta a Tierra (PAT-enterrada) de Tanques - PTA |  | 180d | 2026-07-13 | 2027-02-20 | FDE1030 SS+60d, PQELLY81, PQELLY95, CDU514 FF, CDU514 SS, FDE1030 FF, CC018020 SS+20d, CC018020 FF | 155d | 124d |  | B | 02 | 02 | ELEC | TRAT. AGUA | PAT |  |
| CE012010 |  | Instalación de Puesta a Tierra (PAT-enterrada) - Unidades de proceso de Gas |  | 180d | 2026-07-24 | 2027-03-04 | CC012040 FF-10d, CC012070 SS, FDE1030, PQELLY31, CDU514 FF, CC012070 FF, CDU514 SS | 120d | 48d |  | A | 02 | 02 | ELEC | UNID PROCESO GAS | PAT |  |
| CE013010 |  | Instalación de Puesta a Tierra (PAT-enterrada) - Unidades de Condensado |  | 130d | 2026-08-17 | 2027-01-28 | CC013090 FF-10d, CC013200 SS, FDE1030 FS-10d, PQELLY41, CDU514 FF, CC013200 FF, CDU514 SS, CC013090 SS-100d | 133d | 91d |  | A | 02 | 02 | ELEC | UNID. CONDENSADO | PAT |  |
| CE016012 |  | Instalación de Puesta a Tierra (PAT-enterrada) - Almacenamiento de Condensado |  | 90d | 2026-10-02 | 2027-01-28 | FDE1030, CDU514 FF | 190d | 114d |  | B | 02 | 02 | ELEC | ALMAC. CONDENSADO | PAT |  |
| CE019040 |  | Ejecución de canalizaciones enterradas - Salas E&I |  | 50d | 2026-11-04 | 2027-01-14 | PQCILY82, CG00020 | 203d | 0d |  | A | 02 | 02 | ELEC | GENERACION | PAT |  |
| CE014010 |  | Instalación de Puesta a Tierra (PAT-enterrada) - Fluido termico - Hot Oil |  | 130d | 2026-11-10 | 2027-04-23 | CC014040 FF, CC014200 SS+10d, FDE1030, PQELLY51, CDU514 SS, CC014200 FF, CC014040 SS-100d, CDU514 FF | 82d | 63d |  | A | 02 | 02 | ELEC | HOT OIL | PAT |  |
| CE015010 |  | Instalación de Puesta a Tierra (PAT-enterrada) - Generación |  | 90d | 2026-11-14 | 2027-03-12 | CC015021 SS, FDE1030, PQELLY61, CDU514 FF, CC015021 FF, CDU514 SS | 123d | 57d |  | A | 02 | 02 | ELEC | GENERACION | PAT |  |
| CE011010 |  | Instalación de Puesta a Tierra (PAT-enterrada) - Slug Cutcher |  | 105d | 2026-11-26 | 2027-04-10 | CC011050 SS+10d, CC011050 FF, FDE1030, PQELLY11, CDU514 FF, CDU514 SS | 118d | 22d |  | A | 02 | 02 | ELEC | ING. PLANTA - SLUG CUTCHER | PAT |  |
| CE019010 |  | Instalación de Puesta a Tierra (PAT-enterrada) - Flare + KOD |  | 30d | 2026-12-11 | 2027-01-28 | CC019020 FF, CC019010 SS+10d, FDE1030, PQELLY86, CDU514 SS, CC019010 FF, CC019020 SS, CDU514 FF | 110d | 0d |  | B | 02 | 02 | ELEC | FLARE - KOD | PAT |  |
| CE011110 |  | Instalación de Puesta a Tierra (PAT-enterrada) - Compresión |  | 150d | 2027-01-04 | 2027-06-26 | FDE1030, PQELLY21, CDU514 SS, CDU514 FF, CC011140 SS, CC011140 FF | 20d | 0d |  | A | 02 | 02 | ELEC | COMPRESION | PAT |  |
| CE017010 |  | Instalación de Puesta a Tierra (PAT-enterrada) - Servicios |  | 120d | 2027-01-29 | 2027-06-17 | CE019010, CC017150 SS+10d, FDE1030, PQELLY91, CDU514 SS, CC017150 FF, CDU514 FF | 110d | 52d |  | A | 02 | 02 | ELEC | SALIDA PLANTA | PAT |  |
| CE019050 |  | Instalación de Puesta a Tierra (PAT-enterrada) - Salas E&I |  | 50d | 2027-01-29 | 2027-03-27 | PQELLY03, CDU514 | 141d | 0d |  | A | 02 | 02 | ELEC | GENERACION | PAT |  |
|  | 1 | **Montaje de Canalizaciones Conduit y Bandejas** |  |  | 2026-09-02 | 2027-09-17 |  |  |  |  |  |  |  |  |  |  |  |
| CDE1065 |  | Cañeros - canalizaciones enterradas E&I | level of effort | 237d | 2026-09-02 | 2027-06-18 | CE017022 FF, CE018022 FF, CE015022 SS, CE014022 SS, CE019040 SS, CE019040 FF, CE014022 FF, CE015022 FF, CE017022 SS, CE018022 SS | 70d | 0d |  | A&B | 06 | 09 |  |  |  |  |
| CE015022 |  | Ejecución de canalizaciones enterradas - Generación |  | 90d | 2026-09-02 | 2026-12-15 | CC015100 SS+10d, CC015100 FF-10d, PQCILY82 SS+144d, PQCILY82 FF, CG00020 | 186d | 120d |  | A | 02 | 02 | ELEC | GENERACION | CDU1000 |  |
| CE017022 |  | Ejecución de canalizaciones enterradas - Servicios |  | 60d | 2026-11-23 | 2027-02-13 | CC017050 SS+15d, CC017050 FF, PQCILY82 SS+144d, PQCILY82 FF, CG00020 | 136d | 100d |  | A | 02 | 02 | ELEC | SALIDA PLANTA | CDU1000 |  |
| CDE1125 |  | Montaje de Canalizaciones Bandejas / Conduits / EM - General | level of effort | 239d | 2026-11-27 | 2027-09-15 | CE014020 SS, CE016020 FF, CE015020 SS, CE014020 FF, CE013020 FF, CE012020 FF, CE011120 FF, CE011020 SS, CE018080 SS, CE018070 SS, CE018020 SS, CE019020 SS, CE018070 FF, CE018020 FF, CE018080 FF, CE011020 FF, CE011120 SS, CE012020 SS, CE013020 SS, CE015020 FF, CE016020 SS, CE019020 FF | 38d | 0d | Distibucion Venta [1000000 h] | A&B | 06 | 09 |  |  |  |  |
| CE014022 |  | Ejecución de canalizaciones enterradas - Fluido térmico - Hot Oil |  | 45d | 2026-12-07 | 2027-02-10 | CC014100 SS+20d, CC014100 FF-40d, PQCILY82 SS+144d, PQCILY82 FF, CG00020 | 104d | 85d |  | A | 02 | 02 | ELEC | HOT OIL | CDU1000 |  |
| CE011020 |  | Montaje de Canalizaciones Bandejas / Conduits / EM - Slug Cutcher |  | 90d | 2027-02-26 | 2027-06-10 | FDE1010, CS021050 SS+60d, CS021050 FF+60d, PQELLY10 | 96d | 0d | HH Electricidad [4866 h] | A | 02 | 02 | ELEC | ING. PLANTA - SLUG CUTCHER |  |  |
| CE013020 |  | Montaje de Canalizaciones Bandejas / Conduits / EM - Unidades de Condensado |  | 120d | 2027-02-26 | 2027-07-15 | FDE1010, CP013010 SS+70d, CS023200 FF+80d, PQELLY40, CS023200 SS, CP013010 FF-20d | 64d | 22d | HH Electricidad [6488 h] | A | 05 | 05 | ELEC | UNID. CONDENSADO |  | 2 |
| CE019020 |  | Montaje de Canalizaciones Bandejas / Conduits / EM - Flare + KOD |  | 60d | 2027-02-26 | 2027-05-06 | FDE1010, CS029040, PQELLY85 | 146d | 54d | HH Electricidad [3244 h] | B | 10 | 10 | ELEC | FLARE - KOD |  |  |
| CE011120 |  | Montaje de Canalizaciones Bandejas / Conduits / EM - Compresión |  | 120d | 2027-03-05 | 2027-07-22 | FDE1010, CP012010 SS+70d, CS022070 FF+80d, PQELLY20 | 58d | 38d | HH Electricidad [6488 h] | A | 03 | 03 | ELEC | COMPRESION |  |  |
| CE012020 |  | Montaje de Canalizaciones Bandejas / Conduits / EM - Unidades de proceso de Gas |  | 100d | 2027-03-05 | 2027-06-29 | FDE1010, CP012010 SS+70d, CS022070 FF+20d, PQELLY30, CS022070 SS, CP012010 FF-60d | 105d | 33d | HH Electricidad [5407 h] | A | 04 | 04 | ELEC | UNID PROCESO GAS |  | 1 |
| CE015020 |  | Montaje de Canalizaciones Bandejas / Conduits / EM - Generación |  | 80d | 2027-03-06 | 2027-06-07 | FDE1010 SS+120d, CC015100, PQELLY60, FDE1010 FF | 89d | 0d | HH Electricidad [4325 h] | A | 07 | 07 | ELEC | GENERACION |  |  |
| CE018022 |  | Ejecución de canalizaciones enterradas - PTA |  | 70d | 2027-03-30 | 2027-06-18 | CC018210 SS+30d, CC018210 FF, PQCILY82 SS+144d, PQCILY82 FF, CG00020 | 31d | 0d |  | B | 02 | 02 | ELEC | TRAT. AGUA | CDU1000 |  |
| CE014020 |  | Montaje de Canalizaciones Bandejas / Conduits / EM - Fluido térmico - Hot Oil |  | 120d | 2027-04-16 | 2027-09-02 | CE018050 FF+10d, CE018050 SS-80d, CS024081 FF+40d, CS024081 SS+60d, FDE1010, CE014050 FF+10d, PQELLY50, CE014050 SS-80d | 16d | 0d | HH Electricidad [6488 h] | A | 06 | 06 | ELEC | HOT OIL |  |  |
| CE016020 |  | Montaje de Canalizaciones Bandejas / Conduits / EM - Almacenamiento de Condensado |  | 80d | 2027-04-26 | 2027-07-27 | FDE1010, CS026300 FF+30d, CC016300 SS+20d, PQELLY70, CC016300 FF, CS026300 SS-20d | 56d | 0d | HH Electricidad [4325 h] | B | 08 | 08 | ELEC | ALMAC. CONDENSADO |  |  |
| CE018020 |  | Montaje de Canalizaciones Bandejas / Conduits / EM - PTA |  | 120d | 2027-04-29 | 2027-09-15 | FDE1010 SS+150d, CS028210 FF+40d, CS028260 FF+40d, CC018220, CE018022 FF+30d, CC018210 SS, PQELLY80, FDE1010 FF, CS028260 SS-10d, CS028210 SS, CE018022 SS, CC018210 FF | 23d | 0d | HH Electricidad [6488 h] | B | 09 | 09 | ELEC | TRAT. AGUA |  |  |
| CE017020 |  | Montaje de Canalizaciones Bandejas / Conduits / EM - Servicios |  | 110d | 2027-05-13 | 2027-09-17 | FDE1010, CS027150 FF+45d, CS027150 SS+60d, PQELLY90 | 36d | 0d | HH Electricidad [5948 h] | A | 11 | 11 | ELEC | SALIDA PLANTA |  |  |

| ID | WBS | Activity | Type | Duration | Start | Finish | Predecessors | Total float | Free float | Resources | CAMPO DE TRABAJO | LAYOUT | ALCANCE | 24607 - WBS Cliente | 24607 - WBS Cliente RA | CAMPO DE TRABAJO 3 | CAMPO DE TRABAJO 2 |
| --- | --- | --- | --- | --- | --- | --- | --- | --- | --- | --- | --- | --- | --- | --- | --- | --- | --- |
|  | 2 | **Montaje de Shelters - Equipos** |  |  | 2025-12-05 | 2027-08-21 |  |  |  |  |  |  |  |  |  |  |  |
| CE018060 |  | Montaje de Transformadores - PTA AJUST |  | 45d | 2025-12-05 | 2026-02-09 |  | 683d |  |  | ELEC | TRAT. AGUA | B | 1 | 10 |  |  |
| CE014050 |  | Montaje de shelter - Sala Eléctrica # 3 |  | 38d | 2027-06-28 | 2027-08-10 | CS024070, PQELLY03 SS+18d, TA1124, PQELLY03 FF, FDE1150 | 26d | 0d | HH Electricidad [2054 h] | ELEC | HOT OIL | A | 12 | 12 | 3 |  |
| CE018050 |  | Montaje de shelter - Sala Eléctrica # 4 - AJUST |  | 48d | 2027-06-28 | 2027-08-21 | CS024070, PQELLY03 FF, PQELLY03 SS+18d, TA1124, FDE1150 | 16d | 0d | HH Electricidad [2595 h] | ELEC | TRAT. AGUA | B | 12 | 12 | 3 | FUERA NUEVO ALCANCE |
| CE014060 |  | Montaje de Transformadores y Generador de Emergencia - Salas Eléctricas |  | 20d | 2027-07-30 | 2027-08-21 | CE018050 FF, FDE1140, CE014050 FF, CC014080 | 49d | 30d | HH Electricidad [1081 h] | ELEC | HOT OIL | A | 12 | 12 | 3 |  |
|  | 3 | **Tendido y Conexionado Eléctrico** |  |  | 2025-12-05 | 2027-11-13 |  |  |  |  |  |  |  |  |  |  |  |
| CE011131 |  | Tendido y conexionado - Compresión #1 |  | 70d | 2025-12-05 | 2026-03-10 |  | 658d |  |  | ELEC | COMPRESION | A | 1 | 10 |  |  |
| CE013031 |  | Tendido y conexionado - Unidades de Condensado #1 |  | 85d | 2025-12-05 | 2026-03-27 |  | 643d |  |  | ELEC | UNID. CONDENSADO | A | 1 | 10 |  |  |
| CDE1127 |  | Tendido y conexionado - General | level of effort | 228d | 2027-02-22 | 2027-11-13 | CE015031 SS, CE014030 SS, CE018030 FF, CE019030 SS, CE017030 FF, CE016030 FF, CE013030 FF, CE012030 FF, CE011130 FF, CE011030 FF, CE018100 SS, CE018090 SS, CE018100 FF, CE019030 FF, CE018090 FF, CE011030 SS, CE011130 SS, CE012030 SS, CE013030 SS, CE014030 FF, CE015031 FF, CE016030 SS, CE017030 SS, CE018030 SS | 25d | 0d | Distibucion Venta [1000000 h] |  |  | A&B | 06 | 09 |  |  |
| CE012030 |  | Tendido y conexionado - Unidades de proceso de Gas |  | 120d | 2027-04-30 | 2027-09-16 | CM012080 FF, FDE1050, CM012020, CM012010, CE012020 FF+35d, CE012010, PQELLY02 SS+30d, PQELLY02 FF, CDE1170 FF, CM012041 FF+30d, FDE1160, FDE1170 SS, FDE1170 FF | 72d | 53d | HH Electricidad [6488 h] | ELEC | UNID PROCESO GAS | A | 04 | 04 | 1 |  |
| CE019030 |  | Tendido y conexionado - Flare + KOD |  | 100d | 2027-04-30 | 2027-08-24 | FDE1050, CM019010 FF+15d, CM019020 FF+10d, CE019010, CE019020 FF+40d, PQELLY02 SS+49.5d, PQELLY02 FF, FDE1160, FDE1170 SS, FDE1170 FF | 92d | 73d | HH Electricidad [3244 h] | ELEC | FLARE - KOD | B | 10 | 10 |  |  |
| CE011030 |  | Tendido y conexionado - Slug Cutcher |  | 90d | 2027-05-07 | 2027-08-19 | CM011050 FF, FDE1050, CM011040, CE011020 FF+60d, CE011010, PQELLY02 SS+30d, PQELLY02 FF, FDE1160, FDE1170 FF, FDE1170 SS | 96d | 77d | HH Electricidad [4866 h] | ELEC | ING. PLANTA - SLUG CUTCHER | A | 02 | 02 |  |  |
| CE013030 |  | Tendido y conexionado - Unidades de Condensado |  | 135d | 2027-05-15 | 2027-10-19 | CM013060 FF, CM013010, FDE1050, CM013030, CE013020 FF+60d, CE013010, PQELLY02 SS+30d, PQELLY02 FF, CM013071 FF+20d, FDE1160, FDE1170 SS, FDE1170 FF | 42d | 25d | HH Electricidad [7300 h] | ELEC | UNID. CONDENSADO | A | 05 | 05 | 2 |  |
| CE015031 |  | Tendido y conexionado - Generación |  | 100d | 2027-05-19 | 2027-09-11 | CM015022, FDE1050 SS+150d, CE015022, CE015010, CE015020 FF+60d, PQELLY02 SS+49.5d, PQELLY02 FF, CE015030 FF, FDE1050 FF, CE015020 SS, FDE1160 SS, FDE1160 FF+50d, FDE1170 SS, FDE1170 FF | 66d | 57d | HH Electricidad [3244 h] | ELEC | GENERACION | A | 07 | 07 |  |  |
| CE014030 |  | Tendido y conexionado - Fluido térmico - Hot Oil |  | 140d | 2027-05-21 | 2027-10-30 | CE018050 FF+60d, CE014022, FDE1050 SS+85d, CM014050 FF+40d, CM014010 FF+40d, CM014020 FF, CE014020 FF+20d, CE014010 FF+100d, CE014060 FF+30d, CE014050 FF+60d, PQELLY02 SS+30d, PQELLY02 FF, CM014031 FF+20d, FDE1050 FF, FDE1160 SS+85d, FDE1160 FF, FDE1170 SS, FDE1170 FF | 19d | 15d | HH Electricidad [7570 h] | ELEC | HOT OIL | A | 06 | 06 | 3 |  |
| CE016030 |  | Tendido y conexionado - Almacenamiento de Condensado |  | 80d | 2027-06-11 | 2027-09-11 | FDE1050, CE016012, CM016080, CM016072, CE016020 SS+40d, PQELLY02 SS+49.5d, PQELLY02 FF, CDE1170 FF, CE016020 FF, CDE1170 SS-60d, FDE1160, FDE1170 FF, FDE1170 SS | 76d | 57d | HH Electricidad [4325 h] | ELEC | ALMAC. CONDENSADO | B | 08 | 08 |  |  |
| CE017030 |  | Tendido y conexionado - Servicios |  | 120d | 2027-06-11 | 2027-10-28 | CM017090 FF, CE017010 FF+40d, FDE1050, CM017050, CM017100, CE017020 FF+35d, CE017022, PQELLY02 SS+49.5d, PQELLY02 FF, FDE1160, FDE1170 SS, FDE1170 FF | 36d | 17d | HH Electricidad [6488 h] | ELEC | SALIDA PLANTA | A | 11 | 11 |  |  |
| CE018030 |  | Tendido y conexionado - PTA |  | 113d | 2027-06-19 | 2027-10-28 | CM018370 FF, CE018022, CE018010 FF+90d, FDE1050, CM018306 FF+10d, CM018332 FF+10d, CM018305, CM018330, CM018340 FF+20d, CE018020 SS+40d, PQELLY02 SS+49.5d, PQELLY02 FF, CM018340 SS, CM018332 SS, CM018306 SS, CE018020 FF, CE018010 SS, FDE1160, FDE1170 SS, FDE1170 FF | 31d | 17d | HH Electricidad [5677 h] | ELEC | TRAT. AGUA | B | 09 | 09 |  |  |
| CE011130 |  | Tendido y conexionado - Compresión |  | 120d | 2027-06-28 | 2027-11-13 | FDE1050, CM011230 FF+40d, CM011220 FF+40d, CM011210 FF+40d, CM011160 FF+15d, CM011150 FF+10d, CE011120 FF+60d, CE011110, PQELLY02 SS+30d, PQELLY02 FF, FDE1160, FDE1170 SS, FDE1170 FF | 20d | 3d | HH Electricidad [6488 h] | ELEC | COMPRESION | A | 03 | 03 |  |  |
|  | 5 | **Montaje de Iluminación** |  |  | 2026-09-22 | 2027-11-17 |  |  |  |  |  |  |  |  |  |  |  |
| CDE1110 |  | Montaje de iluminación y Sistema de protección atmosférica |  | 350d | 2026-09-22 | 2027-11-17 | FDE1090 FF+70d, FDE1090 SS+60d, PQELLY00 SS+20d, PQELLY00 FF, CE018100 FF, CE012030 FF, CE017030 FF, CE011030 FF, CE013030 FF, CE014030 FF, CE019030 FF, CE018090 FF, CE011130 FF, CE016030 FF, CE018030 FF, CE015031 FF, CC015100 SS, CC014100 FF, CC015100 FF, CC016300 FF, CC017200 FF, CC018210 FF, CC019050 FF, CDU514 SS+80d | 49d |  | HH Electricidad [15465 h]; Distibucion Venta [1000000 h] | ELEC | GENERAL | A&B | 01 | 01 |  |  |
|  | 6 | **Tendido de Tracing** |  |  |  |  |  |  |  |  |  |  |  |  |  |  |  |
|  | 5 | **INSTRUMENTACIÓN Y CONTROL** |  |  | 2025-12-05 | 2027-12-23 |  |  |  |  |  |  |  |  |  |  |  |
|  | 1 | **Tendido de Cable Par simple/doble** |  |  |  |  |  |  |  |  |  |  |  |  |  |  |  |
|  | 2 | **Montaje de Shelter - Sistemas de Control** |  |  | 2025-12-05 | 2027-08-06 |  |  |  |  |  |  |  |  |  |  |  |
| CI018002 |  | Montaje de Shelter / Instalación Sala INS-008 |  | 30d | 2025-12-05 | 2026-01-22 |  | 698d |  |  | INS | TRAT. AGUA | B | 1 | 10 |  | FUERA NUEVO ALCANCE |
| CI018004 |  | Montaje Sistemas de Control Sala INS-008 |  | 20d | 2025-12-05 | 2026-01-10 |  | 708d |  |  | INS | TRAT. AGUA | B | 1 | 10 |  | FUERA NUEVO ALCANCE |
| CDI1190 |  | Montaje de Shelter Salas INS-007 - General | level of effort | 30d | 2027-04-16 | 2027-05-20 | CI013002 SS, CI013002 FF | 66d | 0d |  |  |  | A&B | 06 | 09 |  | FUERA NUEVO ALCANCE |
| CI013002 |  | Montaje de Sala INS-007 |  | 30d | 2027-04-16 | 2027-05-20 | CS023090, PQINLY01 SS+20d, CDU518, PQINLY01 FF, FDI1030, FDI1090 SS, FDI1090 FF | 66d | 47d | HH Instrumentos [1129 h] | INS | UNID. CONDENSADO | A | 12 | 12 | 3 |  |
| CDI1860 |  | Montaje Sistemas de Control Salas INS-007 - General | level of effort | 20d | 2027-07-15 | 2027-08-06 | CI013004 FF, CI013004 SS | 19d | 0d | Distibucion Venta [1000000 h] |  |  | A&B | 06 | 09 |  | FUERA NUEVO ALCANCE |
| CI013004 |  | Montaje Sistemas de Control Sala INS-007 |  | 20d | 2027-07-15 | 2027-08-06 | PCM1130, CI013002, TA1050 | 19d | 0d | HH Instrumentos [752 h] | INS | UNID. CONDENSADO | A | 12 | 12 | 3 |  |

| ID | WBS | Activity | Type | Duration | Start | Finish | Predecessors | Total float | Free float | Resources | CAMPO DE TRABAJO | LAYOUT | ALCANCE | 24607 - WBS Cliente | 24607 - WBS Cliente RA | CAMPO DE TRABAJO 3 |
| --- | --- | --- | --- | --- | --- | --- | --- | --- | --- | --- | --- | --- | --- | --- | --- | --- |
|  | 3 | **Montaje de Instrumentos** |  |  | 2025-12-05 | 2027-12-04 |  |  |  |  |  |  |  |  |  |  |
| CI018024 |  | Montaje de instrumentos (2° grupo) - PTA |  | 35d | 2025-12-05 | 2026-01-28 |  | 693d |  |  | INS | TRAT. AGUA | B | 1 | 10 |  |
| CDI1170 |  | Montaje de instrumentos - General | level of effort | 187d | 2027-05-01 | 2027-12-04 | CI017020 FF, CI019020, CI018020 FF, CI016020 SS, CI015020 SS, CI014020 SS, CI013020 FF, CI012020 FF, CI011120 FF, CI011020 SS, CI030010 SS, CI030010 FF, CI011020 FF, CI011120 SS, CI012020 SS, CI013020 SS, CI014020 FF, CI015020 FF, CI016020 FF, CI017020 SS | 37d | 0d | Distibucion Venta [1000000 h] |  |  | A&B | 06 | 09 |  |
| CI015020 |  | Montaje de instrumentos - Generación |  | 30d | 2027-05-15 | 2027-06-18 | FDI1040, FDI1060 FS-45d, CP015040 FF+5d, FDI1100, FDI1120 | 104d | 5d | HH Instrumentos [1129 h] | INS | GENERACION | A | 07 | 07 |  |
| CI017020 |  | Montaje de instrumentos - Servicios |  | 100d | 2027-05-17 | 2027-09-09 | FDI1040, FDI1060 FS-30d, CP017040 FF+5d, FDI1100, FDI1120 | 58d | 7d | HH Instrumentos [3763 h] | INS | SALIDA PLANTA | A | 11 | 11 |  |
| CI019020 |  | Montaje de instrumentos - Flare + KOD |  | 100d | 2027-05-17 | 2027-09-09 | FDI1040, FDI1060 SS+270d, CP019040 FF+5d, FDI1060 FF, CP019040 SS-60d, FDI1100, FDI1120 | 48d | 3d | HH Instrumentos [3763 h] | INS | FLARE - KOD | B | 10 | 10 |  |
| CI014020 |  | Montaje de instrumentos - Fluido térmico - Hot Oil |  | 100d | 2027-05-31 | 2027-09-23 | FDI1040, FDI1060, CP014040 FF+4d, FDI1100, FDI1120 | 38d | 22d | HH Instrumentos [3763 h] | INS | HOT OIL | A | 06 | 06 | 3 |
| CI016020 |  | Montaje de instrumentos - Almacenamiento de Condensado |  | 100d | 2027-06-11 | 2027-10-05 | FDI1040, FDI1060 FS-30d, CP016040 FF+5d, FDI1100, FDI1120 | 26d | 0d | HH Instrumentos [3763 h] | INS | ALMAC. CONDENSADO | B | 08 | 08 |  |
| CI013020 |  | Montaje de instrumentos - Unidades de Condensado |  | 150d | 2027-06-14 | 2027-12-04 | FDI1040, FDI1060, CP013040 FF+31d, FDI1100, FDI1120 | 0d |  | HH Instrumentos [3763 h] | INS | UNID. CONDENSADO | A | 05 | 05 |  |
| CI012020 |  | Montaje de instrumentos - Unidades de Proceso de Gas |  | 100d | 2027-06-21 | 2027-10-14 | FDI1040, FDI1060, CP012040 FF+10d, FDI1100, FDI1120 | 28d | 0d | HH Instrumentos [3763 h] | INS | UNID PROCESO GAS | A | 04 | 04 | 1 |
| CI018020 |  | Montaje de instrumentos - PTA |  | 100d | 2027-07-24 | 2027-11-17 | FDI1040, FDI1060, CP018040 FF+12d, FDI1100, FDI1120 | 12d | 0d |  | INS | TRAT. AGUA | B | 09 | 09 |  |
| CI011120 |  | Montaje de instrumentos - Compresión |  | 100d | 2027-07-26 | 2027-11-18 | FDI1040, FDI1060, CP011140 FF+2d, FDI1100, FDI1120 | 6d | 0d | HH Instrumentos [3763 h] | INS | COMPRESION | A | 03 | 03 |  |
| CI011020 |  | Montaje de instrumentos - Slug Cutcher |  | 70d | 2027-08-09 | 2027-10-28 | FDI1040, FDI1060 FS-30d, CP011041 FF+5d, FDI1100, FDI1120 | 16d | 0d | HH Instrumentos [3387 h] | INS | ING. PLANTA - SLUG CUTCHER | A | 02 | 02 |  |
|  | 4 | **Montaje de Canalizaciones** |  |  | 2027-01-23 | 2027-09-22 |  |  |  |  |  |  |  |  |  |  |
| CDI1180 |  | Montaje de Canalizaciones Bandejas / Conduits / JB / Tableros - General | level of effort | 208d | 2027-01-23 | 2027-09-22 | CI017010 FF, CI019010 FF, CI018010 SS, CI016010 FF, CI015010 SS, CI014010 FF, CI013010 FF, CI012010 FF, CI011110 FF, CI011010 FF, CI013005 SS, CI020010 SS, CI030020 SS, CI020010 FF, CI030020 FF, CI011010 SS, CI011110 SS, CI012010 SS, CI013005 FF, CI013010 SS, CI014010 SS, CI015010 FF, CI016010 SS, CI017010 SS, CI018010 FF, CI019010 SS | 43d | 0d | Distibucion Venta [1000000 h] |  |  | A&B | 06 | 09 |  |
| CI019010 |  | Montaje de Canalizaciones Bandejas / Conduits / JB / Tableros - Flare + KOD |  | 60d | 2027-01-23 | 2027-04-02 | CS029040, PQINLY85 SS+5d, PQINLY85 FF, FDI1050 | 45d | 0d | HH Instrumentos [2258 h] | INS | FLARE - KOD | B | 10 | 10 |  |
| CI011010 |  | Montaje de Canalizaciones Bandejas / Conduits / JB / Tableros - Slug Cutcher |  | 90d | 2027-02-23 | 2027-06-07 | CS021050 FF+60d, PQINLY10, FDI1050 | 99d | 83d | HH Instrumentos [3387 h] | INS | ING. PLANTA - SLUG CUTCHER | A | 02 | 02 |  |
| CI011110 |  | Montaje de Canalizaciones Bandejas / Conduits / JB / Tableros - Compresión |  | 120d | 2027-02-23 | 2027-07-12 | CS022070 FF+40d, PQINLY20, FDI1050 | 37d | 31d | HH Instrumentos [4516 h] | INS | COMPRESION | A | 03 | 03 |  |
| CI012010 |  | Montaje de Canalizaciones Bandejas / Conduits / JB / Tableros - Unidades de Proceso de Gas |  | 100d | 2027-03-05 | 2027-06-29 | CP012010 SS+70d, CS022070 FF+45d, PQINLY30, CS022070 SS, CP012010 FF-50d, FDI1050 | 90d | 62d | HH Instrumentos [3763 h] | INS | UNID PROCESO GAS | A | 04 | 04 |  |
| CI015010 |  | Montaje de Canalizaciones Bandejas / Conduits / JB / Tableros - Generación |  | 80d | 2027-03-06 | 2027-06-07 | CE015020 SS, CC015100 FS-20d, PQINLY60, CE015020 FF, FDI1050 | 99d | 0d | HH Instrumentos [3010 h] | INS | GENERACION | A | 07 | 07 |  |
| CI014010 |  | Montaje de Canalizaciones Bandejas / Conduits / JB / Tableros - Fluido térmico - Hot Oil |  | 120d | 2027-04-16 | 2027-09-02 | CE014020 SS, PQINLY50 SS+20d, PQINLY50 FF, CE014020 FF, FDI1050 | 16d | 0d | HH Instrumentos [4516 h] | INS | HOT OIL | A | 06 | 06 | 3 |
| CI016010 |  | Montaje de Canalizaciones Bandejas / Conduits / JB / Tableros - Almacenamiento de Condensado |  | 100d | 2027-04-26 | 2027-08-19 | CE016020 SS, PQINLY80, CE016020 FF, FDI1050 | 56d | 30d | HH Instrumentos [3763 h] | INS | ALMAC. CONDENSADO | B | 08 | 08 |  |
| CI018010 |  | Montaje de Canalizaciones Bandejas / Conduits / JB / Tableros - PTA |  | 100d | 2027-04-29 | 2027-08-23 | CE018020 SS, PQINLY70, CE018020 FF-20d, FDI1050 | 23d | 11d | HH Instrumentos [3763 h] | INS | TRAT. AGUA | B | 09 | 09 |  |
| CI013010 |  | Montaje de Canalizaciones Bandejas / Conduits / JB / Tableros - Unidades de Condensado |  | 120d | 2027-05-06 | 2027-09-22 | CI013004 FF+19d, CS023200 FF+71d, PQINLY40 SS+30d, PQINLY40 FF, CS023200 SS, CI013004 SS-60d, FDI1050 | 19d |  | HH Instrumentos [4516 h] | INS | UNID. CONDENSADO | A | 05 | 05 |  |
| CI017010 |  | Montaje de Canalizaciones Bandejas / Conduits / JB / Tableros - Servicios |  | 100d | 2027-05-13 | 2027-09-06 | CE017020 SS, PQINLY90, CE017020 FF-10d, FDI1050 | 51d | 0d | HH Instrumentos [3763 h] | INS | SALIDA PLANTA | A | 11 | 11 |  |

| ID | WBS | Activity | Type | Duration | Start | Finish | Predecessors | Total float | Free float | Resources | CAMPO DE TRABAJO | LAYOUT | ALCANCE | 24607 - WBS Cliente | 24607 - WBS Cliente RA | CAMPO DE TRABAJO 3 |
| --- | --- | --- | --- | --- | --- | --- | --- | --- | --- | --- | --- | --- | --- | --- | --- | --- |
|  | 6 | **Tendido y Conexionado de Instrumentación y Control** |  |  | 2025-12-05 | 2027-12-23 |  |  |  |  |  |  |  |  |  |  |
| CI011131 |  | Tendido y Conexionado - Compresión #1 |  | 64d | 2025-12-05 | 2026-03-03 |  | 664d |  |  | INS | COMPRESION | A | 1 | 10 |  |
| CI013031 |  | Tendido y Conexionado - Unidades de Condensado #1 |  | 79d | 2025-12-05 | 2026-03-20 |  | 649d |  |  | INS | UNID. CONDENSADO | A | 1 | 10 |  |
| CI018034 |  | Tendido y Conexionado (2° grupo) - PTA |  | 35d | 2025-12-05 | 2026-01-28 |  | 693d |  |  | INS | TRAT. AGUA | B | 1 | 10 |  |
| CDI1160 |  | Tendido y Conexionado - General | level of effort | 227d | 2027-04-03 | 2027-12-23 | CI017030 FF, CI019030 SS, CI018030 FF, CI016030, CI015030 SS, CI014030, CI013030 FF, CI012030 FF, CI011130 FF, CI011030 SS, CI013006, CI020030 SS, CI030030 SS, CI019030 FF, CI020030 FF, CI030030 FF | 6d | 0d | Distibucion Venta [1000000 h] |  |  | A&B | 06 | 09 |  |
| CI019030 |  | Tendido y Conexionado - Flare + KOD |  | 170d | 2027-04-03 | 2027-10-18 | CI019010, CI019020 FF+30d, FDI1020, PQINLY00 SS, PQINLY00 FF, FDI1110, FDI1140 SS, FDI1140 FF | 45d |  | HH Instrumentos [3763 h] | INS | FLARE - KOD | B | 10 | 10 |  |
| CI015030 |  | Tendido y Conexionado - Generación |  | 75d | 2027-05-21 | 2027-08-16 | CI015010 FF+60d, CI015020 FF+30d, FDI1020, PQINLY00 SS, PQINLY00 FF, CI015020 SS, CI015010 SS, FDI1110, FDI1140 SS, FDI1140 FF | 99d |  | HH Instrumentos [2822 h] | INS | GENERACION | A | 07 | 07 |  |
| CI011130 |  | Tendido y Conexionado - Compresión |  | 180d | 2027-05-28 | 2027-12-23 | CI011110 SS+50d, CI011110 FF+40d, CI011120 FF+30d, FDI1020, PQINLY00 SS+10d, FDI1110, FDI1140 SS, FDI1140 FF | 6d |  | HH Instrumentos [4139 h] | INS | COMPRESION | A | 03 | 03 |  |
| CI011030 |  | Tendido y Conexionado - Slug Cutcher |  | 150d | 2027-05-31 | 2027-11-20 | CI011010 FF+50d, CI011020 FF+20d, PQINLY00 SS+10d, PQINLY00 FF, CI011010 SS, FDI1110, FDI1140 SS, FDI1140 FF | 16d | 0d | HH Instrumentos [3387 h] | INS | ING. PLANTA - SLUG CUTCHER | A | 02 | 02 |  |
| CI012030 |  | Tendido y Conexionado - Unidades de Proceso de Gas |  | 120d | 2027-06-09 | 2027-10-26 | CI012010 FF+40d, CI012020 FF+10d, FDI1020, PQINLY00 SS+10d, PQINLY00 FF, CI012010 SS, FDI1110, FDI1140 SS, FDI1140 FF | 28d |  | HH Instrumentos [3763 h] | INS | UNID PROCESO GAS | A | 04 | 04 |  |
| CI017030 |  | Tendido y Conexionado - Servicios |  | 100d | 2027-06-17 | 2027-10-11 | CI017010 FF+30d, CI017020 FF+20d, FDI1020, PQINLY00 SS, PQINLY00 FF, CI017020 SS, CI017010 SS, FDI1110, FDI1140 SS, FDI1140 FF | 51d |  | HH Instrumentos [3763 h] | INS | SALIDA PLANTA | A | 11 | 11 |  |
| CI014030 |  | Tendido y Conexionado - Fluido térmico - Hot Oil |  | 128d | 2027-06-25 | 2027-11-20 | CI014010 FF+60d, CI014020 FF+20d, FDI1020, PQINLY00 SS+10d, PQINLY00 FF, CI014020 SS, CI014010 SS+60d, FDI1110, FDI1140 SS, FDI1140 FF | 16d |  | HH Instrumentos [3763 h] | INS | HOT OIL | A | 06 | 06 | 3 |
| CI016030 |  | Tendido y Conexionado - Almacenamiento de Condensado |  | 100d | 2027-07-16 | 2027-11-09 | CI016010 FF+40d, CI016020 FF+30d, FDI1020, PQINLY00 SS, PQINLY00 FF, CI016020 SS, CI016010 SS, FDI1110, FDI1140 SS, FDI1140 FF | 26d |  | HH Instrumentos [3763 h] | INS | ALMAC. CONDENSADO | B | 08 | 08 | 2 |
| CI018030 |  | Tendido y Conexionado - PTA |  | 120d | 2027-07-21 | 2027-12-07 | CI018010 SS+60d, CI018020 FF+17d, FDI1020, PQINLY00 SS, PQINLY00 FF, CI018010 FF, FDI1110, FDI1140 SS, FDI1140 FF | 12d | 0d |  | INS | TRAT. AGUA | B | 09 | 09 |  |
| CI013030 |  | Tendido y Conexionado - Unidades de Condensado |  | 100d | 2027-08-30 | 2027-12-23 | CI013010 FF+60d, CI013004, CI013020 FF+16d, FDI1020, PQINLY00 SS+10d, PQINLY00 FF, CI013010 SS, FDI1110, FDI1140 SS, FDI1140 FF | 0d |  | HH Instrumentos [3763 h] | INS | UNID. CONDENSADO | A | 05 | 05 |  |
|  | 6 | **AISLACIÓN Y PINTURA** |  |  | 2027-04-09 | 2028-01-13 |  |  |  |  |  |  |  |  |  |  |
|  | 1 | **Pintura** |  |  | 2027-04-09 | 2028-01-13 |  |  |  |  |  |  |  |  |  |  |
| CPI010010 |  | Pintura de Cañerías y touch up EEMM |  | 240d | 2027-04-09 | 2028-01-13 | CDW1000 FF | 15d |  | HH Pintura General [8584 h] |  |  | A&B | 07 | 02 |  |
|  | 2 | **Aislación** |  |  | 2027-05-26 | 2028-01-13 |  |  |  |  |  |  |  |  |  |  |
| CPI010020 |  | Montaje de Aislación de Cañerías |  | 200d | 2027-05-26 | 2028-01-13 | CDW1000 FF, CDE1160 SS, CDE1160 FF, FDP1050 | 40d | 7d | Distibucion Venta [1000000 h]; HH Aislación General [150762 h] |  |  | A&B | 07 | 03 |  |
|  | 7 | **PRECOMISIONADO** |  |  | 2025-12-05 | 2028-01-13 |  |  |  |  |  |  |  |  |  |  |
| CDW1001 |  | Precomisionado #1 |  | 140d | 2025-12-05 | 2026-05-30 |  | 588d |  |  | PRECOM |  | A&B | 1 | 10 |  |
| CDW1002 |  | Precomisionado #Restante |  | 20d | 2025-12-05 | 2026-01-10 |  | 708d |  |  | PRECOM |  | A&B | 1 | 10 |  |
| CDW1004 |  | Precomisionado (2° grupo) Tanque |  | 23d | 2025-12-05 | 2026-01-14 |  | 705d |  |  |  |  | A&B | 1 | 10 |  |
| CDW1130 |  | Precomisionado - Ampliación Generación |  | 40d | 2025-12-05 | 2026-02-03 |  | 688d |  |  |  |  | A | 1 | 10 |  |
| CDW1000 |  | Precomisionado |  | 220d | 2027-05-03 | 2028-01-13 | CM011031 FF+30d, CM011011 FF+30d, CE015031 FF+40d, CC018130 FF+75d, CDE1110 FF, CE016030 FF+30d, CE011130 FF+32d, CE019030 FF+30d, CE017030 FF+30d, CE012030 FF+30d, CE013030 FF+32d, CE011030 FF+30d, CE014030 FF+45d, CE018030 FF+35d, CI017030 FF+30d, CI019030 FF+30d, CI018030 FF+20d, CI015030 FF+30d, CI014030 FF+30d, CI013030 FF+18d, CI012030 FF+40d, CI011130 FF+12d, CI011030 FF+20d, CDC1090 FF, CI016030 FF+30d, MG1030, MG1040, CE018100 FF+27d, CE018090 FF+27d, CI013006 FF, CI020030 FF+27d, CI030030 FF+27d, CDW1140 FS-30d | 0d |  | Distibucion Venta [1000000 h]; HH Precomisionado [109979 h] | PRECOM |  | A&B | 08 | 01 |  |

| ID | WBS | Activity | Duration | Start | Finish | Predecessors | Total float | Calendar | Resources | ALCANCE | 24607 - WBS Cliente | 24607 - WBS Cliente RA |
| --- | --- | --- | --- | --- | --- | --- | --- | --- | --- | --- | --- | --- |
|  | 11 | **COMISIONADO Y ASISTENCIA A LA PEM** |  | 2025-12-05 | 2028-04-29 |  |  |  |  |  |  |  |
|  | 1 | **COMISIONADO** |  | 2025-12-05 | 2028-01-31 |  |  |  |  |  |  |  |
| CDW1110 |  | Comisionado #1 | 110d | 2025-12-05 | 2026-03-24 |  | 767d | Lun_Dom_Sin_Feriado |  | A&B | 1 | 10 |
| CDW1120 |  | Comisionado #Restante | 61d | 2025-12-05 | 2026-02-03 |  | 816d | Lun_Dom_Sin_Feriado |  | A&B | 1 | 10 |
| CDW1010 |  | Comisionado | 200d | 2027-07-16 | 2028-01-31 | CPI010010 FF, CDW1000 FF+15d, POST120 FF | 0d | Lun_Dom_Sin_Feriado | Distibucion Venta [1000000 h]; HH Comisionado [27954 h] | A&B | 01 | 02 |
|  | 2 | **ASISTENCIA A PUESTA EN MARCHA** |  | 2025-12-05 | 2028-02-29 |  |  |  |  |  |  |  |
| CDW1005 |  | Asistencia a la Puesta en Marcha #1 | 30d | 2025-12-05 | 2026-01-03 |  | 847d | Lun_Dom_Sin_Feriado |  | A&B | 1 | 10 |
| CDW1020 |  | Asistencia a la Puesta en Marcha | 30d | 2028-01-31 | 2028-02-29 | CDW1010 FS-1d, CDC1100 FF | 0d | Lun_Dom_Sin_Feriado |  | A&B | 01 | 02 |
|  | 3 | **ASISTENCIA AL PERFORMANCE TEST** |  | 2025-12-05 | 2028-04-29 |  |  |  |  |  |  |  |
| CDW1006 |  | Asistencia a Performance Test #1 | 30d | 2025-12-05 | 2026-01-03 |  | 847d | Lun_Dom_Sin_Feriado |  | A&B | 1 | 10 |
| CDW1007 |  | Asistencia a la Estabilización de Instalaciones #1 | 30d | 2025-12-05 | 2026-01-03 |  | 847d | Lun_Dom_Sin_Feriado |  | A&B | 1 | 10 |
| CDW1030 |  | Asistencia a Performance Test | 30d | 2028-03-01 | 2028-03-30 | CDW1020 | 0d | Lun_Dom_Sin_Feriado |  | A&B | 02 | 03 |
| CDW1040 |  | Asistencia a la Estabilización de Instalaciones | 30d | 2028-03-31 | 2028-04-29 | CDW1030 | 0d | Lun_Dom_Sin_Feriado |  | A&B | 02 | 03 |
|  | 3 | **CPF 2 - Fase 3** |  |  |  |  |  |  |  |  |  |  |
|  | 1 | **HITOS** |  |  |  |  |  |  |  |  |  |  |
|  | 1 | **HITOS GENERALES** |  |  |  |  |  |  |  |  |  |  |
|  | 2 | **HITOS PENALIZABLES** |  |  |  |  |  |  |  |  |  |  |
|  | 2 | **INGENIERÍA DE DETALLE** |  |  |  |  |  |  |  |  |  |  |
|  | 9 | **PROCESOS** |  |  |  |  |  |  |  |  |  |  |
|  | 6 | **SEGURIDAD EN EL DISEÑO** |  |  |  |  |  |  |  |  |  |  |
|  | 7 | **MECANICA** |  |  |  |  |  |  |  |  |  |  |
|  | 8 | **PIPING** |  |  |  |  |  |  |  |  |  |  |
|  | 1 | **CIVIL** |  |  |  |  |  |  |  |  |  |  |
|  | 2 | **ELECTRICIDAD** |  |  |  |  |  |  |  |  |  |  |
|  | 4 | **INSTRUMENTACIÓN Y CONTROL** |  |  |  |  |  |  |  |  |  |  |
|  | 10 | **ESTRUCTURA METÁLICA** |  |  |  |  |  |  |  |  |  |  |
|  | 3 | **SUMINISTROS** |  |  |  |  |  |  |  |  |  |  |
|  | 4 | **SUMINISTROS PLUSPETROL** |  |  |  |  |  |  |  |  |  |  |
|  | 1 | **Sistema de Ingreso a Planta** |  |  |  |  |  |  |  |  |  |  |
|  | 2 | **Sistema de tratamiento de condensado** |  |  |  |  |  |  |  |  |  |  |
|  | 3 | **Sistema de Compresión** |  |  |  |  |  |  |  |  |  |  |
|  | 4 | **Sistema de deshidratación de Gas** |  |  |  |  |  |  |  |  |  |  |
|  | 5 | **Sistema de Estabilización de Condensado** |  |  |  |  |  |  |  |  |  |  |
|  | 6 | **Sistema de Calentamiento** |  |  |  |  |  |  |  |  |  |  |
|  | 7 | **Sistema de despacho de condensado** |  |  |  |  |  |  |  |  |  |  |
|  | 8 | **Sistema de inyección de Agua** |  |  |  |  |  |  |  |  |  |  |
|  | 9 | **Sistema de descarga de Gas** |  |  |  |  |  |  |  |  |  |  |
|  | 10 | **Sistema de Generación** |  |  |  |  |  |  |  |  |  |  |
|  | 11 | **Sistema de tratamiento de agua de producción (IGF)** |  |  |  |  |  |  |  |  |  |  |
|  | 12 | **Sistema de Venteos** |  |  |  |  |  |  |  |  |  |  |
|  | 13 | **Sistema de Seguridad** |  |  |  |  |  |  |  |  |  |  |
|  | 14 | **Sistema de tratamiento de agua cruda** |  |  |  |  |  |  |  |  |  |  |
|  | 1 | **SUMINISTROS AESA** |  |  |  |  |  |  |  |  |  |  |
|  | 1 | **GESTION DE COMPRA** |  |  |  |  |  |  |  |  |  |  |
|  | 1 | **CIVIL** |  |  |  |  |  |  |  |  |  |  |
|  | 2 | **ELECTRICIDAD** |  |  |  |  |  |  |  |  |  |  |
|  | 4 | **INSTRUMENTACIÓN Y CONTROL** |  |  |  |  |  |  |  |  |  |  |
|  | 6 | **SEGURIDAD EN EL DISEÑO** |  |  |  |  |  |  |  |  |  |  |
|  | 7 | **MECANICA** |  |  |  |  |  |  |  |  |  |  |
|  | 8 | **PIPING** |  |  |  |  |  |  |  |  |  |  |
|  | 10 | **ESTRUCTURA METÁLICA** |  |  |  |  |  |  |  |  |  |  |
|  | 2 | **FABRICACIÓN Y DESPACHO** |  |  |  |  |  |  |  |  |  |  |
|  | 1 | **CIVIL** |  |  |  |  |  |  |  |  |  |  |
|  | 2 | **ELECTRICIDAD** |  |  |  |  |  |  |  |  |  |  |
|  | 4 | **INSTRUMENTACIÓN Y CONTROL** |  |  |  |  |  |  |  |  |  |  |
|  | 6 | **SEGURIDAD EN EL DISEÑO** |  |  |  |  |  |  |  |  |  |  |
|  | 7 | **MECANICA** |  |  |  |  |  |  |  |  |  |  |
|  | 8 | **PIPING** |  |  |  |  |  |  |  |  |  |  |
|  | 10 | **ESTRUCTURA METÁLICA** |  |  |  |  |  |  |  |  |  |  |
|  | 4 | **CONSTRUCCIÓN** |  |  |  |  |  |  |  |  |  |  |
|  | 10 | **MOVILIZACIÓN Y DESMOVILIZACIÓN** |  |  |  |  |  |  |  |  |  |  |
|  | 9 | **MOVIMIENTO DE SUELO** |  |  |  |  |  |  |  |  |  |  |
|  | 1 | **CIVIL** |  |  |  |  |  |  |  |  |  |  |
|  | 2 | **ESTRUCTURA METÁLICA** |  |  |  |  |  |  |  |  |  |  |
|  | 8 | **MONTAJE MECANICO** |  |  |  |  |  |  |  |  |  |  |
|  | 3 | **PIPING** |  |  |  |  |  |  |  |  |  |  |
|  | 2 | **Soportes** |  |  |  |  |  |  |  |  |  |  |
|  | 1 | **Cañerias** |  |  |  |  |  |  |  |  |  |  |
|  | 3 | **Valvulas** |  |  |  |  |  |  |  |  |  |  |
|  | 4 | **Tie ins** |  |  |  |  |  |  |  |  |  |  |

| WBS | Activity |
| --- | --- |
| 4 | **ELECTRICIDAD** |
| 5 | **INSTRUMENTACIÓN Y CONTROL** |
| 6 | **AISLACIÓN Y PINTURA** |
| 1 | **Pintura** |
| 2 | **Aislación** |
| 7 | **PRECOMISIONADO** |
| 11 | **COMISIONADO Y ASISTENCIA A LA PEM** |
| 1 | **COMISIONADO** |
| 2 | **ASISTENCIA A PUESTA EN MARCHA** |
| 3 | **ASISTENCIA AL PERFORMANCE TEST** |

## Activity codes

| Code | Value | Meaning |
| --- | --- | --- |
| 24607 - WBS Cliente | 00 | TALLERES |
| 24607 - WBS Cliente | 01 | Civil |
| 24607 - WBS Cliente | 02 | Electricidad |
| 24607 - WBS Cliente | 03 | Instrumentación y control |
| 24607 - WBS Cliente | 04 | Unidades de proceso de Gas |
| 24607 - WBS Cliente | 0405 | SHELTER # 5 |
| 24607 - WBS Cliente | 05 | Unidades de Condensado |
| 24607 - WBS Cliente | 06 | Hot Oil |
| 24607 - WBS Cliente | 07 | Generación |
| 24607 - WBS Cliente | 08 | Almacenamiento de Condensado |
| 24607 - WBS Cliente | 09 | Instrumentación y control |
| 24607 - WBS Cliente | 1 | POR REDEFINICION ALCANCE |
| 24607 - WBS Cliente | 10 | Flare + KOD |
| 24607 - WBS Cliente | 11 | Servicios |
| 24607 - WBS Cliente | 12 | Salas E&I |
| 24607 - WBS Cliente | 13 | Senda Norte |
| 24607 - WBS Cliente | 14 | Senda E-O |
| 24607 - WBS Cliente | 2 | Liquid Process |
| 24607 - WBS Cliente | 3 | Postparo |
| 24607 - WBS Cliente | 4 | Aire de Instrumentos |
| 24607 - WBS Cliente | 5 | Otros servicios (A.Pot./Nitrog/Otros) |
| 24607 - WBS Cliente RA | 00 | TALLERES |
| 24607 - WBS Cliente RA | 01 | GENERAL |
| 24607 - WBS Cliente RA | 02 | HITOS DE CONTROL |
| 24607 - WBS Cliente RA | 03 | MECÁNICA |
| 24607 - WBS Cliente RA | 04 | PIPING |
| 24607 - WBS Cliente RA | 05 | ELECTRICIDAD |
| 24607 - WBS Cliente RA | 06 | INSTRUMENTOS |
| 24607 - WBS Cliente RA | 07 | MECÁNICA |
| 24607 - WBS Cliente RA | 08 | SEGURIDAD EN EL DISEÑO |
| 24607 - WBS Cliente RA | 09 | MARCADORES |
| 24607 - WBS Cliente RA | 10 | 0600 - FLARE + KOD |
| 24607 - WBS Cliente RA | 11 | ELIMINADAS |
| 24607 - WBS Cliente RA | 12 | 2300/2400 - SALAS E&I |
| 24607 - WBS Cliente RA | 13 | 0500 - SENDA NORTE |
| 24607 - WBS Cliente RA | 14 | 0100 - SENDA E-O |
| ALCANCE | A | Alcance A - Mayor |
| ALCANCE | A&B | Alcance A & B - Comunes |
| ALCANCE | B | Alcance B - Menor |
