Schedule from MS Project, 2026-05-08 to 2027-04-28, A marks actual dates.

## Calendars

- Standard: Mon-Fri 08:00-12:00, 13:00-17:00; Sat-Sun off.

## Resources

| Resource |
| --- |
| YPF |
| ABB |
| PC |
| AB |
| ANN |
| AESA |
| 16 |
| v |
| TECHINT |
| PLUSPETROL |

## Schedule

| ID | WBS | Task | Type | Duration | Start | Finish | Predecessors | Complete | Remaining | Total slack | Free slack | Constraint | Resources | Work | Actual work |
| --- | --- | --- | --- | --- | --- | --- | --- | --- | --- | --- | --- | --- | --- | --- | --- |
| 1 | 1 | **PMS CPF2 - LA CALERA- Cronograma Proyecto** |  | 254d | 2026-05-08 A | 2027-04-28 |  | 1% | 251.21d | 0d |  |  |  | 7896h | 96h |
| 2 | 1.1 | **Inicio** |  | 21d | 2026-05-08 A | 2026-06-05 |  | 52% | 10d | 14d |  |  |  | 176h | 96h |
| 3 | 1.1.1 | Recepción / Aceptación OC |  | 2d | 2026-05-08 A | 2026-05-11 A |  | 100% |  |  |  | start no earlier than 2026-05-08 | ABB | 16h | 16h |
| 4 | 1.1.2 | Gestion Alta OC y Organización |  | 8d | 2026-05-12 A | 2026-05-21 A | 3 | 100% |  |  |  |  | ABB | 64h | 64h |
| 5 | 1.1.3 | Kick-Off |  | 1d | 2026-05-22 A | 2026-05-22 A | 4 | 100% |  |  |  |  | ABB; AESA | 16h | 16h |
| 6 | 1.1.4 | Planificación Detallada |  | 10d | 2026-05-25 | 2026-06-05 | 5 |  |  | 4d | 0d |  | ABB | 80h |  |
| 7 | 1.2 | **Hitos de Certificación** |  | 183d | 2026-07-17 | 2027-03-31 |  |  |  | 20d |  |  |  |  |  |
| 8 | 1.2.1 | Cert. Envío Ingeniería Basica (10%) | milestone | 0d | 2026-07-17 | 2026-07-17 | 21, 22, 25 |  |  | 188d |  | finish no earlier than 2022-12-12 |  |  |  |
| 9 | 1.2.2 | Cert. Aprobación Ingeniería Basica (10%) | milestone | 0d | 2026-08-14 | 2026-08-14 | 28 |  |  | 157d |  | finish no earlier than 2022-12-12 |  |  |  |
| 10 | 1.2.3 | Cert. Acopio de Materiales (25%) | milestone | 0d | 2026-11-05 | 2026-11-05 | 15 |  |  | 124d |  | finish no earlier than 2022-12-12 |  |  |  |
| 11 | 1.2.4 | Cert. FAT (20%) | milestone | 0d | 2027-01-29 | 2027-01-29 | 70, 66 |  |  | 63d |  |  |  |  |  |
| 12 | 1.2.5 | Cert. Entrega Equipamiento en Shelter (30%) | milestone | 0d | 2027-02-17 | 2027-02-17 | 72 |  |  | 50d |  |  |  |  |  |
| 13 | 1.2.6 | Cert. Entrega DataBook (5%) | milestone | 0d | 2027-03-31 | 2027-03-31 | 73 |  |  | 20d |  |  |  |  |  |
| 14 | 1.3 | **Actividades en Fábrica** |  | 194d | 2026-05-22 | 2027-02-17 |  |  |  | 0d |  |  |  | 7600h |  |
| 15 | 1.3.1 | **Gestión Compra de Materiales** |  | 120d | 2026-05-22 | 2026-11-05 | 4 |  |  | 0d |  |  |  | 2560h |  |
| 16 | 1.3.1.1 | Switches de Red |  | 120d | 2026-05-22 | 2026-11-05 | 4 |  |  | 114d |  |  | ABB | 960h |  |
| 17 | 1.3.1.2 | Material S800 - PMS |  | 100d | 2026-05-22 | 2026-10-08 | 4 |  |  | 0d |  |  | ABB | 800h |  |
| 18 | 1.3.1.3 | Tableros |  | 100d | 2026-05-22 | 2026-10-08 | 4 |  |  | 0d |  |  | ABB | 800h |  |
| 19 | 1.3.2 | **Desarrollo** |  | 139d | 2026-06-08 | 2026-12-17 |  |  |  | 14d |  |  |  | 4512h |  |
| 20 | 1.3.2.1 | **Ingeniería - Documentación para Aprobación** |  | 40d | 2026-06-08 | 2026-07-31 |  |  |  | 14d |  |  |  | 920h |  |
| 21 | 1.3.2.1.1 | Arquitectura/Topilogía de Red |  | 10d | 2026-06-08 | 2026-06-19 | 6 |  |  | 4d | 0d |  | ABB | 80h |  |
| 22 | 1.3.2.1.2 | Listado de I/O |  | 20d | 2026-06-22 | 2026-07-17 | 21 |  |  | 4d | 0d |  | ABB | 160h |  |
| 23 | 1.3.2.1.3 | Listado de Variables por Comunicación |  | 30d | 2026-06-22 | 2026-07-31 | 21 |  |  | 29d | 0d |  | ABB | 240h |  |
| 24 | 1.3.2.1.4 | Especificación Funcional |  | 30d | 2026-06-22 | 2026-07-31 | 21 |  |  | 29d | 0d |  | ABB | 240h |  |
| 25 | 1.3.2.1.5 | Planos Constructivos Tableros |  | 25d | 2026-06-08 | 2026-07-10 | 6 |  |  | 14d | 0d |  | ABB | 200h |  |
| 26 | 1.3.2.2 | Procedimiento FAT |  | 10d | 2026-08-31 | 2026-09-11 | 24FS+20d |  |  | 123d | 0d |  | ABB | 80h |  |
| 27 | 1.3.2.3 | Procedimiento SAT |  | 10d | 2026-08-31 | 2026-09-11 | 24FS+20d |  |  | 123d | 0d |  | ABB | 80h |  |

| ID | WBS | Task | Duration | Start | Finish | Predecessors | Total slack | Free slack | Constraint | Resources | Work |
| --- | --- | --- | --- | --- | --- | --- | --- | --- | --- | --- | --- |
| 28 | 1.3.2.4 | **Aprobación Ingeniería AESA** | 40d | 2026-06-22 | 2026-08-14 |  | 29d | 0d |  |  | 400h |
| 29 | 1.3.2.4.1 | Aprobación Arquitectura de Comunicación RevA | 10d | 2026-06-22 | 2026-07-03 | 21 | 142d | 0d | start no earlier than 2022-10-10 | AESA | 80h |
| 30 | 1.3.2.4.2 | Aprobación Listado de I/O RevA | 10d | 2026-07-20 | 2026-07-31 | 22 | 4d | 0d | start no earlier than 2022-10-14 | AESA | 80h |
| 31 | 1.3.2.4.3 | Aprobación Listado de Variables por Comunicación Rev A | 10d | 2026-08-03 | 2026-08-14 | 23 | 29d | 0d | start no earlier than 2022-10-14 | AESA | 80h |
| 32 | 1.3.2.4.4 | Aprobación Especificacion Funcional Rev A | 10d | 2026-08-03 | 2026-08-14 | 24 | 29d | 0d | start no earlier than 2022-10-14 | AESA | 80h |
| 33 | 1.3.2.4.5 | Aprobación Planos Constructivos Tableros RevA | 10d | 2026-07-13 | 2026-07-24 | 25 | 14d | 0d | start no earlier than 2022-10-14 | AESA | 80h |
| 34 | 1.3.2.5 | Aprobación Procedimiento FAT RevA | 10d | 2026-09-14 | 2026-09-25 | 26 | 123d | 0d | start no earlier than 2022-10-19 | AESA | 80h |
| 35 | 1.3.2.6 | Aprobación Procedimiento SAT RevA | 10d | 2026-09-14 | 2026-09-25 | 27 | 123d | 0d |  | AESA | 80h |
| 36 | 1.3.2.7 | **Corrección Ingeniería y Emisión en Rev 0 - ABB** | 40d | 2026-07-06 | 2026-08-28 |  | 29d |  |  |  | 400h |
| 37 | 1.3.2.7.1 | Arquitectura de Comunicación Rev0 | 10d | 2026-07-06 | 2026-07-17 | 29 | 142d | 0d |  | ABB | 80h |
| 38 | 1.3.2.7.2 | Listado de I/O Rev0 | 10d | 2026-08-03 | 2026-08-14 | 30 | 4d | 0d |  | ABB | 80h |
| 39 | 1.3.2.7.3 | Listado de Variables por Comunicación Rev0 | 10d | 2026-08-17 | 2026-08-28 | 31 | 29d | 0d |  | ABB | 80h |
| 40 | 1.3.2.7.4 | Revisión Especificacion Funcional Rev0 | 10d | 2026-08-17 | 2026-08-28 | 32 | 29d | 0d |  | ABB | 80h |
| 41 | 1.3.2.7.5 | Planos Constructivos Rev0 | 10d | 2026-07-27 | 2026-08-07 | 33 | 14d | 0d |  | ABB | 80h |
| 42 | 1.3.2.8 | Procedimiento FAT Rev0 | 10d | 2026-09-28 | 2026-10-09 | 34 | 123d | 0d |  | ABB | 80h |
| 43 | 1.3.2.9 | Procedimiento SAT Rev0 | 10d | 2026-09-28 | 2026-10-09 | 35 | 123d | 0d |  | ABB | 80h |
| 44 | 1.3.2.10 | **Aprobación Ingeniería AESA - Rev 0** | 40d | 2026-07-20 | 2026-09-11 |  | 29d |  |  |  | 400h |
| 45 | 1.3.2.10.1 | Aprobación Arquitectura de Comunicación Rev0 | 10d | 2026-07-20 | 2026-07-31 | 37 | 142d | 0d |  | AESA | 80h |
| 46 | 1.3.2.10.2 | Aprobación Listado de I/O Rev0 | 10d | 2026-08-17 | 2026-08-28 | 38 | 4d | 0d |  | AESA | 80h |
| 47 | 1.3.2.10.3 | Aprobación Listado de Variables por Comunicación Rev0 | 10d | 2026-08-31 | 2026-09-11 | 39 | 29d | 25d |  | AESA | 80h |
| 48 | 1.3.2.10.4 | Aprobación Revisión Especificacion Funcional Rev0 | 10d | 2026-08-31 | 2026-09-11 | 40 | 29d | 25d |  | AESA | 80h |
| 49 | 1.3.2.10.5 | Aprobación Planos Constructivos Rev0 | 10d | 2026-08-10 | 2026-08-21 | 41 | 14d |  |  | AESA | 80h |
| 50 | 1.3.2.11 | Aprobación Procedimiento FAT Rev0 | 10d | 2026-10-12 | 2026-10-23 | 42 | 123d |  |  | AESA | 80h |
| 51 | 1.3.2.12 | Aprobación Procedimiento SAT Rev0 | 10d | 2026-10-12 | 2026-10-23 | 43 | 123d |  |  | AESA | 80h |
| 52 | 1.3.2.13 | Pruebas Maqueta Integrada PMS/CCM/PCS (CPF1 y CPF2) | 4d | 2026-09-22 | 2026-09-25 | 21, 24 | 59d |  | start no earlier than 2026-09-22 | ABB; AESA; PLUSPETROL | 96h |

| ID | WBS | Task | Duration | Start | Finish | Predecessors | Total slack | Free slack | Constraint | Resources | Work |
| --- | --- | --- | --- | --- | --- | --- | --- | --- | --- | --- | --- |
| 53 | 1.3.2.14 | **Construcción** | 99d | 2026-08-03 | 2026-12-17 |  | 29d |  |  |  | 1656h |
| 54 | 1.3.2.14.1 | Armado de Tableros | 70d | 2026-09-11 | 2026-12-17 | 49, 17FS-20d, 18FS-20d, 41 | 0d |  |  | ABB | 560h |
| 55 | 1.3.2.14.2 | **Configuración / Programación Sistema** | 85d | 2026-08-03 | 2026-11-27 |  | 34d |  |  |  | 1096h |
| 56 | 1.3.2.14.2.1 | Creación de Entorno Virtual / Instalación del Sistema Virtual / Full Backups / Preparativos Entorno | 10d | 2026-08-03 | 2026-08-14 | 45, 37 | 142d | 0d |  | ABB | 80h |
| 57 | 1.3.2.14.2.2 | Configuración Pantallas y Ambiente de Operación | 15d | 2026-08-17 | 2026-09-04 | 29, 56 | 142d | 0d |  | ABB | 120h |
| 58 | 1.3.2.14.2.3 | Revisión Pantallas | 1d | 2026-09-07 | 2026-09-07 | 57 | 142d | 0d |  | ABB; AESA | 16h |
| 59 | 1.3.2.14.2.4 | Configuración Pantallas y Ambiente de Operación | 15d | 2026-09-08 | 2026-09-28 | 58 | 142d |  |  | ABB | 120h |
| 60 | 1.3.2.14.2.5 | Configuración I/O | 35d | 2026-08-31 | 2026-10-16 | 46, 38 | 4d | 0d |  | ABB | 280h |
| 61 | 1.3.2.14.2.6 | Configuarción Variables Comm (IEC61850, PROFI y MODBUS) | 30d | 2026-10-19 | 2026-11-27 | 47, 60, 39 | 4d |  |  | ABB | 240h |
| 62 | 1.3.2.14.2.7 | Configuración Lógicas Sistema | 30d | 2026-10-19 | 2026-11-27 | 48, 60, 40 | 4d |  |  | ABB | 240h |
| 63 | 1.3.3 | **Pruebas** | 34d | 2026-12-18 | 2027-02-03 |  | 0d |  |  |  | 448h |
| 64 | 1.3.3.1 | **Pruebas Tableros** | 34d | 2026-12-18 | 2027-02-03 |  | 0d |  |  |  | 224h |
| 65 | 1.3.3.1.1 | Pruebas Internas Tableros | 15d | 2026-12-18 | 2027-01-07 | 61, 62, 60, 54, 52 | 0d |  | start no earlier than 2022-12-26 | ABB | 120h |
| 66 | 1.3.3.1.2 | FAT Tableros | 5d | 2027-01-25 | 2027-01-29 | 65FS+11d | 0d |  |  | ABB; AESA | 80h |
| 67 | 1.3.3.1.3 | Ajustes FAT Tableros | 3d | 2027-02-01 | 2027-02-03 | 66 | 0d |  |  | ABB | 24h |
| 68 | 1.3.3.2 | **Pruebas Sistema** | 34d | 2026-12-18 | 2027-02-03 |  | 0d |  |  |  | 224h |
| 69 | 1.3.3.2.1 | Pruebas Internas Sistema | 15d | 2026-12-18 | 2027-01-07 | 61, 62, 54, 52 | 0d |  |  | ABB | 120h |
| 70 | 1.3.3.2.2 | FAT Sistema | 5d | 2027-01-25 | 2027-01-29 | 69FS+11d | 0d |  |  | ABB; AESA | 80h |
| 71 | 1.3.3.2.3 | Ajustes FAT Sistema | 3d | 2027-02-01 | 2027-02-03 | 70 | 0d |  |  | ABB | 24h |
| 72 | 1.3.4 | Despachos | 10d | 2027-02-04 | 2027-02-17 | 67, 71 | 0d |  |  | ABB | 80h |
| 73 | 1.4 | **Actividades en Shelter** | 30d | 2027-02-18 | 2027-03-31 |  | 0d |  |  |  | 120h |
| 74 | 1.4.1 | Montaje y Conexionado OK (estimado) | 20d | 2027-02-18 | 2027-03-17 | 72 | 0d |  |  |  |  |
| 75 | 1.4.2 | Supervisión Montajes y Preparativos FAT Imtegral | 5d | 2027-03-18 | 2027-03-24 | 74, 72 | 0d |  |  | ABB | 40h |
| 76 | 1.4.3 | FAT INTEGRAL (SHELTER) | 5d | 2027-03-25 | 2027-03-31 | 75 | 0d |  |  | ABB; AESA | 80h |
| 77 | 1.5 | Entrega Data Book (CAF) | 20d | 2027-04-01 | 2027-04-28 | 73 | 0d |  |  |  |  |
