# CPF 2 - LA CALERA-

Schedule from MS Project, 2026-07-28 to 2027-12-07, A marks actual dates.

## Calendars

- INAUCO: Mon-Fri 08:00-12:00, 13:00-17:00; Sat-Sun off. Exceptions (off unless hours are given): 2026-08-17 (SAN MARTIN), 2026-10-12 (DIVERSIDAD), 2026-11-23 (SOBERANÍA), 2026-12-07 (NO LABORABLE CONCEPCION), 2026-12-08 (CONCEPCIÓN), 2026-12-24 (NOCHE BUENA), 2026-12-25 (NAVIDAD), 2026-12-31 (FIN DE AÑO), 2027-01-01 (AÑO NUEVO 2027), 2027-02-08 to 2027-02-09 (CARNAVAL 2027), 2027-03-24 (MEMORIA 2027), 2027-03-25 to 2027-03-26 (PASCUA 2027), 2027-04-02 (MALVINAS 2027), 2027-05-01 (TRABAJADOR 2027), 2027-05-25 (GOBIERNO PATRIO 2027).

## Resources

| Resource |
| --- |
| INAUCO 2 |
| INAUCO 3 |
| INAUCO 1 |
| INAUCO 4 |
| INAUCO 5 |
| INAUCO 6 |
| INAUCO 7 |
| INAUCO |
| INAUCO 8 |

## Schedule

| ID | WBS | Task | Type | Duration | Start | Finish | Predecessors | Complete | Remaining | Total slack | Free slack | Constraint |
| --- | --- | --- | --- | --- | --- | --- | --- | --- | --- | --- | --- | --- |
| 1 | 1 | INICIO | milestone, manual | 0d | 2026-07-28 | 2026-07-28 |  |  |  |  |  | start no earlier than 2026-07-28 |
| 2 | 2 | **REQUISITOS** |  | 190d | 2026-07-28 A | 2027-05-11 |  |  | 190d |  |  |  |
| 3 | 2.1 | REQUISITO 0: Recepción de OC | milestone, manual | 0d | 2026-07-28 A | 2026-07-28 A |  | 100% |  |  |  | start no earlier than 2026-07-28 |
| 4 | 2.2 | REQUISITO 1: Recepción de Ing Rev 0 p/ Tableros y Rev A p/ Config | milestone | 0d | 2026-08-10 | 2026-08-10 | 1FS+10d |  |  | 0d |  |  |
| 5 | 2.3 | REQUISITO 2: Recepción de tableros HIMA en base Inauco | milestone, manual | 0d | 2027-01-25 | 2027-01-25 |  |  |  |  |  | start no earlier than 2027-01-25 |
| 6 | 2.4 | REQUISITO 3: Aprobación de ingeniería para construcción (REV 0) y Recepción de Ingeniería para Configuración (Rev 0) | milestone, manual | 0d | 2026-11-19 | 2026-11-19 |  |  |  |  |  | start no earlier than 2026-11-19 |
| 7 | 2.5 | REQUISITO 4: Aprobación de procedimientos FAT (REV 0) | milestone, manual | 0d | 2027-02-24 | 2027-02-24 |  |  |  |  |  |  |
| 8 | 2.6 | REQUISITO 5: Requisitos para inicio de comisionado (Ver Oferta) | milestone, manual | 0d | 2027-05-11 | 2027-05-11 |  |  |  |  |  |  |
| 9 | 2.7 | REQUISITO 6: Recepción de HW | milestone | 0d | 2026-11-26 | 2026-11-26 | 1, 3FS+17w |  |  | 17d | 0d |  |
| 10 | 3 | **DESARROLLO** |  | 330d | 2026-08-11 | 2027-12-07 |  |  |  | 0d |  |  |
| 11 | 3.1 | **INGENIERÍA** |  | 330d | 2026-08-11 | 2027-12-07 | 1, 3, 4 |  |  | 0d |  |  |
| 12 | 3.1.1 | REV A Y 0 |  | 60d | 2026-08-11 | 2026-11-04 | 1, 3, 4 |  |  | 22d | 5d |  |
| 13 | 3.1.2 | REV A Y 0 |  | 20d | 2027-02-24 | 2027-03-29 | 22SF, 23SF |  |  | 180d |  |  |
| 14 | 3.1.3 | REV CAF |  | 10d | 2027-04-27 | 2027-05-10 | 22, 23 |  |  | 150d |  |  |
| 15 | 3.1.4 | CAO |  | 30d | 2027-10-27 | 2027-12-07 | 28, 26, 27 |  |  | 0d |  |  |
| 16 | 3.2 | CONSTRUCCIÓN DE TABLEROS |  | 50d | 2026-11-27 | 2027-02-16 | 12FS+2w, 9 |  |  | 17d | 15d |  |
| 17 | 3.3 | **CONFIGURACIÓN BASE** |  | 175d | 2026-08-26 | 2027-05-17 | 1, 3, 4FS+2w |  |  | 0d |  |  |
| 18 | 3.3.1 | PLC ETAPA 1 |  | 20d | 2026-08-26 | 2026-09-22 | 1, 3, 4 |  |  | 122d | 120d |  |
| 19 | 3.3.2 | PLC ETAPA 2 |  | 40d | 2027-01-25 | 2027-03-23 | 22SS-40d |  |  | 180d |  |  |
| 20 | 3.3.3 | SCADA |  | 140d | 2026-08-26 | 2027-03-23 | 1, 3, 4 |  |  | 0d |  |  |
| 21 | 3.3.4 | CONFIGURACIONES POST FAT |  | 15d | 2027-04-27 | 2027-05-17 | 22, 23 |  |  | 0d |  |  |
| 22 | 3.4 | FAT PCS + COMUNICACIONES |  | 18d | 2027-03-29 | 2027-04-22 | 1, 18, 20, 16FS+2w, 7FS+4w, 6FS+16w |  |  | 2d | 0d |  |
| 23 | 3.5 | FAT SIS |  | 20d | 2027-03-29 | 2027-04-26 | 1, 5FS+4w, 20, 7FS+4w, 6FS+16w |  |  | 0d |  |  |
| 24 | 3.6 | PRUEBAS ABB BS AS |  | 5d | 2027-04-28 | 2027-05-04 | 1, 18, 20, 22FS+1d, 23FS+1d |  |  | 9d |  |  |

| ID | WBS | Task | Type | Duration | Start | Finish | Predecessors | Total slack | Constraint |
| --- | --- | --- | --- | --- | --- | --- | --- | --- | --- |
| 25 | 3.7 | **CAMPO** |  | 115d | 2027-05-18 | 2027-10-26 | 1, 22, 23, 24, 21, 8FS+1w | 0d |  |
| 26 | 3.7.1 | SAT Y COMISIONADO PCS |  | 55d | 2027-05-18 | 2027-08-03 | 1, 3, 22, 23, 24, 21, 8FS+1w | 60d |  |
| 27 | 3.7.2 | SAT Y COMISIONADO SCADA SIS |  | 100d | 2027-05-18 | 2027-10-05 | 1, 3, 22, 23, 24, 21, 8FS+1w | 0d |  |
| 28 | 3.7.3 | PRUEBA MCE |  | 15d | 2027-10-06 | 2027-10-26 | 27 | 0d |  |
| 29 | 4 | FINALIZACION DE TAREAS | milestone | 0d | 2027-12-07 | 2027-12-07 | 15 | 0d | as late as possible |
